| actualCost | actualDuration | actualWork | constraintType | cost | duration | finish | fixedCost | fixedCostAccrual | id | isCriticalPath | name | outlineLevel | outlineNumber | percentageComplete | priority | remainingCost | remainingDuration | remainingWork | start | uniqueID | wbs | work | successors | predecessors |
| --- | --- | --- | --- | --- | --- | --- | --- | --- | --- | --- | --- | --- | --- | --- | --- | --- | --- | --- | --- | --- | --- | --- | --- | --- |
| 0.0 | 0.0d | 0.0h | AS_SOON_AS_POSSIBLE | 0.0 | 313.0d | 2023-12-20T08:00 | 0.0 | PRORATED | 0 | True | Relocation VLP Compressor Nilam Satelite 6 to Mutiara 6 Station v8 | 0 | 0 | 0.0 | [Priority value=500] | 0.0 | 313.0d | 0.0h | 2022-10-07T08:00 | 0 | 0 | 0.0h |  |  |
| 0.0 | 0.0d | 0.0h | AS_SOON_AS_POSSIBLE | 0.0 | 313.0d | 2023-12-20T08:00 | 0.0 | PRORATED | 1 | True | Relokasi VLP Compressor Nilam Satelite 6 to Mutiara 6 Station Project | 1 | 1 | 0.0 | [Priority value=500] | 0.0 | 313.0d | 0.0h | 2022-10-07T08:00 | 1660 | 1 | 0.0h |  |  |
| 0.0 | 0.0d | 0.0h | AS_SOON_AS_POSSIBLE | 0.0 | 313.0d | 2023-12-20T08:00 | 0.0 | PRORATED | 2 | True | Milestone | 2 | 1.1 | 0.0 | [Priority value=500] | 0.0 | 313.0d | 0.0h | 2022-10-07T08:00 | 1 | 1 | 0.0h |  |  |
| 0.0 | 0.0d | 0.0h | MUST_START_ON | 0.0 | 0.0d | 2022-10-07T08:00 | 0.0 | PRORATED | 3 | True | Project Start | 3 | 1.1.1 | 0.0 | [Priority value=500] | 0.0 | 0.0d | 0.0h | 2022-10-07T08:00 | 2 | 1 | 0.0h | 15 0.0h FS 76, 16 0.0h FS 93 |  |
| 0.0 | 0.0d | 0.0h | AS_SOON_AS_POSSIBLE | 0.0 | 0.0d | 2023-05-18T16:00 | 0.0 | PRORATED | 4 |  | Engineering Finish | 3 | 1.1.2 | 0.0 | [Priority value=500] | 0.0 | 0.0d | 0.0h | 2023-05-18T16:00 | 3 | 1 | 0.0h | 260 0.0d FF 508, 430 0.0d FS 463 | 139 0.0d FS 4, 175 0.0d FS 5, 82 0.0d FS 6, 57 0.0d FS 7 |
| 0.0 | 0.0d | 0.0h | AS_SOON_AS_POSSIBLE | 0.0 | 0.0d | 2023-08-16T16:00 | 0.0 | PRORATED | 5 |  | Procurement Finish | 3 | 1.1.3 | 0.0 | [Priority value=500] | 0.0 | 0.0d | 0.0h | 2023-08-16T16:00 | 8 | 1 | 0.0h |  | 322 0.0d FS 1328 |
| 0.0 | 0.0d | 0.0h | AS_SOON_AS_POSSIBLE | 0.0 | 0.0d | 2023-08-16T16:00 | 0.0 | PRORATED | 6 |  | Compressor On Site | 3 | 1.1.4 | 0.0 | [Priority value=500] | 0.0 | 0.0d | 0.0h | 2023-08-16T16:00 | 58 | 1 | 0.0h |  | 427 0.0d FS 570 |
| 0.0 | 0.0d | 0.0h | AS_SOON_AS_POSSIBLE | 0.0 | 0.0d | 2023-11-19T10:00 | 0.0 | PRORATED | 7 |  | Construction Finish | 3 | 1.1.5 | 0.0 | [Priority value=500] | 0.0 | 0.0d | 0.0h | 2023-11-19T10:00 | 59 | 1 | 0.0h |  | 485 0.0d FS 1418 |
| 0.0 | 0.0d | 0.0h | AS_SOON_AS_POSSIBLE | 0.0 | 0.0d | 2023-12-20T08:00 | 0.0 | PRORATED | 8 | True | Project Finish | 3 | 1.1.6 | 0.0 | [Priority value=500] | 0.0 | 0.0d | 0.0h | 2023-12-20T08:00 | 60 | 1 | 0.0h |  | 587 0.0h FS 62 |
| 0.0 | 0.0d | 0.0h | AS_SOON_AS_POSSIBLE | 0.0 | 0.0d | 2023-12-13T08:00 | 0.0 | PRORATED | 9 |  | Mechanical Completion | 3 | 1.1.7 | 0.0 | [Priority value=500] | 0.0 | 0.0d | 0.0h | 2023-12-13T08:00 | 63 | 1 | 0.0h |  | 577 0.0d FS 67, 582 0.0d FS 70 |
| 0.0 | 0.0d | 0.0h | AS_SOON_AS_POSSIBLE | 0.0 | 0.0d | 2023-12-20T08:00 | 0.0 | PRORATED | 10 | True | Commisioning | 3 | 1.1.8 | 0.0 | [Priority value=500] | 0.0 | 0.0d | 0.0h | 2023-12-20T08:00 | 74 | 1 | 0.0h |  | 587 0.0h FS 62 |
| 0.0 | 0.0d | 0.0h | AS_SOON_AS_POSSIBLE | 0.0 | 5.0d | 2023-10-30T16:00 | 0.0 | PRORATED | 11 |  | PHSER-3/PRR-3 | 3 | 1.1.9 | 0.0 | [Priority value=500] | 0.0 | 5.0d | 0.0h | 2023-10-24T08:00 | 90 | 1.9 | 0.0h | 570 0.0d FS 1434 | 496 0.0d FS 912 |
| 0.0 | 0.0d | 0.0h | FINISH_NO_EARLIER_THAN | 0.0 | 0.0d | 2022-11-30T17:00 | 0.0 | PRORATED | 12 |  | FID Approval | 3 | 1.1.10 | 0.0 | [Priority value=500] | 0.0 | 0.0d | 0.0h | 2022-11-30T17:00 | 746 | 1.10 | 0.0h | 394 0.0d FS 542, 400 0.0d FS 515, 405 0.0d FS 519, 407 0.0d FS 533, 409 0.0d FS 560, 430 0.0d FS 463, 437 0.0d FS 593, 433 0.0d FS 913, 487 0.0d FS 1018, 364 0.0d FS 1280 |  |
| 0.0 | 0.0d | 0.0h | AS_SOON_AS_POSSIBLE | 0.0 | 0.0d | 2023-08-10T12:00 | 0.0 | PRORATED | 13 |  | Compressor Engine Overhaul for Compressor | 3 | 1.1.11 | 0.0 | [Priority value=500] | 0.0 | 0.0d | 0.0h | 2023-08-10T12:00 | 1648 | 1.11 | 0.0h |  | 487 -47.0d FS 1018 |
| 0.0 | 0.0d | 0.0h | AS_SOON_AS_POSSIBLE | 0.0 | 30.0d | 2022-11-17T16:00 | 0.0 | PRORATED | 14 |  | Project Management | 2 | 1.2 | 0.0 | [Priority value=500] | 0.0 | 30.0d | 0.0h | 2022-10-07T08:00 | 92 | 2 | 0.0h |  |  |
| 0.0 | 0.0d | 0.0h | AS_SOON_AS_POSSIBLE | 0.0 | 30.0d | 2022-11-17T16:00 | 0.0 | PRORATED | 15 |  | Project Design Basis | 3 | 1.2.1 | 0.0 | [Priority value=500] | 0.0 | 30.0d | 0.0h | 2022-10-07T08:00 | 76 | 2 | 0.0h | 22 0.0h FS 97, 46 0.0h FS 110, 61 0.0h FS 128, 142 0.0h FS 207, 18 0.0d FS 506 | 3 0.0h FS 2 |
| 0.0 | 0.0d | 0.0h | AS_SOON_AS_POSSIBLE | 0.0 | 30.0d | 2022-11-17T16:00 | 0.0 | PRORATED | 16 |  | Site Visit Report | 3 | 1.2.2 | 0.0 | [Priority value=500] | 0.0 | 30.0d | 0.0h | 2022-10-07T08:00 | 93 | 2 | 0.0h |  | 3 0.0h FS 2 |
| 0.0 | 0.0d | 0.0h | AS_SOON_AS_POSSIBLE | 0.0 | 130.0d | 2023-05-18T16:00 | 0.0 | PRORATED | 17 |  | Engineering | 2 | 1.3 | 0.0 | [Priority value=500] | 0.0 | 130.0d | 0.0h | 2022-11-18T08:00 | 94 | 3 | 0.0h |  |  |
| 0.0 | 0.0d | 0.0h | AS_SOON_AS_POSSIBLE | 0.0 | 5.0d | 2022-11-24T16:00 | 0.0 | PRORATED | 18 |  | PHSER-1 | 3 | 1.3.1 | 0.0 | [Priority value=500] | 0.0 | 5.0d | 0.0h | 2022-11-18T08:00 | 506 | 3.1 | 0.0h |  | 15 0.0d FS 76 |
| 0.0 | 0.0d | 0.0h | AS_SOON_AS_POSSIBLE | 0.0 | 130.0d | 2023-05-18T16:00 | 0.0 | PRORATED | 19 |  | Relocation | 3 | 1.3.2 | 0.0 | [Priority value=500] | 0.0 | 130.0d | 0.0h | 2022-11-18T08:00 | 1435 | 3.2 | 0.0h |  |  |
| 0.0 | 0.0d | 0.0h | AS_SOON_AS_POSSIBLE | 0.0 | 70.0d | 2023-02-23T16:00 | 0.0 | PRORATED | 20 |  | Process | 4 | 1.3.2.1 | 0.0 | [Priority value=500] | 0.0 | 70.0d | 0.0h | 2022-11-18T08:00 | 95 | 3.1 | 0.0h |  |  |
| 0.0 | 0.0d | 0.0h | AS_SOON_AS_POSSIBLE | 0.0 | 45.0d | 2023-01-19T16:00 | 0.0 | PRORATED | 21 |  | Study/Calculation | 5 | 1.3.2.1.1 | 0.0 | [Priority value=500] | 0.0 | 45.0d | 0.0h | 2022-11-18T08:00 | 96 | 3.1.1 | 0.0h |  |  |
| 0.0 | 0.0d | 0.0h | AS_SOON_AS_POSSIBLE | 0.0 | 30.0d | 2022-12-29T16:00 | 0.0 | PRORATED | 22 |  | Process Simulation | 6 | 1.3.2.1.1.1 | 0.0 | [Priority value=500] | 0.0 | 30.0d | 0.0h | 2022-11-18T08:00 | 97 | 3.1.1 | 0.0h | 23 0.0h SS 98, 28 120.0h SS 103, 31 120.0h SS 78 | 15 0.0h FS 76 |
| 0.0 | 0.0d | 0.0h | AS_SOON_AS_POSSIBLE | 0.0 | 30.0d | 2022-12-29T16:00 | 0.0 | PRORATED | 23 |  | Over Pressure Study For Compressor C-6700C | 6 | 1.3.2.1.1.2 | 0.0 | [Priority value=500] | 0.0 | 30.0d | 0.0h | 2022-11-18T08:00 | 98 | 3.1.1 | 0.0h | 24 0.0h SS 99 | 22 0.0h SS 97 |
| 0.0 | 0.0d | 0.0h | AS_SOON_AS_POSSIBLE | 0.0 | 30.0d | 2022-12-29T16:00 | 0.0 | PRORATED | 24 |  | Blowdown Study | 6 | 1.3.2.1.1.3 | 0.0 | [Priority value=500] | 0.0 | 30.0d | 0.0h | 2022-11-18T08:00 | 99 | 3.1.1 | 0.0h | 25 120.0h SS 100 | 23 0.0h SS 98 |
| 0.0 | 0.0d | 0.0h | AS_SOON_AS_POSSIBLE | 0.0 | 30.0d | 2023-01-19T16:00 | 0.0 | PRORATED | 25 |  | Process Safety Analysi | 6 | 1.3.2.1.1.4 | 0.0 | [Priority value=500] | 0.0 | 30.0d | 0.0h | 2022-12-09T08:00 | 100 | 3.1.1 | 0.0h | 26 0.0h SS 101 | 24 120.0h SS 99 |
| 0.0 | 0.0d | 0.0h | AS_SOON_AS_POSSIBLE | 0.0 | 30.0d | 2023-01-19T16:00 | 0.0 | PRORATED | 26 |  | Line Sizing Calculation Report | 6 | 1.3.2.1.1.5 | 0.0 | [Priority value=500] | 0.0 | 30.0d | 0.0h | 2022-12-09T08:00 | 101 | 3.1.1 | 0.0h |  | 25 0.0h SS 100 |
| 0.0 | 0.0d | 0.0h | AS_SOON_AS_POSSIBLE | 0.0 | 30.0d | 2023-01-19T16:00 | 0.0 | PRORATED | 27 |  | Process Flow Diagram & HMB | 5 | 1.3.2.1.2 | 0.0 | [Priority value=500] | 0.0 | 30.0d | 0.0h | 2022-12-09T08:00 | 102 | 3.1.2 | 0.0h |  |  |
| 0.0 | 0.0d | 0.0h | AS_SOON_AS_POSSIBLE | 0.0 | 30.0d | 2023-01-19T16:00 | 0.0 | PRORATED | 28 |  | PFD Mutiara M-6 Oil & Gas Station | 6 | 1.3.2.1.2.1 | 0.0 | [Priority value=500] | 0.0 | 30.0d | 0.0h | 2022-12-09T08:00 | 103 | 3.1.2 | 0.0h | 29 0.0h SS 104, 179 0.0d SS 1445 | 22 120.0h SS 97 |
| 0.0 | 0.0d | 0.0h | AS_SOON_AS_POSSIBLE | 0.0 | 30.0d | 2023-01-19T16:00 | 0.0 | PRORATED | 29 |  | PFD VLP Gas Compressor ( MT-Z-6700C Mutiara-6) | 6 | 1.3.2.1.2.2 | 0.0 | [Priority value=500] | 0.0 | 30.0d | 0.0h | 2022-12-09T08:00 | 104 | 3.1.2 | 0.0h | 43 160.0h SS 107 | 28 0.0h SS 103 |
| 0.0 | 0.0d | 0.0h | AS_SOON_AS_POSSIBLE | 0.0 | 35.0d | 2023-01-26T16:00 | 0.0 | PRORATED | 30 |  | P&ID | 5 | 1.3.2.1.3 | 0.0 | [Priority value=500] | 0.0 | 35.0d | 0.0h | 2022-12-09T08:00 | 105 | 3.1.3 | 0.0h |  |  |
| 0.0 | 0.0d | 0.0h | AS_SOON_AS_POSSIBLE | 0.0 | 30.0d | 2023-01-19T16:00 | 0.0 | PRORATED | 31 |  | P&ID Movable Compressor MutiaraM-6 Station | 6 | 1.3.2.1.3.1 | 0.0 | [Priority value=500] | 0.0 | 30.0d | 0.0h | 2022-12-09T08:00 | 78 | 3.1.3 | 0.0h | 32 0.0h SS 79, 58 120.0h SS 507, 182 0.0d SS 1448 | 22 120.0h SS 97 |
| 0.0 | 0.0d | 0.0h | AS_SOON_AS_POSSIBLE | 0.0 | 30.0d | 2023-01-19T16:00 | 0.0 | PRORATED | 32 |  | P&ID Oil Production Sep. MT-V-4480 Mutiara M-6 Station Oil Facility | 6 | 1.3.2.1.3.2 | 0.0 | [Priority value=500] | 0.0 | 30.0d | 0.0h | 2022-12-09T08:00 | 79 | 3.1.3 | 0.0h | 33 0.0h SS 80, 58 120.0h SS 507 | 31 0.0h SS 78 |
| 0.0 | 0.0d | 0.0h | AS_SOON_AS_POSSIBLE | 0.0 | 30.0d | 2023-01-19T16:00 | 0.0 | PRORATED | 33 |  | P&ID Closed Drain Collection Mutiara M-6 Station Oil Facility | 6 | 1.3.2.1.3.3 | 0.0 | [Priority value=500] | 0.0 | 30.0d | 0.0h | 2022-12-09T08:00 | 80 | 3.1.3 | 0.0h | 34 0.0h SS 81, 58 120.0h SS 507 | 32 0.0h SS 79 |
| 0.0 | 0.0d | 0.0h | AS_SOON_AS_POSSIBLE | 0.0 | 30.0d | 2023-01-19T16:00 | 0.0 | PRORATED | 34 |  | UFD Corrosion InHIbitor Package MT-Z-6200 Mutiara M-6 SAT | 6 | 1.3.2.1.3.4 | 0.0 | [Priority value=500] | 0.0 | 30.0d | 0.0h | 2022-12-09T08:00 | 81 | 3.1.3 | 0.0h | 35 0.0h SS 82, 58 120.0h SS 507 | 33 0.0h SS 80 |
| 0.0 | 0.0d | 0.0h | AS_SOON_AS_POSSIBLE | 0.0 | 30.0d | 2023-01-19T16:00 | 0.0 | PRORATED | 35 |  | P&ID Gas Production Manifold Slots No's 1 to 6 Mutiara M-6 Station Gas Facility | 6 | 1.3.2.1.3.5 | 0.0 | [Priority value=500] | 0.0 | 30.0d | 0.0h | 2022-12-09T08:00 | 82 | 3.1.3 | 0.0h | 36 40.0h SS 83, 58 120.0h SS 507 | 34 0.0h SS 81 |
| 0.0 | 0.0d | 0.0h | AS_SOON_AS_POSSIBLE | 0.0 | 30.0d | 2023-01-26T16:00 | 0.0 | PRORATED | 36 |  | P&ID Start/Fuel Gas System Mutiara M-6 Station Gas Facility | 6 | 1.3.2.1.3.6 | 0.0 | [Priority value=500] | 0.0 | 30.0d | 0.0h | 2022-12-16T08:00 | 83 | 3.1.3 | 0.0h | 37 0.0h SS 84, 58 120.0h SS 507 | 35 40.0h SS 82 |
| 0.0 | 0.0d | 0.0h | AS_SOON_AS_POSSIBLE | 0.0 | 30.0d | 2023-01-26T16:00 | 0.0 | PRORATED | 37 |  | P&ID Flare Header Mutiara M-6 Station Gas Facility | 6 | 1.3.2.1.3.7 | 0.0 | [Priority value=500] | 0.0 | 30.0d | 0.0h | 2022-12-16T08:00 | 84 | 3.1.3 | 0.0h | 38 0.0h SS 85, 58 120.0h SS 507 | 36 0.0h SS 83 |
| 0.0 | 0.0d | 0.0h | AS_SOON_AS_POSSIBLE | 0.0 | 30.0d | 2023-01-26T16:00 | 0.0 | PRORATED | 38 |  | P&ID Open Drain Collection Mutiara M-6 Station Gas Facility | 6 | 1.3.2.1.3.8 | 0.0 | [Priority value=500] | 0.0 | 30.0d | 0.0h | 2022-12-16T08:00 | 85 | 3.1.3 | 0.0h | 39 0.0h SS 86, 58 120.0h SS 507 | 37 0.0h SS 84 |
| 0.0 | 0.0d | 0.0h | AS_SOON_AS_POSSIBLE | 0.0 | 30.0d | 2023-01-26T16:00 | 0.0 | PRORATED | 39 |  | P&ID Ex-Rental Compressor Package MT-Z-6100 Mutiara M-6 Station | 6 | 1.3.2.1.3.9 | 0.0 | [Priority value=500] | 0.0 | 30.0d | 0.0h | 2022-12-16T08:00 | 86 | 3.1.3 | 0.0h | 40 0.0h SS 87, 58 120.0h SS 507 | 38 0.0h SS 85 |
| 0.0 | 0.0d | 0.0h | AS_SOON_AS_POSSIBLE | 0.0 | 30.0d | 2023-01-26T16:00 | 0.0 | PRORATED | 40 |  | P&ID Fuel Gas Filter F-6685C ( Comp. C) MT_Z_6700C Mutiara M-6 Station | 6 | 1.3.2.1.3.10 | 0.0 | [Priority value=500] | 0.0 | 30.0d | 0.0h | 2022-12-16T08:00 | 87 | 3.1.3 | 0.0h | 41 0.0h SS 88, 58 120.0h SS 507 | 39 0.0h SS 86 |
| 0.0 | 0.0d | 0.0h | AS_SOON_AS_POSSIBLE | 0.0 | 30.0d | 2023-01-26T16:00 | 0.0 | PRORATED | 41 |  | P&ID Compressor Package MT-Z-6700 Mutiara M-6 Station | 6 | 1.3.2.1.3.11 | 0.0 | [Priority value=500] | 0.0 | 30.0d | 0.0h | 2022-12-16T08:00 | 88 | 3.1.3 | 0.0h | 43 160.0h SS 107, 85 0.0h FS 155, 58 120.0h SS 507 | 40 0.0h SS 87 |
| 0.0 | 0.0d | 0.0h | AS_SOON_AS_POSSIBLE | 0.0 | 30.0d | 2023-02-23T16:00 | 0.0 | PRORATED | 42 |  | Line List | 5 | 1.3.2.1.4 | 0.0 | [Priority value=500] | 0.0 | 30.0d | 0.0h | 2023-01-13T08:00 | 106 | 3.1.4 | 0.0h |  |  |
| 0.0 | 0.0d | 0.0h | AS_SOON_AS_POSSIBLE | 0.0 | 30.0d | 2023-02-23T16:00 | 0.0 | PRORATED | 43 |  | Line List | 6 | 1.3.2.1.4.1 | 0.0 | [Priority value=500] | 0.0 | 30.0d | 0.0h | 2023-01-13T08:00 | 107 | 3.1.4 | 0.0h |  | 41 160.0h SS 88, 29 160.0h SS 104 |
| 0.0 | 0.0d | 0.0h | AS_SOON_AS_POSSIBLE | 0.0 | 105.0d | 2023-04-13T16:00 | 0.0 | PRORATED | 44 |  | Piping/ Mechanical | 4 | 1.3.2.2 | 0.0 | [Priority value=500] | 0.0 | 105.0d | 0.0h | 2022-11-18T08:00 | 108 | 3.2 | 0.0h |  |  |
| 0.0 | 0.0d | 0.0h | AS_SOON_AS_POSSIBLE | 0.0 | 30.0d | 2022-12-29T16:00 | 0.0 | PRORATED | 45 |  | Piping Stress Calculation | 5 | 1.3.2.2.1 | 0.0 | [Priority value=500] | 0.0 | 30.0d | 0.0h | 2022-11-18T08:00 | 109 | 3.2.1 | 0.0h |  |  |
| 0.0 | 0.0d | 0.0h | AS_SOON_AS_POSSIBLE | 0.0 | 30.0d | 2022-12-29T16:00 | 0.0 | PRORATED | 46 |  | Piping Stress Calculation Suction | 6 | 1.3.2.2.1.1 | 0.0 | [Priority value=500] | 0.0 | 30.0d | 0.0h | 2022-11-18T08:00 | 110 | 3.2.1 | 0.0h | 48 120.0h SS 112, 50 0.0h FS 114 | 15 0.0h FS 76 |
| 0.0 | 0.0d | 0.0h | AS_SOON_AS_POSSIBLE | 0.0 | 30.0d | 2023-01-19T16:00 | 0.0 | PRORATED | 47 |  | Plot Plan | 5 | 1.3.2.2.2 | 0.0 | [Priority value=500] | 0.0 | 30.0d | 0.0h | 2022-12-09T08:00 | 111 | 3.2.2 | 0.0h |  |  |
| 0.0 | 0.0d | 0.0h | AS_SOON_AS_POSSIBLE | 0.0 | 30.0d | 2023-01-19T16:00 | 0.0 | PRORATED | 48 |  | Plot Plan Mutiara M-6 Station | 6 | 1.3.2.2.2.1 | 0.0 | [Priority value=500] | 0.0 | 30.0d | 0.0h | 2022-12-09T08:00 | 112 | 3.2.2 | 0.0h | 53 80.0h SS 122, 142 0.0h FS 207, 153 0.0h FS 218, 155 0.0h FS 220, 188 0.0d SS 1465 | 46 120.0h SS 110 |
| 0.0 | 0.0d | 0.0h | AS_SOON_AS_POSSIBLE | 0.0 | 30.0d | 2023-02-09T16:00 | 0.0 | PRORATED | 49 |  | Piping Plan | 5 | 1.3.2.2.3 | 0.0 | [Priority value=500] | 0.0 | 30.0d | 0.0h | 2022-12-30T08:00 | 113 | 3.2.3 | 0.0h |  |  |
| 0.0 | 0.0d | 0.0h | AS_SOON_AS_POSSIBLE | 0.0 | 30.0d | 2023-02-09T16:00 | 0.0 | PRORATED | 50 |  | Piping Plan Rental Compressor Package Mutiara M-6 Station Oil Facility | 6 | 1.3.2.2.3.1 | 0.0 | [Priority value=500] | 0.0 | 30.0d | 0.0h | 2022-12-30T08:00 | 114 | 3.2.3 | 0.0h | 51 0.0h SS 115, 190 0.0d SS 1467 | 46 0.0h FS 110 |
| 0.0 | 0.0d | 0.0h | AS_SOON_AS_POSSIBLE | 0.0 | 30.0d | 2023-02-09T16:00 | 0.0 | PRORATED | 51 |  | Piping Plan Pipe Rack Gas Comp. Area Mutiara M-6 Station Oil Facility | 6 | 1.3.2.2.3.2 | 0.0 | [Priority value=500] | 0.0 | 30.0d | 0.0h | 2022-12-30T08:00 | 115 | 3.2.3 | 0.0h |  | 50 0.0h SS 114 |
| 0.0 | 0.0d | 0.0h | AS_SOON_AS_POSSIBLE | 0.0 | 50.0d | 2023-03-02T16:00 | 0.0 | PRORATED | 52 |  | Isometric | 5 | 1.3.2.2.4 | 0.0 | [Priority value=500] | 0.0 | 50.0d | 0.0h | 2022-12-23T08:00 | 121 | 3.2.4 | 0.0h |  |  |
| 0.0 | 0.0d | 0.0h | AS_SOON_AS_POSSIBLE | 0.0 | 50.0d | 2023-03-02T16:00 | 0.0 | PRORATED | 53 |  | Isometric Drawing | 6 | 1.3.2.2.4.1 | 0.0 | [Priority value=500] | 0.0 | 50.0d | 0.0h | 2022-12-23T08:00 | 122 | 3.2.4 | 0.0h | 55 160.0h SS 124, 57 320.0h SS 7 | 48 80.0h SS 112 |
| 0.0 | 0.0d | 0.0h | AS_SOON_AS_POSSIBLE | 0.0 | 30.0d | 2023-03-02T16:00 | 0.0 | PRORATED | 54 |  | Tie-in List | 5 | 1.3.2.2.5 | 0.0 | [Priority value=500] | 0.0 | 30.0d | 0.0h | 2023-01-20T08:00 | 123 | 3.2.5 | 0.0h |  |  |
| 0.0 | 0.0d | 0.0h | AS_SOON_AS_POSSIBLE | 0.0 | 30.0d | 2023-03-02T16:00 | 0.0 | PRORATED | 55 |  | Tie-in List | 6 | 1.3.2.2.5.1 | 0.0 | [Priority value=500] | 0.0 | 30.0d | 0.0h | 2023-01-20T08:00 | 124 | 3.2.5 | 0.0h |  | 53 160.0h SS 122 |
| 0.0 | 0.0d | 0.0h | AS_SOON_AS_POSSIBLE | 0.0 | 40.0d | 2023-04-13T16:00 | 0.0 | PRORATED | 56 |  | BOM | 5 | 1.3.2.2.6 | 0.0 | [Priority value=500] | 0.0 | 40.0d | 0.0h | 2023-02-17T08:00 | 125 | 3.2.6 | 0.0h |  |  |
| 0.0 | 0.0d | 0.0h | AS_SOON_AS_POSSIBLE | 0.0 | 40.0d | 2023-04-13T16:00 | 0.0 | PRORATED | 57 |  | Piping BOM | 6 | 1.3.2.2.6.1 | 0.0 | [Priority value=500] | 0.0 | 40.0d | 0.0h | 2023-02-17T08:00 | 7 | 3.2.6 | 0.0h | 4 0.0d FS 3, 394 0.0d FS 542, 433 0.0d FS 913, 264 0.0d FS 9, 266 0.0d FS 10, 268 0.0d FS 11, 270 0.0d FS 12, 272 0.0d FS 13, 274 0.0d FS 14, 276 0.0d FS 277, 278 0.0d FS 15, 280 0.0d FS 1650, 283 0.0d FS 16, 285 0.0d FS 17 | 53 320.0h SS 122 |
| 0.0 | 0.0d | 0.0h | AS_SOON_AS_POSSIBLE | 0.0 | 5.0d | 2023-01-12T16:00 | 0.0 | PRORATED | 58 |  | HAZOP Study | 4 | 1.3.2.3 | 0.0 | [Priority value=500] | 0.0 | 5.0d | 0.0h | 2023-01-06T08:00 | 507 | 3.2.3 | 0.0h |  | 31 120.0h SS 78, 32 120.0h SS 79, 33 120.0h SS 80, 34 120.0h SS 81, 35 120.0h SS 82, 36 120.0h SS 83, 37 120.0h SS 84, 38 120.0h SS 85, 39 120.0h SS 86, 40 120.0h SS 87, 41 120.0h SS 88 |
| 0.0 | 0.0d | 0.0h | AS_SOON_AS_POSSIBLE | 0.0 | 105.0d | 2023-04-13T16:00 | 0.0 | PRORATED | 59 |  | Electrical | 4 | 1.3.2.4 | 0.0 | [Priority value=500] | 0.0 | 105.0d | 0.0h | 2022-11-18T08:00 | 126 | 3.3 | 0.0h |  |  |
| 0.0 | 0.0d | 0.0h | AS_SOON_AS_POSSIBLE | 0.0 | 40.0d | 2023-01-12T16:00 | 0.0 | PRORATED | 60 |  | Calculation | 5 | 1.3.2.4.1 | 0.0 | [Priority value=500] | 0.0 | 40.0d | 0.0h | 2022-11-18T08:00 | 127 | 3.3.1 | 0.0h |  |  |
| 0.0 | 0.0d | 0.0h | AS_SOON_AS_POSSIBLE | 0.0 | 30.0d | 2022-12-29T16:00 | 0.0 | PRORATED | 61 |  | Cable Sizing Calculation | 6 | 1.3.2.4.1.1 | 0.0 | [Priority value=500] | 0.0 | 30.0d | 0.0h | 2022-11-18T08:00 | 128 | 3.3.1 | 0.0h | 62 80.0h SS 129 | 15 0.0h FS 76 |
| 0.0 | 0.0d | 0.0h | AS_SOON_AS_POSSIBLE | 0.0 | 30.0d | 2023-01-12T16:00 | 0.0 | PRORATED | 62 |  | Lighting Calculation | 6 | 1.3.2.4.1.2 | 0.0 | [Priority value=500] | 0.0 | 30.0d | 0.0h | 2022-12-02T08:00 | 129 | 3.3.1 | 0.0h | 64 120.0h SS 132, 78 0.0h FS 148 | 61 80.0h SS 128 |
| 0.0 | 0.0d | 0.0h | AS_SOON_AS_POSSIBLE | 0.0 | 35.0d | 2023-02-09T16:00 | 0.0 | PRORATED | 63 |  | Datasheet | 5 | 1.3.2.4.2 | 0.0 | [Priority value=500] | 0.0 | 35.0d | 0.0h | 2022-12-23T08:00 | 131 | 3.3.2 | 0.0h |  |  |
| 0.0 | 0.0d | 0.0h | AS_SOON_AS_POSSIBLE | 0.0 | 30.0d | 2023-02-02T16:00 | 0.0 | PRORATED | 64 |  | Data Sheet For Lighting | 6 | 1.3.2.4.2.1 | 0.0 | [Priority value=500] | 0.0 | 30.0d | 0.0h | 2022-12-23T08:00 | 132 | 3.3.2 | 0.0h | 65 40.0h SS 133, 67 80.0h SS 135, 69 40.0h SS 137, 71 80.0h SS 141, 74 40.0h SS 144, 76 40.0h SS 146, 80 120.0h SS 150 | 62 120.0h SS 129 |
| 0.0 | 0.0d | 0.0h | AS_SOON_AS_POSSIBLE | 0.0 | 30.0d | 2023-02-09T16:00 | 0.0 | PRORATED | 65 |  | Data Sheet For Power & Control Cable | 6 | 1.3.2.4.2.2 | 0.0 | [Priority value=500] | 0.0 | 30.0d | 0.0h | 2022-12-30T08:00 | 133 | 3.3.2 | 0.0h | 69 0.0h SS 137 | 64 40.0h SS 132 |
| 0.0 | 0.0d | 0.0h | AS_SOON_AS_POSSIBLE | 0.0 | 30.0d | 2023-02-16T16:00 | 0.0 | PRORATED | 66 |  | Hazardous Area Classification | 5 | 1.3.2.4.3 | 0.0 | [Priority value=500] | 0.0 | 30.0d | 0.0h | 2023-01-06T08:00 | 134 | 3.3.4 | 0.0h |  |  |
| 0.0 | 0.0d | 0.0h | AS_SOON_AS_POSSIBLE | 0.0 | 30.0d | 2023-02-16T16:00 | 0.0 | PRORATED | 67 |  | Electrical Mutiara-6 Area Classification Area-01 | 6 | 1.3.2.4.3.1 | 0.0 | [Priority value=500] | 0.0 | 30.0d | 0.0h | 2023-01-06T08:00 | 135 | 3.3.4 | 0.0h | 69 0.0h FF 137 | 64 80.0h SS 132 |
| 0.0 | 0.0d | 0.0h | AS_SOON_AS_POSSIBLE | 0.0 | 30.0d | 2023-02-16T16:00 | 0.0 | PRORATED | 68 |  | Cable Schedule | 5 | 1.3.2.4.4 | 0.0 | [Priority value=500] | 0.0 | 30.0d | 0.0h | 2023-01-06T08:00 | 136 | 3.3.5 | 0.0h |  |  |
| 0.0 | 0.0d | 0.0h | AS_SOON_AS_POSSIBLE | 0.0 | 30.0d | 2023-02-16T16:00 | 0.0 | PRORATED | 69 |  | Electrical Power Cable Schedule Mutiara M-6 Gas Facility | 6 | 1.3.2.4.4.1 | 0.0 | [Priority value=500] | 0.0 | 30.0d | 0.0h | 2023-01-06T08:00 | 137 | 3.3.5 | 0.0h | 196 0.0d SS 1484 | 64 40.0h SS 132, 65 0.0h SS 133, 67 0.0h FF 135 |

| actualCost | actualDuration | actualWork | constraintType | cost | duration | finish | fixedCost | fixedCostAccrual | id | name | outlineLevel | outlineNumber | percentageComplete | priority | remainingCost | remainingDuration | remainingWork | start | uniqueID | wbs | work | successors | predecessors |
| --- | --- | --- | --- | --- | --- | --- | --- | --- | --- | --- | --- | --- | --- | --- | --- | --- | --- | --- | --- | --- | --- | --- | --- |
| 0.0 | 0.0d | 0.0h | AS_SOON_AS_POSSIBLE | 0.0 | 30.0d | 2023-02-16T16:00 | 0.0 | PRORATED | 70 | Distribution Layout | 5 | 1.3.2.4.5 | 0.0 | [Priority value=500] | 0.0 | 30.0d | 0.0h | 2023-01-06T08:00 | 140 | 3.3.6 | 0.0h |  |  |
| 0.0 | 0.0d | 0.0h | AS_SOON_AS_POSSIBLE | 0.0 | 30.0d | 2023-02-16T16:00 | 0.0 | PRORATED | 71 | Electrical Mutiara M-6 Gas Facility Lv. Distribution Layout Area 01 | 6 | 1.3.2.4.5.1 | 0.0 | [Priority value=500] | 0.0 | 30.0d | 0.0h | 2023-01-06T08:00 | 141 | 3.3.6 | 0.0h | 72 0.0h SS 142, 82 0.0h FS 6, 201 0.0d SS 1488, 208 0.0d SS 1495 | 64 80.0h SS 132 |
| 0.0 | 0.0d | 0.0h | AS_SOON_AS_POSSIBLE | 0.0 | 30.0d | 2023-02-16T16:00 | 0.0 | PRORATED | 72 | Electrical Mutiara M-6 Gas Facility Key electrical plan | 6 | 1.3.2.4.5.2 | 0.0 | [Priority value=500] | 0.0 | 30.0d | 0.0h | 2023-01-06T08:00 | 142 | 3.3.6 | 0.0h | 82 0.0h FS 6 | 71 0.0h SS 141 |
| 0.0 | 0.0d | 0.0h | AS_SOON_AS_POSSIBLE | 0.0 | 30.0d | 2023-02-09T16:00 | 0.0 | PRORATED | 73 | Grounding Layout | 5 | 1.3.2.4.6 | 0.0 | [Priority value=500] | 0.0 | 30.0d | 0.0h | 2022-12-30T08:00 | 143 | 3.3.7 | 0.0h |  |  |
| 0.0 | 0.0d | 0.0h | AS_SOON_AS_POSSIBLE | 0.0 | 30.0d | 2023-02-09T16:00 | 0.0 | PRORATED | 74 | ElectricalMutiara M-6 Grounding layout area 1 | 6 | 1.3.2.4.6.1 | 0.0 | [Priority value=500] | 0.0 | 30.0d | 0.0h | 2022-12-30T08:00 | 144 | 3.3.7 | 0.0h | 82 0.0h FS 6, 206 0.0d SS 1491 | 64 40.0h SS 132 |
| 0.0 | 0.0d | 0.0h | AS_SOON_AS_POSSIBLE | 0.0 | 30.0d | 2023-02-09T16:00 | 0.0 | PRORATED | 75 | Lighting Layout | 5 | 1.3.2.4.7 | 0.0 | [Priority value=500] | 0.0 | 30.0d | 0.0h | 2022-12-30T08:00 | 145 | 3.3.8 | 0.0h |  |  |
| 0.0 | 0.0d | 0.0h | AS_SOON_AS_POSSIBLE | 0.0 | 30.0d | 2023-02-09T16:00 | 0.0 | PRORATED | 76 | Electrical Lighting Layout Overall Area 01 Mutiara Satellite M-6 | 6 | 1.3.2.4.7.1 | 0.0 | [Priority value=500] | 0.0 | 30.0d | 0.0h | 2022-12-30T08:00 | 146 | 3.3.8 | 0.0h | 82 0.0h FS 6 | 64 40.0h SS 132 |
| 0.0 | 0.0d | 0.0h | AS_SOON_AS_POSSIBLE | 0.0 | 30.0d | 2023-02-23T16:00 | 0.0 | PRORATED | 77 | Panel Schedule | 5 | 1.3.2.4.8 | 0.0 | [Priority value=500] | 0.0 | 30.0d | 0.0h | 2023-01-13T08:00 | 147 | 3.3.9 | 0.0h |  |  |
| 0.0 | 0.0d | 0.0h | AS_SOON_AS_POSSIBLE | 0.0 | 30.0d | 2023-02-23T16:00 | 0.0 | PRORATED | 78 | Mutiara Satelite M-6 Distribution Panel DP-401, DP-404, DP-408 | 6 | 1.3.2.4.8.1 | 0.0 | [Priority value=500] | 0.0 | 30.0d | 0.0h | 2023-01-13T08:00 | 148 | 3.3.9 | 0.0h | 82 0.0h FS 6 | 62 0.0h FS 129 |
| 0.0 | 0.0d | 0.0h | AS_SOON_AS_POSSIBLE | 0.0 | 30.0d | 2023-02-23T16:00 | 0.0 | PRORATED | 79 | Cable Layout | 5 | 1.3.2.4.9 | 0.0 | [Priority value=500] | 0.0 | 30.0d | 0.0h | 2023-01-13T08:00 | 149 | 3.3.10 | 0.0h |  |  |
| 0.0 | 0.0d | 0.0h | AS_SOON_AS_POSSIBLE | 0.0 | 30.0d | 2023-02-23T16:00 | 0.0 | PRORATED | 80 | Elect. Mutiara M-6 Gas Facility Cabling Lo Mcc- Control Building | 6 | 1.3.2.4.9.1 | 0.0 | [Priority value=500] | 0.0 | 30.0d | 0.0h | 2023-01-13T08:00 | 150 | 3.3.10 | 0.0h | 82 0.0h FS 6 | 64 120.0h SS 132 |
| 0.0 | 0.0d | 0.0h | AS_SOON_AS_POSSIBLE | 0.0 | 35.0d | 2023-04-13T16:00 | 0.0 | PRORATED | 81 | BOM | 5 | 1.3.2.4.10 | 0.0 | [Priority value=500] | 0.0 | 35.0d | 0.0h | 2023-02-24T08:00 | 152 | 3.3.11 | 0.0h |  |  |
| 0.0 | 0.0d | 0.0h | AS_SOON_AS_POSSIBLE | 0.0 | 35.0d | 2023-04-13T16:00 | 0.0 | PRORATED | 82 | Electrical BOM | 6 | 1.3.2.4.10.1 | 0.0 | [Priority value=500] | 0.0 | 35.0d | 0.0h | 2023-02-24T08:00 | 6 | 3.3.11 | 0.0h | 4 0.0d FS 3, 293 0.0d FS 19, 295 0.0d FS 20, 297 0.0d FS 21, 299 0.0d FS 22, 301 0.0d FS 23, 303 0.0d FS 24, 305 0.0d FS 25, 307 0.0d FS 1256 | 76 0.0h FS 146, 71 0.0h FS 141, 72 0.0h FS 142, 78 0.0h FS 148, 74 0.0h FS 144, 80 0.0h FS 150 |
| 0.0 | 0.0d | 0.0h | AS_SOON_AS_POSSIBLE | 0.0 | 80.0d | 2023-05-18T16:00 | 0.0 | PRORATED | 83 | Instrument | 4 | 1.3.2.5 | 0.0 | [Priority value=500] | 0.0 | 80.0d | 0.0h | 2023-01-27T08:00 | 153 | 3.4 | 0.0h |  |  |
| 0.0 | 0.0d | 0.0h | AS_SOON_AS_POSSIBLE | 0.0 | 35.0d | 2023-03-16T16:00 | 0.0 | PRORATED | 84 | Datasheet | 5 | 1.3.2.5.1 | 0.0 | [Priority value=500] | 0.0 | 35.0d | 0.0h | 2023-01-27T08:00 | 154 | 3.4.1 | 0.0h |  |  |
| 0.0 | 0.0d | 0.0h | AS_SOON_AS_POSSIBLE | 0.0 | 30.0d | 2023-03-09T16:00 | 0.0 | PRORATED | 85 | Data Sheet of Flame Detector | 6 | 1.3.2.5.1.1 | 0.0 | [Priority value=500] | 0.0 | 30.0d | 0.0h | 2023-01-27T08:00 | 155 | 3.4.1 | 0.0h | 86 0.0h SS 156 | 41 0.0h FS 88 |
| 0.0 | 0.0d | 0.0h | AS_SOON_AS_POSSIBLE | 0.0 | 30.0d | 2023-03-09T16:00 | 0.0 | PRORATED | 86 | Data Sheet for multi variabl | 6 | 1.3.2.5.1.2 | 0.0 | [Priority value=500] | 0.0 | 30.0d | 0.0h | 2023-01-27T08:00 | 156 | 3.4.1 | 0.0h | 87 40.0h SS 157 | 85 0.0h SS 155 |
| 0.0 | 0.0d | 0.0h | AS_SOON_AS_POSSIBLE | 0.0 | 30.0d | 2023-03-16T16:00 | 0.0 | PRORATED | 87 | Datasheet Orifice Plat | 6 | 1.3.2.5.1.3 | 0.0 | [Priority value=500] | 0.0 | 30.0d | 0.0h | 2023-02-03T08:00 | 157 | 3.4.1 | 0.0h | 90 0.0h SS 159, 93 40.0h SS 161, 95 40.0h SS 163, 106 40.0h SS 174, 115 80.0h SS 183, 88 0.0d SS 1236 | 86 40.0h SS 156 |
| 0.0 | 0.0d | 0.0h | AS_SOON_AS_POSSIBLE | 0.0 | 30.0d | 2023-03-16T16:00 | 0.0 | PRORATED | 88 | Datasheet Gas Detector | 6 | 1.3.2.5.1.4 | 0.0 | [Priority value=500] | 0.0 | 30.0d | 0.0h | 2023-02-03T08:00 | 1236 | 3.4.1.4 | 0.0h |  | 87 0.0d SS 157 |
| 0.0 | 0.0d | 0.0h | AS_SOON_AS_POSSIBLE | 0.0 | 30.0d | 2023-03-16T16:00 | 0.0 | PRORATED | 89 | Cabling Layout | 5 | 1.3.2.5.2 | 0.0 | [Priority value=500] | 0.0 | 30.0d | 0.0h | 2023-02-03T08:00 | 158 | 3.4.2 | 0.0h |  |  |
| 0.0 | 0.0d | 0.0h | AS_SOON_AS_POSSIBLE | 0.0 | 30.0d | 2023-03-16T16:00 | 0.0 | PRORATED | 90 | Instrumentation Cabling Layout Rental Compr. Package Z-6100 Mutiara M-6 Station | 6 | 1.3.2.5.2.1 | 0.0 | [Priority value=500] | 0.0 | 30.0d | 0.0h | 2023-02-03T08:00 | 159 | 3.4.2 | 0.0h | 118 0.0h FS 186, 91 0.0d SS 1237, 211 0.0d SS 1507 | 87 0.0h SS 157 |
| 0.0 | 0.0d | 0.0h | AS_SOON_AS_POSSIBLE | 0.0 | 30.0d | 2023-03-16T16:00 | 0.0 | PRORATED | 91 | Mutiara AG Compressor Addition Station #6 Plant Dimensional & Layout Panel | 6 | 1.3.2.5.2.2 | 0.0 | [Priority value=500] | 0.0 | 30.0d | 0.0h | 2023-02-03T08:00 | 1237 | 3.4.2.2 | 0.0h |  | 90 0.0d SS 159 |
| 0.0 | 0.0d | 0.0h | AS_SOON_AS_POSSIBLE | 0.0 | 30.0d | 2023-03-23T16:00 | 0.0 | PRORATED | 92 | Location Plan | 5 | 1.3.2.5.3 | 0.0 | [Priority value=500] | 0.0 | 30.0d | 0.0h | 2023-02-10T08:00 | 160 | 3.4.3 | 0.0h |  |  |
| 0.0 | 0.0d | 0.0h | AS_SOON_AS_POSSIBLE | 0.0 | 30.0d | 2023-03-23T16:00 | 0.0 | PRORATED | 93 | Instrument Layout Location Plan Ex. MT-Z-9600 Mutiara Gas Facility | 6 | 1.3.2.5.3.1 | 0.0 | [Priority value=500] | 0.0 | 30.0d | 0.0h | 2023-02-10T08:00 | 161 | 3.4.3 | 0.0h | 213 0.0d SS 1510 | 87 40.0h SS 157 |
| 0.0 | 0.0d | 0.0h | AS_SOON_AS_POSSIBLE | 0.0 | 40.0d | 2023-04-06T16:00 | 0.0 | PRORATED | 94 | Connection Diagram | 5 | 1.3.2.5.4 | 0.0 | [Priority value=500] | 0.0 | 40.0d | 0.0h | 2023-02-10T08:00 | 162 | 3.4.4 | 0.0h |  |  |
| 0.0 | 0.0d | 0.0h | AS_SOON_AS_POSSIBLE | 0.0 | 30.0d | 2023-03-23T16:00 | 0.0 | PRORATED | 95 | DC Input Module Rack 1 Slot | 6 | 1.3.2.5.4.1 | 0.0 | [Priority value=500] | 0.0 | 30.0d | 0.0h | 2023-02-10T08:00 | 163 | 3.4.4 | 0.0h | 96 0.0h SS 164, 216 0.0d SS 1512 | 87 40.0h SS 157 |
| 0.0 | 0.0d | 0.0h | AS_SOON_AS_POSSIBLE | 0.0 | 30.0d | 2023-03-23T16:00 | 0.0 | PRORATED | 96 | Instrument SSD & CCP I/O Cross Ref M#6 Mutiara M-6 Gas Facilitie | 6 | 1.3.2.5.4.2 | 0.0 | [Priority value=500] | 0.0 | 30.0d | 0.0h | 2023-02-10T08:00 | 164 | 3.4.4 | 0.0h | 97 0.0h SS 165 | 95 0.0h SS 163 |
| 0.0 | 0.0d | 0.0h | AS_SOON_AS_POSSIBLE | 0.0 | 30.0d | 2023-03-23T16:00 | 0.0 | PRORATED | 97 | AC Output Module Rack 1 Slot 1 | 6 | 1.3.2.5.4.3 | 0.0 | [Priority value=500] | 0.0 | 30.0d | 0.0h | 2023-02-10T08:00 | 165 | 3.4.4 | 0.0h | 98 40.0h SS 166 | 96 0.0h SS 164 |
| 0.0 | 0.0d | 0.0h | AS_SOON_AS_POSSIBLE | 0.0 | 30.0d | 2023-03-30T16:00 | 0.0 | PRORATED | 98 | Pyrotronics Supervised Input/Output Module | 6 | 1.3.2.5.4.4 | 0.0 | [Priority value=500] | 0.0 | 30.0d | 0.0h | 2023-02-17T08:00 | 166 | 3.4.4 | 0.0h | 99 0.0h SS 167 | 97 40.0h SS 165 |
| 0.0 | 0.0d | 0.0h | AS_SOON_AS_POSSIBLE | 0.0 | 30.0d | 2023-03-30T16:00 | 0.0 | PRORATED | 99 | Electrical Mutiara M-6 Gas Facilities AC Output Module Rack 2 Slot 2 | 6 | 1.3.2.5.4.5 | 0.0 | [Priority value=500] | 0.0 | 30.0d | 0.0h | 2023-02-17T08:00 | 167 | 3.4.4 | 0.0h | 100 0.0h SS 168 | 98 0.0h SS 166 |
| 0.0 | 0.0d | 0.0h | AS_SOON_AS_POSSIBLE | 0.0 | 30.0d | 2023-03-30T16:00 | 0.0 | PRORATED | 100 | Electrical Mutiara M-6 Gas Facilities Signal Termination Block TB-23 / TB-24 | 6 | 1.3.2.5.4.6 | 0.0 | [Priority value=500] | 0.0 | 30.0d | 0.0h | 2023-02-17T08:00 | 168 | 3.4.4 | 0.0h | 101 40.0h SS 169 | 99 0.0h SS 167 |
| 0.0 | 0.0d | 0.0h | AS_SOON_AS_POSSIBLE | 0.0 | 30.0d | 2023-04-06T16:00 | 0.0 | PRORATED | 101 | Instrument Connection Diagram IJB-6700 | 6 | 1.3.2.5.4.7 | 0.0 | [Priority value=500] | 0.0 | 30.0d | 0.0h | 2023-02-24T08:00 | 169 | 3.4.4 | 0.0h | 102 0.0h SS 170 | 100 40.0h SS 168 |
| 0.0 | 0.0d | 0.0h | AS_SOON_AS_POSSIBLE | 0.0 | 30.0d | 2023-04-06T16:00 | 0.0 | PRORATED | 102 | Instrument Connection Diagram IJB-6-19 & CP-C-6700 | 6 | 1.3.2.5.4.8 | 0.0 | [Priority value=500] | 0.0 | 30.0d | 0.0h | 2023-02-24T08:00 | 170 | 3.4.4 | 0.0h | 103 0.0h SS 171 | 101 0.0h SS 169 |
| 0.0 | 0.0d | 0.0h | AS_SOON_AS_POSSIBLE | 0.0 | 30.0d | 2023-04-06T16:00 | 0.0 | PRORATED | 103 | Instrument Connection Diagram FJB-6700 | 6 | 1.3.2.5.4.9 | 0.0 | [Priority value=500] | 0.0 | 30.0d | 0.0h | 2023-02-24T08:00 | 171 | 3.4.4 | 0.0h | 104 0.0h SS 172 | 102 0.0h SS 170 |
| 0.0 | 0.0d | 0.0h | AS_SOON_AS_POSSIBLE | 0.0 | 30.0d | 2023-04-06T16:00 | 0.0 | PRORATED | 104 | DC Input Module Rack 1 Slot | 6 | 1.3.2.5.4.10 | 0.0 | [Priority value=500] | 0.0 | 30.0d | 0.0h | 2023-02-24T08:00 | 172 | 3.4.4 | 0.0h |  | 103 0.0h SS 171 |
| 0.0 | 0.0d | 0.0h | AS_SOON_AS_POSSIBLE | 0.0 | 35.0d | 2023-03-30T16:00 | 0.0 | PRORATED | 105 | Hook up Diagram | 5 | 1.3.2.5.5 | 0.0 | [Priority value=500] | 0.0 | 35.0d | 0.0h | 2023-02-10T08:00 | 173 | 3.4.5 | 0.0h |  |  |
| 0.0 | 0.0d | 0.0h | AS_SOON_AS_POSSIBLE | 0.0 | 30.0d | 2023-03-23T16:00 | 0.0 | PRORATED | 106 | Instrument Hook Up Diagram Impluse Line Detail For Flow & Pressure Transmitter Mutiara M-6 Station | 6 | 1.3.2.5.5.1 | 0.0 | [Priority value=500] | 0.0 | 30.0d | 0.0h | 2023-02-10T08:00 | 174 | 3.4.5 | 0.0h | 107 0.0h SS 175, 122 0.0h FS 189, 224 0.0d SS 1523 | 87 40.0h SS 157 |
| 0.0 | 0.0d | 0.0h | AS_SOON_AS_POSSIBLE | 0.0 | 30.0d | 2023-03-23T16:00 | 0.0 | PRORATED | 107 | Instrument Hook Up Diagram Level Gauge Mutiara M-6 Station | 6 | 1.3.2.5.5.2 | 0.0 | [Priority value=500] | 0.0 | 30.0d | 0.0h | 2023-02-10T08:00 | 175 | 3.4.5 | 0.0h | 108 0.0h SS 176 | 106 0.0h SS 174 |
| 0.0 | 0.0d | 0.0h | AS_SOON_AS_POSSIBLE | 0.0 | 30.0d | 2023-03-23T16:00 | 0.0 | PRORATED | 108 | Instrument Hook Up Diagram Level Gauge Mutiara M-6 Station | 6 | 1.3.2.5.5.3 | 0.0 | [Priority value=500] | 0.0 | 30.0d | 0.0h | 2023-02-10T08:00 | 176 | 3.4.5 | 0.0h | 109 0.0h SS 177 | 107 0.0h SS 175 |
| 0.0 | 0.0d | 0.0h | AS_SOON_AS_POSSIBLE | 0.0 | 30.0d | 2023-03-23T16:00 | 0.0 | PRORATED | 109 | Instrument Hook Up Diagram Press,Diff.Indicator Mutiara M-6 Statio | 6 | 1.3.2.5.5.4 | 0.0 | [Priority value=500] | 0.0 | 30.0d | 0.0h | 2023-02-10T08:00 | 177 | 3.4.5 | 0.0h | 110 40.0h SS 178 | 108 0.0h SS 176 |
| 0.0 | 0.0d | 0.0h | AS_SOON_AS_POSSIBLE | 0.0 | 30.0d | 2023-03-30T16:00 | 0.0 | PRORATED | 110 | Hook Up Diagram Pressure Gauge Mutiara M-6 Station | 6 | 1.3.2.5.5.5 | 0.0 | [Priority value=500] | 0.0 | 30.0d | 0.0h | 2023-02-17T08:00 | 178 | 3.4.5 | 0.0h | 111 0.0h SS 179 | 109 40.0h SS 177 |
| 0.0 | 0.0d | 0.0h | AS_SOON_AS_POSSIBLE | 0.0 | 30.0d | 2023-03-30T16:00 | 0.0 | PRORATED | 111 | Hook Up Diagram Pressure Transmitter Mutiara M-6 Station | 6 | 1.3.2.5.5.6 | 0.0 | [Priority value=500] | 0.0 | 30.0d | 0.0h | 2023-02-17T08:00 | 179 | 3.4.5 | 0.0h | 112 0.0h SS 180 | 110 0.0h SS 178 |
| 0.0 | 0.0d | 0.0h | AS_SOON_AS_POSSIBLE | 0.0 | 30.0d | 2023-03-30T16:00 | 0.0 | PRORATED | 112 | Hook Up Diagram TI & TW Mutiara M-6 Station | 6 | 1.3.2.5.5.7 | 0.0 | [Priority value=500] | 0.0 | 30.0d | 0.0h | 2023-02-17T08:00 | 180 | 3.4.5 | 0.0h | 113 0.0h SS 181 | 111 0.0h SS 179 |
| 0.0 | 0.0d | 0.0h | AS_SOON_AS_POSSIBLE | 0.0 | 30.0d | 2023-03-30T16:00 | 0.0 | PRORATED | 113 | Hook Up Diagram Control Valve,Transducer( I/P)& Solenoid Valve Mutiara M-6 Statio | 6 | 1.3.2.5.5.8 | 0.0 | [Priority value=500] | 0.0 | 30.0d | 0.0h | 2023-02-17T08:00 | 181 | 3.4.5 | 0.0h |  | 112 0.0h SS 180 |
| 0.0 | 0.0d | 0.0h | AS_SOON_AS_POSSIBLE | 0.0 | 35.0d | 2023-04-06T16:00 | 0.0 | PRORATED | 114 | Logic Diagram | 5 | 1.3.2.5.6 | 0.0 | [Priority value=500] | 0.0 | 35.0d | 0.0h | 2023-02-17T08:00 | 182 | 3.4.6 | 0.0h |  |  |
| 0.0 | 0.0d | 0.0h | AS_SOON_AS_POSSIBLE | 0.0 | 30.0d | 2023-03-30T16:00 | 0.0 | PRORATED | 115 | Instrument Logic Diagram Shutdown System Mutiara Station # | 6 | 1.3.2.5.6.1 | 0.0 | [Priority value=500] | 0.0 | 30.0d | 0.0h | 2023-02-17T08:00 | 183 | 3.4.6 | 0.0h | 116 40.0h SS 184, 234 0.0d SS 1532 | 87 80.0h SS 157 |
| 0.0 | 0.0d | 0.0h | AS_SOON_AS_POSSIBLE | 0.0 | 30.0d | 2023-04-06T16:00 | 0.0 | PRORATED | 116 | Logic Diagram Fire & Gas Syste | 6 | 1.3.2.5.6.2 | 0.0 | [Priority value=500] | 0.0 | 30.0d | 0.0h | 2023-02-24T08:00 | 184 | 3.4.6 | 0.0h |  | 115 40.0h SS 183 |
| 0.0 | 0.0d | 0.0h | AS_SOON_AS_POSSIBLE | 0.0 | 30.0d | 2023-04-27T16:00 | 0.0 | PRORATED | 117 | IO List/Index | 5 | 1.3.2.5.7 | 0.0 | [Priority value=500] | 0.0 | 30.0d | 0.0h | 2023-03-17T08:00 | 185 | 3.4.7 | 0.0h |  |  |
| 0.0 | 0.0d | 0.0h | AS_SOON_AS_POSSIBLE | 0.0 | 30.0d | 2023-04-27T16:00 | 0.0 | PRORATED | 118 | INSTRUMENT INDEX Mutiara - 6 | 6 | 1.3.2.5.7.1 | 0.0 | [Priority value=500] | 0.0 | 30.0d | 0.0h | 2023-03-17T08:00 | 186 | 3.4.7 | 0.0h | 119 0.0h SS 187 | 90 0.0h FS 159 |
| 0.0 | 0.0d | 0.0h | AS_SOON_AS_POSSIBLE | 0.0 | 30.0d | 2023-04-27T16:00 | 0.0 | PRORATED | 119 | INSTRUMENT I/O LIST Mutiara - | 6 | 1.3.2.5.7.2 | 0.0 | [Priority value=500] | 0.0 | 30.0d | 0.0h | 2023-03-17T08:00 | 187 | 3.4.7 | 0.0h | 120 0.0d SS 1238 | 118 0.0h SS 186 |
| 0.0 | 0.0d | 0.0h | AS_SOON_AS_POSSIBLE | 0.0 | 30.0d | 2023-04-27T16:00 | 0.0 | PRORATED | 120 | F&G I/O List | 6 | 1.3.2.5.7.3 | 0.0 | [Priority value=500] | 0.0 | 30.0d | 0.0h | 2023-03-17T08:00 | 1238 | 3.4.7.3 | 0.0h |  | 119 0.0d SS 187 |
| 0.0 | 0.0d | 0.0h | AS_SOON_AS_POSSIBLE | 0.0 | 30.0d | 2023-05-04T16:00 | 0.0 | PRORATED | 121 | Loop Diagram | 5 | 1.3.2.5.8 | 0.0 | [Priority value=500] | 0.0 | 30.0d | 0.0h | 2023-03-24T08:00 | 188 | 3.4.8 | 0.0h |  |  |
| 0.0 | 0.0d | 0.0h | AS_SOON_AS_POSSIBLE | 0.0 | 30.0d | 2023-05-04T16:00 | 0.0 | PRORATED | 122 | Instrument Index | 6 | 1.3.2.5.8.1 | 0.0 | [Priority value=500] | 0.0 | 30.0d | 0.0h | 2023-03-24T08:00 | 189 | 3.4.8 | 0.0h | 123 0.0h SS 190 | 106 0.0h FS 174 |
| 0.0 | 0.0d | 0.0h | AS_SOON_AS_POSSIBLE | 0.0 | 30.0d | 2023-05-04T16:00 | 0.0 | PRORATED | 123 | Instrumentation Loop Diagram | 6 | 1.3.2.5.8.2 | 0.0 | [Priority value=500] | 0.0 | 30.0d | 0.0h | 2023-03-24T08:00 | 190 | 3.4.8 | 0.0h | 125 0.0h SS 192, 132 0.0h SS 198 | 122 0.0h SS 189 |
| 0.0 | 0.0d | 0.0h | AS_SOON_AS_POSSIBLE | 0.0 | 30.0d | 2023-05-04T16:00 | 0.0 | PRORATED | 124 | List & Schedule | 5 | 1.3.2.5.9 | 0.0 | [Priority value=500] | 0.0 | 30.0d | 0.0h | 2023-03-24T08:00 | 191 | 3.4.9 | 0.0h |  |  |
| 0.0 | 0.0d | 0.0h | AS_SOON_AS_POSSIBLE | 0.0 | 30.0d | 2023-05-04T16:00 | 0.0 | PRORATED | 125 | Electrical Mutiara Satellite M-6 Signal Cable Schedule | 6 | 1.3.2.5.9.1 | 0.0 | [Priority value=500] | 0.0 | 30.0d | 0.0h | 2023-03-24T08:00 | 192 | 3.4.9 | 0.0h | 126 0.0h SS 193 | 123 0.0h SS 190 |
| 0.0 | 0.0d | 0.0h | AS_SOON_AS_POSSIBLE | 0.0 | 30.0d | 2023-05-04T16:00 | 0.0 | PRORATED | 126 | Electrical Mutiara Satellite M-6 Fire Cable Schedule | 6 | 1.3.2.5.9.2 | 0.0 | [Priority value=500] | 0.0 | 30.0d | 0.0h | 2023-03-24T08:00 | 193 | 3.4.9 | 0.0h | 127 0.0h SS 194 | 125 0.0h SS 192 |
| 0.0 | 0.0d | 0.0h | AS_SOON_AS_POSSIBLE | 0.0 | 30.0d | 2023-05-04T16:00 | 0.0 | PRORATED | 127 | Electrical Mutiara M-6 Analog Cable Schedule | 6 | 1.3.2.5.9.3 | 0.0 | [Priority value=500] | 0.0 | 30.0d | 0.0h | 2023-03-24T08:00 | 194 | 3.4.9 | 0.0h | 129 0.0h SS 196 | 126 0.0h SS 193 |
| 0.0 | 0.0d | 0.0h | AS_SOON_AS_POSSIBLE | 0.0 | 30.0d | 2023-05-04T16:00 | 0.0 | PRORATED | 128 | Cause & Effect Diagram | 5 | 1.3.2.5.10 | 0.0 | [Priority value=500] | 0.0 | 30.0d | 0.0h | 2023-03-24T08:00 | 195 | 3.4.10 | 0.0h |  |  |
| 0.0 | 0.0d | 0.0h | AS_SOON_AS_POSSIBLE | 0.0 | 30.0d | 2023-05-04T16:00 | 0.0 | PRORATED | 129 | Mutiara AG Compressor Addition Station #6 Plant Cause & Effect Diagram | 6 | 1.3.2.5.10.1 | 0.0 | [Priority value=500] | 0.0 | 30.0d | 0.0h | 2023-03-24T08:00 | 196 | 3.4.10 | 0.0h | 130 0.0d SS 1239 | 127 0.0h SS 194 |
| 0.0 | 0.0d | 0.0h | AS_SOON_AS_POSSIBLE | 0.0 | 30.0d | 2023-05-04T16:00 | 0.0 | PRORATED | 130 | Cause Effect Chart Fire & Gas Detection Mutiara M- | 6 | 1.3.2.5.10.2 | 0.0 | [Priority value=500] | 0.0 | 30.0d | 0.0h | 2023-03-24T08:00 | 1239 | 3.4.10.2 | 0.0h |  | 129 0.0d SS 196 |
| 0.0 | 0.0d | 0.0h | AS_SOON_AS_POSSIBLE | 0.0 | 30.0d | 2023-05-04T16:00 | 0.0 | PRORATED | 131 | Cable Block Diagram | 5 | 1.3.2.5.11 | 0.0 | [Priority value=500] | 0.0 | 30.0d | 0.0h | 2023-03-24T08:00 | 197 | 3.4.11 | 0.0h |  |  |
| 0.0 | 0.0d | 0.0h | AS_SOON_AS_POSSIBLE | 0.0 | 30.0d | 2023-05-04T16:00 | 0.0 | PRORATED | 132 | Electrical Mutiara Satelite M-6 Cabling Block Diagra | 6 | 1.3.2.5.11.1 | 0.0 | [Priority value=500] | 0.0 | 30.0d | 0.0h | 2023-03-24T08:00 | 198 | 3.4.11 | 0.0h | 133 0.0h SS 199, 255 0.0d SS 1546 | 123 0.0h SS 190 |
| 0.0 | 0.0d | 0.0h | AS_SOON_AS_POSSIBLE | 0.0 | 30.0d | 2023-05-04T16:00 | 0.0 | PRORATED | 133 | Electrical Mutiara Satelite M-6 Fire & Gas Protection System Cabling Block Diagram | 6 | 1.3.2.5.11.2 | 0.0 | [Priority value=500] | 0.0 | 30.0d | 0.0h | 2023-03-24T08:00 | 199 | 3.4.11 | 0.0h | 135 40.0h SS 201 | 132 0.0h SS 198 |
| 0.0 | 0.0d | 0.0h | AS_SOON_AS_POSSIBLE | 0.0 | 30.0d | 2023-05-11T16:00 | 0.0 | PRORATED | 134 | Instrument Mounting Detail | 5 | 1.3.2.5.12 | 0.0 | [Priority value=500] | 0.0 | 30.0d | 0.0h | 2023-03-31T08:00 | 200 | 3.4.12 | 0.0h |  |  |
| 0.0 | 0.0d | 0.0h | AS_SOON_AS_POSSIBLE | 0.0 | 30.0d | 2023-05-11T16:00 | 0.0 | PRORATED | 135 | Installation Detail For Instrument Stanchion | 6 | 1.3.2.5.12.1 | 0.0 | [Priority value=500] | 0.0 | 30.0d | 0.0h | 2023-03-31T08:00 | 201 | 3.4.12 | 0.0h | 136 0.0h SS 202 | 133 40.0h SS 199 |
| 0.0 | 0.0d | 0.0h | AS_SOON_AS_POSSIBLE | 0.0 | 30.0d | 2023-05-11T16:00 | 0.0 | PRORATED | 136 | Installation Detail For Instrument Junction Bo | 6 | 1.3.2.5.12.2 | 0.0 | [Priority value=500] | 0.0 | 30.0d | 0.0h | 2023-03-31T08:00 | 202 | 3.4.12 | 0.0h | 137 0.0h SS 203 | 135 0.0h SS 201 |
| 0.0 | 0.0d | 0.0h | AS_SOON_AS_POSSIBLE | 0.0 | 30.0d | 2023-05-11T16:00 | 0.0 | PRORATED | 137 | Installation Detail For Flame Detector | 6 | 1.3.2.5.12.3 | 0.0 | [Priority value=500] | 0.0 | 30.0d | 0.0h | 2023-03-31T08:00 | 203 | 3.4.12 | 0.0h | 139 40.0h SS 4 | 136 0.0h SS 202 |
| 0.0 | 0.0d | 0.0h | AS_SOON_AS_POSSIBLE | 0.0 | 30.0d | 2023-05-18T16:00 | 0.0 | PRORATED | 138 | BOM | 5 | 1.3.2.5.13 | 0.0 | [Priority value=500] | 0.0 | 30.0d | 0.0h | 2023-04-07T08:00 | 204 | 3.4.13 | 0.0h |  |  |
| 0.0 | 0.0d | 0.0h | AS_SOON_AS_POSSIBLE | 0.0 | 30.0d | 2023-05-18T16:00 | 0.0 | PRORATED | 139 | Instrument BOM | 6 | 1.3.2.5.13.1 | 0.0 | [Priority value=500] | 0.0 | 30.0d | 0.0h | 2023-04-07T08:00 | 4 | 3.4.13 | 0.0h | 4 0.0d FS 3, 318 0.0d FS 1312, 320 0.0d FS 1322, 322 0.0d FS 1328, 324 0.0d FS 27, 326 0.0d FS 32, 328 0.0d FS 374, 330 0.0d FS 35, 316 0.0d FS 26, 310 0.0d SS 1681, 312 0.0d SS 1682, 314 0.0d SS 1680 | 137 40.0h SS 203 |

| actualCost | actualDuration | actualWork | constraintType | cost | duration | finish | fixedCost | fixedCostAccrual | id | name | outlineLevel | outlineNumber | percentageComplete | priority | remainingCost | remainingDuration | remainingWork | start | uniqueID | wbs | work | successors | predecessors |
| --- | --- | --- | --- | --- | --- | --- | --- | --- | --- | --- | --- | --- | --- | --- | --- | --- | --- | --- | --- | --- | --- | --- | --- |
| 0.0 | 0.0d | 0.0h | AS_SOON_AS_POSSIBLE | 0.0 | 80.0d | 2023-05-11T16:00 | 0.0 | PRORATED | 140 | Civil | 4 | 1.3.2.6 | 0.0 | [Priority value=500] | 0.0 | 80.0d | 0.0h | 2023-01-20T08:00 | 205 | 3.5 | 0.0h |  |  |
| 0.0 | 0.0d | 0.0h | AS_SOON_AS_POSSIBLE | 0.0 | 50.0d | 2023-03-30T16:00 | 0.0 | PRORATED | 141 | Structural and Foundation Calculation | 5 | 1.3.2.6.1 | 0.0 | [Priority value=500] | 0.0 | 50.0d | 0.0h | 2023-01-20T08:00 | 206 | 3.5.1 | 0.0h |  |  |
| 0.0 | 0.0d | 0.0h | AS_SOON_AS_POSSIBLE | 0.0 | 30.0d | 2023-03-02T16:00 | 0.0 | PRORATED | 142 | Calculation for Compressor (C-7040) Foundation | 6 | 1.3.2.6.1.1 | 0.0 | [Priority value=500] | 0.0 | 30.0d | 0.0h | 2023-01-20T08:00 | 207 | 3.5.1 | 0.0h | 143 0.0h SS 208 | 15 0.0h FS 76, 48 0.0h FS 112 |
| 0.0 | 0.0d | 0.0h | AS_SOON_AS_POSSIBLE | 0.0 | 30.0d | 2023-03-02T16:00 | 0.0 | PRORATED | 143 | Calculation for Operating Platform Foundation (use Existing Structure) | 6 | 1.3.2.6.1.2 | 0.0 | [Priority value=500] | 0.0 | 30.0d | 0.0h | 2023-01-20T08:00 | 208 | 3.5.1 | 0.0h | 144 40.0h SS 209 | 142 0.0h SS 207 |
| 0.0 | 0.0d | 0.0h | AS_SOON_AS_POSSIBLE | 0.0 | 30.0d | 2023-03-09T16:00 | 0.0 | PRORATED | 144 | Calculation for Cooler (EG-7040) Foundation | 6 | 1.3.2.6.1.3 | 0.0 | [Priority value=500] | 0.0 | 30.0d | 0.0h | 2023-01-27T08:00 | 209 | 3.5.1 | 0.0h | 145 0.0h SS 210 | 143 40.0h SS 208 |
| 0.0 | 0.0d | 0.0h | AS_SOON_AS_POSSIBLE | 0.0 | 30.0d | 2023-03-09T16:00 | 0.0 | PRORATED | 145 | Calculation for Lube Oil Air Cooler (EQ-7040) Foundation | 6 | 1.3.2.6.1.4 | 0.0 | [Priority value=500] | 0.0 | 30.0d | 0.0h | 2023-01-27T08:00 | 210 | 3.5.1 | 0.0h | 146 40.0h SS 211 | 144 0.0h SS 209 |
| 0.0 | 0.0d | 0.0h | AS_SOON_AS_POSSIBLE | 0.0 | 30.0d | 2023-03-16T16:00 | 0.0 | PRORATED | 146 | Calculation for Suction Scrubber (V-7040) Foundation | 6 | 1.3.2.6.1.5 | 0.0 | [Priority value=500] | 0.0 | 30.0d | 0.0h | 2023-02-03T08:00 | 211 | 3.5.1 | 0.0h | 147 0.0h SS 212 | 145 40.0h SS 210 |
| 0.0 | 0.0d | 0.0h | AS_SOON_AS_POSSIBLE | 0.0 | 30.0d | 2023-03-16T16:00 | 0.0 | PRORATED | 147 | Calculation for Fuel Gas Filter (F-7040) Foundation | 6 | 1.3.2.6.1.6 | 0.0 | [Priority value=500] | 0.0 | 30.0d | 0.0h | 2023-02-03T08:00 | 212 | 3.5.1 | 0.0h | 148 40.0h SS 213 | 146 0.0h SS 211 |
| 0.0 | 0.0d | 0.0h | AS_SOON_AS_POSSIBLE | 0.0 | 30.0d | 2023-03-23T16:00 | 0.0 | PRORATED | 148 | Calculation for Misc. Pipe Support Steel Structure & Foundation | 6 | 1.3.2.6.1.7 | 0.0 | [Priority value=500] | 0.0 | 30.0d | 0.0h | 2023-02-10T08:00 | 213 | 3.5.1 | 0.0h | 149 0.0h SS 214, 155 40.0h SS 220 | 147 40.0h SS 212 |
| 0.0 | 0.0d | 0.0h | AS_SOON_AS_POSSIBLE | 0.0 | 30.0d | 2023-03-23T16:00 | 0.0 | PRORATED | 149 | Calculation for Operating Platform Structure and Foundation Fuel Gas | 6 | 1.3.2.6.1.8 | 0.0 | [Priority value=500] | 0.0 | 30.0d | 0.0h | 2023-02-10T08:00 | 214 | 3.5.1 | 0.0h | 150 40.0h SS 215 | 148 0.0h SS 213 |
| 0.0 | 0.0d | 0.0h | AS_SOON_AS_POSSIBLE | 0.0 | 30.0d | 2023-03-30T16:00 | 0.0 | PRORATED | 150 | Calculation for Mutiara Central plant Compressor Building Foundation | 6 | 1.3.2.6.1.9 | 0.0 | [Priority value=500] | 0.0 | 30.0d | 0.0h | 2023-02-17T08:00 | 215 | 3.5.1 | 0.0h | 151 0.0h SS 216 | 149 40.0h SS 214 |
| 0.0 | 0.0d | 0.0h | AS_SOON_AS_POSSIBLE | 0.0 | 30.0d | 2023-03-30T16:00 | 0.0 | PRORATED | 151 | Calculation For Pipe Rack Structure and Foundation | 6 | 1.3.2.6.1.10 | 0.0 | [Priority value=500] | 0.0 | 30.0d | 0.0h | 2023-02-17T08:00 | 216 | 3.5.1 | 0.0h | 153 40.0h SS 218, 160 80.0h SS 225, 165 80.0h SS 230 | 150 0.0h SS 215 |
| 0.0 | 0.0d | 0.0h | AS_SOON_AS_POSSIBLE | 0.0 | 30.0d | 2023-04-06T16:00 | 0.0 | PRORATED | 152 | Location Plan | 5 | 1.3.2.6.2 | 0.0 | [Priority value=500] | 0.0 | 30.0d | 0.0h | 2023-02-24T08:00 | 217 | 3.5.2 | 0.0h |  |  |
| 0.0 | 0.0d | 0.0h | AS_SOON_AS_POSSIBLE | 0.0 | 30.0d | 2023-04-06T16:00 | 0.0 | PRORATED | 153 | Foundation Location Plan | 6 | 1.3.2.6.2.1 | 0.0 | [Priority value=500] | 0.0 | 30.0d | 0.0h | 2023-02-24T08:00 | 218 | 3.5.2 | 0.0h | 155 40.0h SS 220 | 151 40.0h SS 216, 48 0.0h FS 112 |
| 0.0 | 0.0d | 0.0h | AS_SOON_AS_POSSIBLE | 0.0 | 35.0d | 2023-04-20T16:00 | 0.0 | PRORATED | 154 | Pipe Support - Plan, Section, Detail | 5 | 1.3.2.6.3 | 0.0 | [Priority value=500] | 0.0 | 35.0d | 0.0h | 2023-03-03T08:00 | 219 | 3.5.3 | 0.0h |  |  |
| 0.0 | 0.0d | 0.0h | AS_SOON_AS_POSSIBLE | 0.0 | 30.0d | 2023-04-13T16:00 | 0.0 | PRORATED | 155 | Pipe Support - Plan, Section, Detail | 6 | 1.3.2.6.3.1 | 0.0 | [Priority value=500] | 0.0 | 30.0d | 0.0h | 2023-03-03T08:00 | 220 | 3.5.3 | 0.0h | 156 0.0h SS 221 | 48 0.0h FS 112, 148 40.0h SS 213, 153 40.0h SS 218 |
| 0.0 | 0.0d | 0.0h | AS_SOON_AS_POSSIBLE | 0.0 | 30.0d | 2023-04-13T16:00 | 0.0 | PRORATED | 156 | Pipe Support - Foundation | 6 | 1.3.2.6.3.2 | 0.0 | [Priority value=500] | 0.0 | 30.0d | 0.0h | 2023-03-03T08:00 | 221 | 3.5.3 | 0.0h | 157 40.0h SS 222 | 155 0.0h SS 220 |
| 0.0 | 0.0d | 0.0h | AS_SOON_AS_POSSIBLE | 0.0 | 30.0d | 2023-04-20T16:00 | 0.0 | PRORATED | 157 | Mutiara Central Plant Existing Compressor building modification - Plan, Section, Detail | 6 | 1.3.2.6.3.3 | 0.0 | [Priority value=500] | 0.0 | 30.0d | 0.0h | 2023-03-10T08:00 | 222 | 3.5.3 | 0.0h | 158 0.0h SS 223 | 156 40.0h SS 221 |
| 0.0 | 0.0d | 0.0h | AS_SOON_AS_POSSIBLE | 0.0 | 30.0d | 2023-04-20T16:00 | 0.0 | PRORATED | 158 | Mutiara Central Plant Existing Compressor building modification - Foundation (if needed/ tentative) | 6 | 1.3.2.6.3.4 | 0.0 | [Priority value=500] | 0.0 | 30.0d | 0.0h | 2023-03-10T08:00 | 223 | 3.5.3 | 0.0h |  | 157 0.0h SS 222 |
| 0.0 | 0.0d | 0.0h | AS_SOON_AS_POSSIBLE | 0.0 | 35.0d | 2023-04-20T16:00 | 0.0 | PRORATED | 159 | Operating Platform detail, elevation, plan | 5 | 1.3.2.6.4 | 0.0 | [Priority value=500] | 0.0 | 35.0d | 0.0h | 2023-03-03T08:00 | 224 | 3.5.4 | 0.0h |  |  |
| 0.0 | 0.0d | 0.0h | AS_SOON_AS_POSSIBLE | 0.0 | 30.0d | 2023-04-13T16:00 | 0.0 | PRORATED | 160 | Structural Acces Platform for Fuel Gas (MF-F-7045), Plan, Section , Detail | 6 | 1.3.2.6.4.1 | 0.0 | [Priority value=500] | 0.0 | 30.0d | 0.0h | 2023-03-03T08:00 | 225 | 3.5.4 | 0.0h | 161 0.0h SS 226, 258 0.0d SS 1577 | 151 80.0h SS 216 |
| 0.0 | 0.0d | 0.0h | AS_SOON_AS_POSSIBLE | 0.0 | 30.0d | 2023-04-13T16:00 | 0.0 | PRORATED | 161 | Structural Acces Platform for Suction Scuber (MT-V-7040), Plan, Section , Detail | 6 | 1.3.2.6.4.2 | 0.0 | [Priority value=500] | 0.0 | 30.0d | 0.0h | 2023-03-03T08:00 | 226 | 3.5.4 | 0.0h | 162 40.0h SS 227 | 160 0.0h SS 225 |
| 0.0 | 0.0d | 0.0h | AS_SOON_AS_POSSIBLE | 0.0 | 30.0d | 2023-04-20T16:00 | 0.0 | PRORATED | 162 | Structural Acces Platform for Pipe/Valve (C-7040), Plan, Section , Detail | 6 | 1.3.2.6.4.3 | 0.0 | [Priority value=500] | 0.0 | 30.0d | 0.0h | 2023-03-10T08:00 | 227 | 3.5.4 | 0.0h | 163 0.0h SS 228 | 161 40.0h SS 226 |
| 0.0 | 0.0d | 0.0h | AS_SOON_AS_POSSIBLE | 0.0 | 30.0d | 2023-04-20T16:00 | 0.0 | PRORATED | 163 | Structiural Access Platform For Pipevalve (C-7040) Plan, Section & Detail Mutiara Gas Facility | 6 | 1.3.2.6.4.4 | 0.0 | [Priority value=500] | 0.0 | 30.0d | 0.0h | 2023-03-10T08:00 | 228 | 3.5.4 | 0.0h |  | 162 0.0h SS 227 |
| 0.0 | 0.0d | 0.0h | AS_SOON_AS_POSSIBLE | 0.0 | 40.0d | 2023-04-27T16:00 | 0.0 | PRORATED | 164 | Equipment Foundation -Plan, Section, Detail | 5 | 1.3.2.6.5 | 0.0 | [Priority value=500] | 0.0 | 40.0d | 0.0h | 2023-03-03T08:00 | 229 | 3.5.5 | 0.0h |  |  |
| 0.0 | 0.0d | 0.0h | AS_SOON_AS_POSSIBLE | 0.0 | 30.0d | 2023-04-13T16:00 | 0.0 | PRORATED | 165 | Compressor (C-7040) Foundation-Plan, Section & Detail | 6 | 1.3.2.6.5.1 | 0.0 | [Priority value=500] | 0.0 | 30.0d | 0.0h | 2023-03-03T08:00 | 230 | 3.5.5 | 0.0h | 166 0.0h SS 231 | 151 80.0h SS 216 |
| 0.0 | 0.0d | 0.0h | AS_SOON_AS_POSSIBLE | 0.0 | 30.0d | 2023-04-13T16:00 | 0.0 | PRORATED | 166 | Cooler (EG-7040) Foundation-Plan, Section & Detail | 6 | 1.3.2.6.5.2 | 0.0 | [Priority value=500] | 0.0 | 30.0d | 0.0h | 2023-03-03T08:00 | 231 | 3.5.5 | 0.0h | 167 0.0h SS 232 | 165 0.0h SS 230 |
| 0.0 | 0.0d | 0.0h | AS_SOON_AS_POSSIBLE | 0.0 | 30.0d | 2023-04-13T16:00 | 0.0 | PRORATED | 167 | Fuel Gas Filter (F-7040) Foundation-Plan, Section & Detail | 6 | 1.3.2.6.5.3 | 0.0 | [Priority value=500] | 0.0 | 30.0d | 0.0h | 2023-03-03T08:00 | 232 | 3.5.5 | 0.0h | 168 40.0h SS 233 | 166 0.0h SS 231 |
| 0.0 | 0.0d | 0.0h | AS_SOON_AS_POSSIBLE | 0.0 | 30.0d | 2023-04-20T16:00 | 0.0 | PRORATED | 168 | Suction Scrubber (V-7040) and Acces Platform Foundation-Plan, Section & Detail | 6 | 1.3.2.6.5.4 | 0.0 | [Priority value=500] | 0.0 | 30.0d | 0.0h | 2023-03-10T08:00 | 233 | 3.5.5 | 0.0h | 169 0.0h SS 234 | 167 40.0h SS 232 |
| 0.0 | 0.0d | 0.0h | AS_SOON_AS_POSSIBLE | 0.0 | 30.0d | 2023-04-20T16:00 | 0.0 | PRORATED | 169 | Lube Oil Air Cooler (EQ-7040) Foundation-Plan, Section & Detail | 6 | 1.3.2.6.5.5 | 0.0 | [Priority value=500] | 0.0 | 30.0d | 0.0h | 2023-03-10T08:00 | 234 | 3.5.5 | 0.0h | 170 0.0h SS 235 | 168 0.0h SS 233 |
| 0.0 | 0.0d | 0.0h | AS_SOON_AS_POSSIBLE | 0.0 | 30.0d | 2023-04-20T16:00 | 0.0 | PRORATED | 170 | Platform Manhole & Platform Fuel Gas Filter MT-F-7045 Foundation 123 | 6 | 1.3.2.6.5.6 | 0.0 | [Priority value=500] | 0.0 | 30.0d | 0.0h | 2023-03-10T08:00 | 235 | 3.5.5 | 0.0h | 171 40.0h SS 236 | 169 0.0h SS 234 |
| 0.0 | 0.0d | 0.0h | AS_SOON_AS_POSSIBLE | 0.0 | 30.0d | 2023-04-27T16:00 | 0.0 | PRORATED | 171 | Concrete Slab and sumpit Tank Detail ( Update) | 6 | 1.3.2.6.5.7 | 0.0 | [Priority value=500] | 0.0 | 30.0d | 0.0h | 2023-03-17T08:00 | 236 | 3.5.5 | 0.0h | 172 0.0h SS 237 | 170 40.0h SS 235 |
| 0.0 | 0.0d | 0.0h | AS_SOON_AS_POSSIBLE | 0.0 | 30.0d | 2023-04-27T16:00 | 0.0 | PRORATED | 172 | Suction Scrubber (V-7040) & Access Platform Foundation Plan, Section & Detail | 6 | 1.3.2.6.5.8 | 0.0 | [Priority value=500] | 0.0 | 30.0d | 0.0h | 2023-03-17T08:00 | 237 | 3.5.5 | 0.0h | 173 0.0h SS 238 | 171 0.0h SS 236 |
| 0.0 | 0.0d | 0.0h | AS_SOON_AS_POSSIBLE | 0.0 | 30.0d | 2023-04-27T16:00 | 0.0 | PRORATED | 173 | Suction Scrubber (V-7040) & Access Platform Foundation Plan, Section & Detail | 6 | 1.3.2.6.5.9 | 0.0 | [Priority value=500] | 0.0 | 30.0d | 0.0h | 2023-03-17T08:00 | 238 | 3.5.5 | 0.0h | 175 80.0h SS 5, 429 0.0d FS 1688 | 172 0.0h SS 237 |
| 0.0 | 0.0d | 0.0h | AS_SOON_AS_POSSIBLE | 0.0 | 30.0d | 2023-05-11T16:00 | 0.0 | PRORATED | 174 | BOM | 5 | 1.3.2.6.6 | 0.0 | [Priority value=500] | 0.0 | 30.0d | 0.0h | 2023-03-31T08:00 | 239 | 3.5.6 | 0.0h | 381 0.0d FS 1657 |  |
| 0.0 | 0.0d | 0.0h | AS_SOON_AS_POSSIBLE | 0.0 | 30.0d | 2023-05-11T16:00 | 0.0 | PRORATED | 175 | Civil BOM | 6 | 1.3.2.6.6.1 | 0.0 | [Priority value=500] | 0.0 | 30.0d | 0.0h | 2023-03-31T08:00 | 5 | 3.5.6 | 0.0h | 4 0.0d FS 3, 440 0.0d FS 1064, 444 0.0d FS 1189, 364 0.0d FS 1280, 333 0.0d FS 39, 335 0.0d FS 1262, 337 0.0d FS 1264, 339 0.0d FS 41, 341 0.0d FS 44, 343 0.0d FS 1268, 345 0.0d FS 45, 347 0.0d FS 46, 349 0.0d FS 48, 351 0.0d FS 49, 353 0.0d FS 50, 355 0.0d FS 51, 357 0.0d FS 53, 359 0.0d FS 54, 361 0.0d FS 56, 287 0.0d SS 1685 | 173 80.0h SS 238 |
| 0.0 | 0.0d | 0.0h | AS_SOON_AS_POSSIBLE | 0.0 | 105.0d | 2023-05-04T16:00 | 0.0 | PRORATED | 176 | Demolition/Dismentling | 3 | 1.3.3 | 0.0 | [Priority value=500] | 0.0 | 105.0d | 0.0h | 2022-12-09T08:00 | 1436 | 3.3 | 0.0h |  |  |
| 0.0 | 0.0d | 0.0h | AS_SOON_AS_POSSIBLE | 0.0 | 30.0d | 2023-01-19T16:00 | 0.0 | PRORATED | 177 | Process | 4 | 1.3.3.1 | 0.0 | [Priority value=500] | 0.0 | 30.0d | 0.0h | 2022-12-09T08:00 | 1437 | 3.1 | 0.0h |  |  |
| 0.0 | 0.0d | 0.0h | AS_SOON_AS_POSSIBLE | 0.0 | 30.0d | 2023-01-19T16:00 | 0.0 | PRORATED | 178 | Process Flow Diagram & HMB | 5 | 1.3.3.1.1 | 0.0 | [Priority value=500] | 0.0 | 30.0d | 0.0h | 2022-12-09T08:00 | 1444 | 3.1.2 | 0.0h |  |  |
| 0.0 | 0.0d | 0.0h | AS_SOON_AS_POSSIBLE | 0.0 | 30.0d | 2023-01-19T16:00 | 0.0 | PRORATED | 179 | PFD Nilam Satellite No.6 Demolition | 6 | 1.3.3.1.1.1 | 0.0 | [Priority value=500] | 0.0 | 30.0d | 0.0h | 2022-12-09T08:00 | 1445 | 3.1.2 | 0.0h | 180 0.0d SS 1446 | 28 0.0d SS 103 |
| 0.0 | 0.0d | 0.0h | AS_SOON_AS_POSSIBLE | 0.0 | 30.0d | 2023-01-19T16:00 | 0.0 | PRORATED | 180 | PFD Utilities System Nilam Satellite No.6 Demolition | 6 | 1.3.3.1.1.2 | 0.0 | [Priority value=500] | 0.0 | 30.0d | 0.0h | 2022-12-09T08:00 | 1446 | 3.1.2 | 0.0h |  | 179 0.0d SS 1445 |
| 0.0 | 0.0d | 0.0h | AS_SOON_AS_POSSIBLE | 0.0 | 30.0d | 2023-01-19T16:00 | 0.0 | PRORATED | 181 | P&ID | 5 | 1.3.3.1.2 | 0.0 | [Priority value=500] | 0.0 | 30.0d | 0.0h | 2022-12-09T08:00 | 1447 | 3.1.3 | 0.0h |  |  |
| 0.0 | 0.0d | 0.0h | AS_SOON_AS_POSSIBLE | 0.0 | 30.0d | 2023-01-19T16:00 | 0.0 | PRORATED | 182 | P&ID VLP Gas Compression Z-6700C 1st Stage Nilam Satellite No. 6 Demolition | 6 | 1.3.3.1.2.1 | 0.0 | [Priority value=500] | 0.0 | 30.0d | 0.0h | 2022-12-09T08:00 | 1448 | 3.1.3 | 0.0h | 183 0.0d SS 1449 | 31 0.0d SS 78 |
| 0.0 | 0.0d | 0.0h | AS_SOON_AS_POSSIBLE | 0.0 | 30.0d | 2023-01-19T16:00 | 0.0 | PRORATED | 183 | P&ID VLP Gas Compression Z-6700C 2nd Stage Nilam Satellite No. 6 Demolition | 6 | 1.3.3.1.2.2 | 0.0 | [Priority value=500] | 0.0 | 30.0d | 0.0h | 2022-12-09T08:00 | 1449 | 3.1.3 | 0.0h | 184 0.0d SS 1450 | 182 0.0d SS 1448 |
| 0.0 | 0.0d | 0.0h | AS_SOON_AS_POSSIBLE | 0.0 | 30.0d | 2023-01-19T16:00 | 0.0 | PRORATED | 184 | P&ID VLP Gas Compression Z-6700C 3rd Stage Nilam Satellite No. 6 Demolition | 6 | 1.3.3.1.2.3 | 0.0 | [Priority value=500] | 0.0 | 30.0d | 0.0h | 2022-12-09T08:00 | 1450 | 3.1.3 | 0.0h | 185 0.0d SS 1451 | 183 0.0d SS 1449 |
| 0.0 | 0.0d | 0.0h | AS_SOON_AS_POSSIBLE | 0.0 | 30.0d | 2023-01-19T16:00 | 0.0 | PRORATED | 185 | P&ID Fuel Gas Filter F-6685C (Comp. C) Nilam Satellite No. 6 Demolition | 6 | 1.3.3.1.2.4 | 0.0 | [Priority value=500] | 0.0 | 30.0d | 0.0h | 2022-12-09T08:00 | 1451 | 3.1.3 | 0.0h |  | 184 0.0d SS 1450 |
| 0.0 | 0.0d | 0.0h | AS_SOON_AS_POSSIBLE | 0.0 | 60.0d | 2023-03-02T16:00 | 0.0 | PRORATED | 186 | Piping/ Mechanical | 4 | 1.3.3.2 | 0.0 | [Priority value=500] | 0.0 | 60.0d | 0.0h | 2022-12-09T08:00 | 1461 | 3.2 | 0.0h |  |  |
| 0.0 | 0.0d | 0.0h | AS_SOON_AS_POSSIBLE | 0.0 | 30.0d | 2023-01-19T16:00 | 0.0 | PRORATED | 187 | Plot Plan | 5 | 1.3.3.2.1 | 0.0 | [Priority value=500] | 0.0 | 30.0d | 0.0h | 2022-12-09T08:00 | 1464 | 3.2.2 | 0.0h |  |  |
| 0.0 | 0.0d | 0.0h | AS_SOON_AS_POSSIBLE | 0.0 | 30.0d | 2023-01-19T16:00 | 0.0 | PRORATED | 188 | Plot Paln Nilam Satelite no.6 Demolition | 6 | 1.3.3.2.1.1 | 0.0 | [Priority value=500] | 0.0 | 30.0d | 0.0h | 2022-12-09T08:00 | 1465 | 3.2.2 | 0.0h | 193 80.0h SS 1470 | 48 0.0d SS 112 |
| 0.0 | 0.0d | 0.0h | AS_SOON_AS_POSSIBLE | 0.0 | 30.0d | 2023-02-09T16:00 | 0.0 | PRORATED | 189 | Piping Plan | 5 | 1.3.3.2.2 | 0.0 | [Priority value=500] | 0.0 | 30.0d | 0.0h | 2022-12-30T08:00 | 1466 | 3.2.3 | 0.0h |  |  |
| 0.0 | 0.0d | 0.0h | AS_SOON_AS_POSSIBLE | 0.0 | 30.0d | 2023-02-09T16:00 | 0.0 | PRORATED | 190 | Piping Plan Nilam Satelite No,6 Compressor Area Demolition | 6 | 1.3.3.2.2.1 | 0.0 | [Priority value=500] | 0.0 | 30.0d | 0.0h | 2022-12-30T08:00 | 1467 | 3.2.3 | 0.0h | 191 0.0d SS 1468 | 50 0.0d SS 114 |
| 0.0 | 0.0d | 0.0h | AS_SOON_AS_POSSIBLE | 0.0 | 30.0d | 2023-02-09T16:00 | 0.0 | PRORATED | 191 | Piping Plan & Section Nilam Satelite No,6 Compressor Area Demolition | 6 | 1.3.3.2.2.2 | 0.0 | [Priority value=500] | 0.0 | 30.0d | 0.0h | 2022-12-30T08:00 | 1468 | 3.2.3 | 0.0h |  | 190 0.0d SS 1467 |
| 0.0 | 0.0d | 0.0h | AS_SOON_AS_POSSIBLE | 0.0 | 50.0d | 2023-03-02T16:00 | 0.0 | PRORATED | 192 | Isometric | 5 | 1.3.3.2.3 | 0.0 | [Priority value=500] | 0.0 | 50.0d | 0.0h | 2022-12-23T08:00 | 1469 | 3.2.4 | 0.0h |  |  |
| 0.0 | 0.0d | 0.0h | AS_SOON_AS_POSSIBLE | 0.0 | 50.0d | 2023-03-02T16:00 | 0.0 | PRORATED | 193 | Isometric Drawing | 6 | 1.3.3.2.3.1 | 0.0 | [Priority value=500] | 0.0 | 50.0d | 0.0h | 2022-12-23T08:00 | 1470 | 3.2.4 | 0.0h |  | 188 80.0h SS 1465 |
| 0.0 | 0.0d | 0.0h | AS_SOON_AS_POSSIBLE | 0.0 | 35.0d | 2023-02-16T16:00 | 0.0 | PRORATED | 194 | Electrical | 4 | 1.3.3.3 | 0.0 | [Priority value=500] | 0.0 | 35.0d | 0.0h | 2022-12-30T08:00 | 1476 | 3.3 | 0.0h |  |  |
| 0.0 | 0.0d | 0.0h | AS_SOON_AS_POSSIBLE | 0.0 | 30.0d | 2023-02-16T16:00 | 0.0 | PRORATED | 195 | Single Line | 5 | 1.3.3.3.1 | 0.0 | [Priority value=500] | 0.0 | 30.0d | 0.0h | 2023-01-06T08:00 | 1483 | 3.3.4 | 0.0h |  |  |
| 0.0 | 0.0d | 0.0h | AS_SOON_AS_POSSIBLE | 0.0 | 30.0d | 2023-02-16T16:00 | 0.0 | PRORATED | 196 | Electrical Nilam Satellite #6 Single Line Diagram Motor Control Center Mcc-601 | 6 | 1.3.3.3.1.1 | 0.0 | [Priority value=500] | 0.0 | 30.0d | 0.0h | 2023-01-06T08:00 | 1484 | 3.3.4 | 0.0h | 199 0.0d FF 1486, 197 0.0d SS 1595 | 69 0.0d SS 137 |
| 0.0 | 0.0d | 0.0h | AS_SOON_AS_POSSIBLE | 0.0 | 1.0d | 2023-01-06T16:00 | 0.0 | PRORATED | 197 | Electrical Nilam Satellite #6 Single Line Diagram Ups-601 Distribution Panel Dp-603 | 6 | 1.3.3.3.1.2 | 0.0 | [Priority value=500] | 0.0 | 1.0d | 0.0h | 2023-01-06T08:00 | 1595 | 3.3.4.2 | 0.0h |  | 196 0.0d SS 1484 |
| 0.0 | 0.0d | 0.0h | AS_SOON_AS_POSSIBLE | 0.0 | 30.0d | 2023-02-16T16:00 | 0.0 | PRORATED | 198 | Cable Schedule | 5 | 1.3.3.3.2 | 0.0 | [Priority value=500] | 0.0 | 30.0d | 0.0h | 2023-01-06T08:00 | 1485 | 3.3.5 | 0.0h |  |  |
| 0.0 | 0.0d | 0.0h | AS_SOON_AS_POSSIBLE | 0.0 | 30.0d | 2023-02-16T16:00 | 0.0 | PRORATED | 199 | Nilam Satelit Station no 6 Power Cable Schedule | 6 | 1.3.3.3.2.1 | 0.0 | [Priority value=500] | 0.0 | 30.0d | 0.0h | 2023-01-06T08:00 | 1486 | 3.3.5 | 0.0h |  | 196 0.0d FF 1484 |
| 0.0 | 0.0d | 0.0h | AS_SOON_AS_POSSIBLE | 0.0 | 30.0d | 2023-02-16T16:00 | 0.0 | PRORATED | 200 | Distribution Layout | 5 | 1.3.3.3.3 | 0.0 | [Priority value=500] | 0.0 | 30.0d | 0.0h | 2023-01-06T08:00 | 1487 | 3.3.6 | 0.0h |  |  |
| 0.0 | 0.0d | 0.0h | AS_SOON_AS_POSSIBLE | 0.0 | 30.0d | 2023-02-16T16:00 | 0.0 | PRORATED | 201 | Area classification - Nilam satelit #6 | 6 | 1.3.3.3.3.1 | 0.0 | [Priority value=500] | 0.0 | 30.0d | 0.0h | 2023-01-06T08:00 | 1488 | 3.3.6 | 0.0h | 202 0.0d SS 1489 | 71 0.0d SS 141 |
| 0.0 | 0.0d | 0.0h | AS_SOON_AS_POSSIBLE | 0.0 | 30.0d | 2023-02-16T16:00 | 0.0 | PRORATED | 202 | Nilam Satelit No #6 LV Distribution Layout Control Building Demolition | 6 | 1.3.3.3.3.2 | 0.0 | [Priority value=500] | 0.0 | 30.0d | 0.0h | 2023-01-06T08:00 | 1489 | 3.3.6 | 0.0h | 203 0.0d SS 1596 | 201 0.0d SS 1488 |
| 0.0 | 0.0d | 0.0h | AS_SOON_AS_POSSIBLE | 0.0 | 30.0d | 2023-02-16T16:00 | 0.0 | PRORATED | 203 | Nilam Satelite #6 L.V. Distribution Layout Out Door Area | 6 | 1.3.3.3.3.3 | 0.0 | [Priority value=500] | 0.0 | 30.0d | 0.0h | 2023-01-06T08:00 | 1596 | 3.3.6.3 | 0.0h | 204 0.0d SS 1597 | 202 0.0d SS 1489 |
| 0.0 | 0.0d | 0.0h | AS_SOON_AS_POSSIBLE | 0.0 | 30.0d | 2023-02-16T16:00 | 0.0 | PRORATED | 204 | Electrical Nilam Satellite #6 L.V.Distribution Layout Compressor Building | 6 | 1.3.3.3.3.4 | 0.0 | [Priority value=500] | 0.0 | 30.0d | 0.0h | 2023-01-06T08:00 | 1597 | 3.3.6.4 | 0.0h |  | 203 0.0d SS 1596 |
| 0.0 | 0.0d | 0.0h | AS_SOON_AS_POSSIBLE | 0.0 | 30.0d | 2023-02-09T16:00 | 0.0 | PRORATED | 205 | Grounding Layout | 5 | 1.3.3.3.4 | 0.0 | [Priority value=500] | 0.0 | 30.0d | 0.0h | 2022-12-30T08:00 | 1490 | 3.3.7 | 0.0h |  |  |
| 0.0 | 0.0d | 0.0h | AS_SOON_AS_POSSIBLE | 0.0 | 30.0d | 2023-02-09T16:00 | 0.0 | PRORATED | 206 | Electrical Nilam Satelite no.6 Grounding Layout Comp. Building Demolition | 6 | 1.3.3.3.4.1 | 0.0 | [Priority value=500] | 0.0 | 30.0d | 0.0h | 2022-12-30T08:00 | 1491 | 3.3.7 | 0.0h |  | 74 0.0d SS 144 |
| 0.0 | 0.0d | 0.0h | AS_SOON_AS_POSSIBLE | 0.0 | 30.0d | 2023-02-16T16:00 | 0.0 | PRORATED | 207 | Connection Diagram | 5 | 1.3.3.3.5 | 0.0 | [Priority value=500] | 0.0 | 30.0d | 0.0h | 2023-01-06T08:00 | 1494 | 3.3.9 | 0.0h |  |  |
| 0.0 | 0.0d | 0.0h | AS_SOON_AS_POSSIBLE | 0.0 | 30.0d | 2023-02-16T16:00 | 0.0 | PRORATED | 208 | Electrical Nilam Satellite No. #6 Connection Diagram MCC-601 | 6 | 1.3.3.3.5.1 | 0.0 | [Priority value=500] | 0.0 | 30.0d | 0.0h | 2023-01-06T08:00 | 1495 | 3.3.9 | 0.0h |  | 71 0.0d SS 141 |
| 0.0 | 0.0d | 0.0h | AS_SOON_AS_POSSIBLE | 0.0 | 65.0d | 2023-05-04T16:00 | 0.0 | PRORATED | 209 | Instrument | 4 | 1.3.3.4 | 0.0 | [Priority value=500] | 0.0 | 65.0d | 0.0h | 2023-02-03T08:00 | 1500 | 3.4 | 0.0h |  |  |

| actualCost | actualDuration | actualWork | constraintType | cost | duration | finish | fixedCost | fixedCostAccrual | id | name | outlineLevel | outlineNumber | percentageComplete | priority | remainingCost | remainingDuration | remainingWork | start | uniqueID | wbs | work | successors | predecessors |
| --- | --- | --- | --- | --- | --- | --- | --- | --- | --- | --- | --- | --- | --- | --- | --- | --- | --- | --- | --- | --- | --- | --- | --- |
| 0.0 | 0.0d | 0.0h | AS_SOON_AS_POSSIBLE | 0.0 | 30.0d | 2023-03-16T16:00 | 0.0 | PRORATED | 210 | Cabling Layout | 5 | 1.3.3.4.1 | 0.0 | [Priority value=500] | 0.0 | 30.0d | 0.0h | 2023-02-03T08:00 | 1506 | 3.4.2 | 0.0h |  |  |
| 0.0 | 0.0d | 0.0h | AS_SOON_AS_POSSIBLE | 0.0 | 30.0d | 2023-03-16T16:00 | 0.0 | PRORATED | 211 | Instrumentation Layout Of Instrument Cabling Compressor Area Nilam Satellite Station No.6 | 6 | 1.3.3.4.1.1 | 0.0 | [Priority value=500] | 0.0 | 30.0d | 0.0h | 2023-02-03T08:00 | 1507 | 3.4.2 | 0.0h | 236 0.0d FS 1535 | 90 0.0d SS 159 |
| 0.0 | 0.0d | 0.0h | AS_SOON_AS_POSSIBLE | 0.0 | 30.0d | 2023-03-23T16:00 | 0.0 | PRORATED | 212 | Location Plan | 5 | 1.3.3.4.2 | 0.0 | [Priority value=500] | 0.0 | 30.0d | 0.0h | 2023-02-10T08:00 | 1509 | 3.4.3 | 0.0h |  |  |
| 0.0 | 0.0d | 0.0h | AS_SOON_AS_POSSIBLE | 0.0 | 30.0d | 2023-03-23T16:00 | 0.0 | PRORATED | 213 | Instrument Location Plan Compressor Area Nilam Satellite Station no.6 Demolition | 6 | 1.3.3.4.2.1 | 0.0 | [Priority value=500] | 0.0 | 30.0d | 0.0h | 2023-02-10T08:00 | 1510 | 3.4.3 | 0.0h | 214 0.0d SS 1599 | 93 0.0d SS 161 |
| 0.0 | 0.0d | 0.0h | AS_SOON_AS_POSSIBLE | 0.0 | 30.0d | 2023-03-23T16:00 | 0.0 | PRORATED | 214 | Instrumentation Fire & Gas Protection System Comp. Area Nilam Sat Station No.6 Demolition | 6 | 1.3.3.4.2.2 | 0.0 | [Priority value=500] | 0.0 | 30.0d | 0.0h | 2023-02-10T08:00 | 1599 | 3.4.3.2 | 0.0h |  | 213 0.0d SS 1510 |
| 0.0 | 0.0d | 0.0h | AS_SOON_AS_POSSIBLE | 0.0 | 40.0d | 2023-04-06T16:00 | 0.0 | PRORATED | 215 | Connection Diagram | 5 | 1.3.3.4.3 | 0.0 | [Priority value=500] | 0.0 | 40.0d | 0.0h | 2023-02-10T08:00 | 1511 | 3.4.4 | 0.0h |  |  |
| 0.0 | 0.0d | 0.0h | AS_SOON_AS_POSSIBLE | 0.0 | 30.0d | 2023-03-23T16:00 | 0.0 | PRORATED | 216 | Instrument Connection Diagram FJB-6-19 Demolition Nilam Satelite Station N0.6 | 6 | 1.3.3.4.3.1 | 0.0 | [Priority value=500] | 0.0 | 30.0d | 0.0h | 2023-02-10T08:00 | 1512 | 3.4.4 | 0.0h | 217 0.0d SS 1513 | 95 0.0d SS 163 |
| 0.0 | 0.0d | 0.0h | AS_SOON_AS_POSSIBLE | 0.0 | 30.0d | 2023-03-23T16:00 | 0.0 | PRORATED | 217 | Instrument Connection Diagram Index Sheet demolition Nilam Satelite Station N0.6 | 6 | 1.3.3.4.3.2 | 0.0 | [Priority value=500] | 0.0 | 30.0d | 0.0h | 2023-02-10T08:00 | 1513 | 3.4.4 | 0.0h | 218 0.0d SS 1514 | 216 0.0d SS 1512 |
| 0.0 | 0.0d | 0.0h | AS_SOON_AS_POSSIBLE | 0.0 | 30.0d | 2023-03-23T16:00 | 0.0 | PRORATED | 218 | Instrument Connection Diagram IJB-6-14 & IJB-6-15 Demolition Nilam Satelite Station N0.6 | 6 | 1.3.3.4.3.3 | 0.0 | [Priority value=500] | 0.0 | 30.0d | 0.0h | 2023-02-10T08:00 | 1514 | 3.4.4 | 0.0h | 219 40.0h SS 1515 | 217 0.0d SS 1513 |
| 0.0 | 0.0d | 0.0h | AS_SOON_AS_POSSIBLE | 0.0 | 30.0d | 2023-03-30T16:00 | 0.0 | PRORATED | 219 | Instrument Connection Diagram IJB-6-16 ( TB-1) Demolition Nilam Satelite Station N0.6 | 6 | 1.3.3.4.3.4 | 0.0 | [Priority value=500] | 0.0 | 30.0d | 0.0h | 2023-02-17T08:00 | 1515 | 3.4.4 | 0.0h | 220 0.0d SS 1516 | 218 40.0h SS 1514 |
| 0.0 | 0.0d | 0.0h | AS_SOON_AS_POSSIBLE | 0.0 | 30.0d | 2023-03-30T16:00 | 0.0 | PRORATED | 220 | Instrument Connection Diagram IJB-6-16 ( TB-2) Demolition Nilam Satelite Station N0.6 | 6 | 1.3.3.4.3.5 | 0.0 | [Priority value=500] | 0.0 | 30.0d | 0.0h | 2023-02-17T08:00 | 1516 | 3.4.4 | 0.0h | 221 0.0d SS 1517 | 219 0.0d SS 1515 |
| 0.0 | 0.0d | 0.0h | AS_SOON_AS_POSSIBLE | 0.0 | 30.0d | 2023-03-30T16:00 | 0.0 | PRORATED | 221 | Instrument Connection Diagram FJB-6-611 ( TB-1) Demolition Nilam Satelite Station N0.6 | 6 | 1.3.3.4.3.6 | 0.0 | [Priority value=500] | 0.0 | 30.0d | 0.0h | 2023-02-17T08:00 | 1517 | 3.4.4 | 0.0h | 222 40.0h SS 1518 | 220 0.0d SS 1516 |
| 0.0 | 0.0d | 0.0h | AS_SOON_AS_POSSIBLE | 0.0 | 30.0d | 2023-04-06T16:00 | 0.0 | PRORATED | 222 | Instrument Connection Diagram FJB-6-611 ( TB-2) Demolition Nilam Satelite Station N0.6 | 6 | 1.3.3.4.3.7 | 0.0 | [Priority value=500] | 0.0 | 30.0d | 0.0h | 2023-02-24T08:00 | 1518 | 3.4.4 | 0.0h |  | 221 40.0h SS 1517 |
| 0.0 | 0.0d | 0.0h | AS_SOON_AS_POSSIBLE | 0.0 | 35.0d | 2023-03-30T16:00 | 0.0 | PRORATED | 223 | Hook up Diagram | 5 | 1.3.3.4.4 | 0.0 | [Priority value=500] | 0.0 | 35.0d | 0.0h | 2023-02-10T08:00 | 1522 | 3.4.5 | 0.0h |  |  |
| 0.0 | 0.0d | 0.0h | AS_SOON_AS_POSSIBLE | 0.0 | 30.0d | 2023-03-23T16:00 | 0.0 | PRORATED | 224 | Hook Up Diagram TI & TW Nilam Satellite #6 Demolition | 6 | 1.3.3.4.4.1 | 0.0 | [Priority value=500] | 0.0 | 30.0d | 0.0h | 2023-02-10T08:00 | 1523 | 3.4.5 | 0.0h | 225 0.0d SS 1524, 239 0.0d FS 1539 | 106 0.0d SS 174 |
| 0.0 | 0.0d | 0.0h | AS_SOON_AS_POSSIBLE | 0.0 | 30.0d | 2023-03-23T16:00 | 0.0 | PRORATED | 225 | Hook Up Diagram For Index Nilam Sat no. 6 | 6 | 1.3.3.4.4.2 | 0.0 | [Priority value=500] | 0.0 | 30.0d | 0.0h | 2023-02-10T08:00 | 1524 | 3.4.5 | 0.0h | 226 0.0d SS 1525 | 224 0.0d SS 1523 |
| 0.0 | 0.0d | 0.0h | AS_SOON_AS_POSSIBLE | 0.0 | 30.0d | 2023-03-23T16:00 | 0.0 | PRORATED | 226 | Hook Up Diagram Pressure Different Indicator Nilam Satellite # 6 | 6 | 1.3.3.4.4.3 | 0.0 | [Priority value=500] | 0.0 | 30.0d | 0.0h | 2023-02-10T08:00 | 1525 | 3.4.5 | 0.0h | 227 0.0d SS 1526 | 225 0.0d SS 1524 |
| 0.0 | 0.0d | 0.0h | AS_SOON_AS_POSSIBLE | 0.0 | 30.0d | 2023-03-23T16:00 | 0.0 | PRORATED | 227 | Hook Up Diagram Control Valve, Transducer (I/P) Andsolenoid Valve Nilam Satellite # 6 | 6 | 1.3.3.4.4.4 | 0.0 | [Priority value=500] | 0.0 | 30.0d | 0.0h | 2023-02-10T08:00 | 1526 | 3.4.5 | 0.0h | 228 40.0h SS 1527 | 226 0.0d SS 1525 |
| 0.0 | 0.0d | 0.0h | AS_SOON_AS_POSSIBLE | 0.0 | 30.0d | 2023-03-30T16:00 | 0.0 | PRORATED | 228 | Hook Up Diagram Level Gauge Nilam Satellite # 6 | 6 | 1.3.3.4.4.5 | 0.0 | [Priority value=500] | 0.0 | 30.0d | 0.0h | 2023-02-17T08:00 | 1527 | 3.4.5 | 0.0h | 229 0.0d SS 1528 | 227 40.0h SS 1526 |
| 0.0 | 0.0d | 0.0h | AS_SOON_AS_POSSIBLE | 0.0 | 30.0d | 2023-03-30T16:00 | 0.0 | PRORATED | 229 | Hook Up Shutdown, Blowdown Valve And Solenoid Valve Nilam Sat no.6 | 6 | 1.3.3.4.4.6 | 0.0 | [Priority value=500] | 0.0 | 30.0d | 0.0h | 2023-02-17T08:00 | 1528 | 3.4.5 | 0.0h | 230 0.0d SS 1529 | 228 0.0d SS 1527 |
| 0.0 | 0.0d | 0.0h | AS_SOON_AS_POSSIBLE | 0.0 | 30.0d | 2023-03-30T16:00 | 0.0 | PRORATED | 230 | Hook Up Pressure Differential Transmitter Nilam Sat6 | 6 | 1.3.3.4.4.7 | 0.0 | [Priority value=500] | 0.0 | 30.0d | 0.0h | 2023-02-17T08:00 | 1529 | 3.4.5 | 0.0h | 231 0.0d SS 1530 | 229 0.0d SS 1528 |
| 0.0 | 0.0d | 0.0h | AS_SOON_AS_POSSIBLE | 0.0 | 30.0d | 2023-03-30T16:00 | 0.0 | PRORATED | 231 | Hook Up Diagram Impulse Line Detail For Flow & Pressure Transmitter Nilam Sat. #6 Demolition | 6 | 1.3.3.4.4.8 | 0.0 | [Priority value=500] | 0.0 | 30.0d | 0.0h | 2023-02-17T08:00 | 1530 | 3.4.5 | 0.0h | 232 0.0d SS 1600 | 230 0.0d SS 1529 |
| 0.0 | 0.0d | 0.0h | AS_SOON_AS_POSSIBLE | 0.0 | 30.0d | 2023-03-30T16:00 | 0.0 | PRORATED | 232 | Instr. Pressure Different Indicator Nilam Satelite No. 6 Demolition | 6 | 1.3.3.4.4.9 | 0.0 | [Priority value=500] | 0.0 | 30.0d | 0.0h | 2023-02-17T08:00 | 1600 | 3.4.5.9 | 0.0h |  | 231 0.0d SS 1530 |
| 0.0 | 0.0d | 0.0h | AS_SOON_AS_POSSIBLE | 0.0 | 30.0d | 2023-03-30T16:00 | 0.0 | PRORATED | 233 | Logic Diagram | 5 | 1.3.3.4.5 | 0.0 | [Priority value=500] | 0.0 | 30.0d | 0.0h | 2023-02-17T08:00 | 1531 | 3.4.6 | 0.0h |  |  |
| 0.0 | 0.0d | 0.0h | AS_SOON_AS_POSSIBLE | 0.0 | 30.0d | 2023-03-30T16:00 | 0.0 | PRORATED | 234 | Instrumentation Schematic Logic Diagram Fire & Gas System Nilam Satellite 6 Demolition | 6 | 1.3.3.4.5.1 | 0.0 | [Priority value=500] | 0.0 | 30.0d | 0.0h | 2023-02-17T08:00 | 1532 | 3.4.6 | 0.0h |  | 115 0.0d SS 183 |
| 0.0 | 0.0d | 0.0h | AS_SOON_AS_POSSIBLE | 0.0 | 30.0d | 2023-04-27T16:00 | 0.0 | PRORATED | 235 | IO List/Index | 5 | 1.3.3.4.6 | 0.0 | [Priority value=500] | 0.0 | 30.0d | 0.0h | 2023-03-17T08:00 | 1534 | 3.4.7 | 0.0h |  |  |
| 0.0 | 0.0d | 0.0h | AS_SOON_AS_POSSIBLE | 0.0 | 30.0d | 2023-04-27T16:00 | 0.0 | PRORATED | 236 | Instrument Index Nilam Sat 6 | 6 | 1.3.3.4.6.1 | 0.0 | [Priority value=500] | 0.0 | 30.0d | 0.0h | 2023-03-17T08:00 | 1535 | 3.4.7 | 0.0h | 237 0.0d SS 1536 | 211 0.0d FS 1507 |
| 0.0 | 0.0d | 0.0h | AS_SOON_AS_POSSIBLE | 0.0 | 30.0d | 2023-04-27T16:00 | 0.0 | PRORATED | 237 | Instrument I/O List Nilam Sat - 6 | 6 | 1.3.3.4.6.2 | 0.0 | [Priority value=500] | 0.0 | 30.0d | 0.0h | 2023-03-17T08:00 | 1536 | 3.4.7 | 0.0h |  | 236 0.0d SS 1535 |
| 0.0 | 0.0d | 0.0h | AS_SOON_AS_POSSIBLE | 0.0 | 30.0d | 2023-05-04T16:00 | 0.0 | PRORATED | 238 | Loop Diagram | 5 | 1.3.3.4.7 | 0.0 | [Priority value=500] | 0.0 | 30.0d | 0.0h | 2023-03-24T08:00 | 1538 | 3.4.8 | 0.0h |  |  |
| 0.0 | 0.0d | 0.0h | AS_SOON_AS_POSSIBLE | 0.0 | 30.0d | 2023-05-04T16:00 | 0.0 | PRORATED | 239 | Instrument Index | 6 | 1.3.3.4.7.1 | 0.0 | [Priority value=500] | 0.0 | 30.0d | 0.0h | 2023-03-24T08:00 | 1539 | 3.4.8 | 0.0h | 240 0.0d SS 1540 | 224 0.0d FS 1523 |
| 0.0 | 0.0d | 0.0h | AS_SOON_AS_POSSIBLE | 0.0 | 30.0d | 2023-05-04T16:00 | 0.0 | PRORATED | 240 | Instrumentation Loop Diagram | 6 | 1.3.3.4.7.2 | 0.0 | [Priority value=500] | 0.0 | 30.0d | 0.0h | 2023-03-24T08:00 | 1540 | 3.4.8 | 0.0h | 252 0.0d SS 1542, 241 0.0d SS 1614 | 239 0.0d SS 1539 |
| 0.0 | 0.0d | 0.0h | AS_SOON_AS_POSSIBLE | 0.0 | 30.0d | 2023-05-04T16:00 | 0.0 | PRORATED | 241 | Instrumentation Loop Diagram Compressor CZ-6700C Nilam Satellite No.6 | 6 | 1.3.3.4.7.3 | 0.0 | [Priority value=500] | 0.0 | 30.0d | 0.0h | 2023-03-24T08:00 | 1614 | 3.4.8.3 | 0.0h | 242 0.0d SS 1615 | 240 0.0d SS 1540 |
| 0.0 | 0.0d | 0.0h | AS_SOON_AS_POSSIBLE | 0.0 | 30.0d | 2023-05-04T16:00 | 0.0 | PRORATED | 242 | Instrumentation Loop Diagram Pcv-6605C & Pt-6605C Nilam Satellite No.6 | 6 | 1.3.3.4.7.4 | 0.0 | [Priority value=500] | 0.0 | 30.0d | 0.0h | 2023-03-24T08:00 | 1615 | 3.4.8.4 | 0.0h | 243 0.0d SS 1616 | 241 0.0d SS 1614 |
| 0.0 | 0.0d | 0.0h | AS_SOON_AS_POSSIBLE | 0.0 | 30.0d | 2023-05-04T16:00 | 0.0 | PRORATED | 243 | Instrumentation Loop Diagram Sdv-6605C Nilam Satellite No.6 | 6 | 1.3.3.4.7.5 | 0.0 | [Priority value=500] | 0.0 | 30.0d | 0.0h | 2023-03-24T08:00 | 1616 | 3.4.8.5 | 0.0h | 244 0.0d SS 1617 | 242 0.0d SS 1615 |
| 0.0 | 0.0d | 0.0h | AS_SOON_AS_POSSIBLE | 0.0 | 30.0d | 2023-05-04T16:00 | 0.0 | PRORATED | 244 | Instrument Loop Diagram BDV-6671 Nilam Sat no.6 | 6 | 1.3.3.4.7.6 | 0.0 | [Priority value=500] | 0.0 | 30.0d | 0.0h | 2023-03-24T08:00 | 1617 | 3.4.8.6 | 0.0h | 245 0.0d SS 1618 | 243 0.0d SS 1616 |
| 0.0 | 0.0d | 0.0h | AS_SOON_AS_POSSIBLE | 0.0 | 30.0d | 2023-05-04T16:00 | 0.0 | PRORATED | 245 | Instrument Loop Diagram SDV-6670C Nilam Sat no.6 | 6 | 1.3.3.4.7.7 | 0.0 | [Priority value=500] | 0.0 | 30.0d | 0.0h | 2023-03-24T08:00 | 1618 | 3.4.8.7 | 0.0h | 246 0.0d SS 1619 | 244 0.0d SS 1617 |
| 0.0 | 0.0d | 0.0h | AS_SOON_AS_POSSIBLE | 0.0 | 30.0d | 2023-05-04T16:00 | 0.0 | PRORATED | 246 | Instrumentation Loop Diagram Sdv-6685C Nilam Satellite | 6 | 1.3.3.4.7.8 | 0.0 | [Priority value=500] | 0.0 | 30.0d | 0.0h | 2023-03-24T08:00 | 1619 | 3.4.8.8 | 0.0h | 247 0.0d SS 1620 | 245 0.0d SS 1618 |
| 0.0 | 0.0d | 0.0h | AS_SOON_AS_POSSIBLE | 0.0 | 30.0d | 2023-05-04T16:00 | 0.0 | PRORATED | 247 | Instrument Loop Diagram PT-6685, FT-6685C & TT-6685C Nilam Sat no.6 | 6 | 1.3.3.4.7.9 | 0.0 | [Priority value=500] | 0.0 | 30.0d | 0.0h | 2023-03-24T08:00 | 1620 | 3.4.8.9 | 0.0h | 248 0.0d SS 1621 | 246 0.0d SS 1619 |
| 0.0 | 0.0d | 0.0h | AS_SOON_AS_POSSIBLE | 0.0 | 30.0d | 2023-05-04T16:00 | 0.0 | PRORATED | 248 | Instrument Loop Diagram LT-6685C Nilam Sat no.6 | 6 | 1.3.3.4.7.10 | 0.0 | [Priority value=500] | 0.0 | 30.0d | 0.0h | 2023-03-24T08:00 | 1621 | 3.4.8.10 | 0.0h | 249 0.0d SS 1622 | 247 0.0d SS 1620 |
| 0.0 | 0.0d | 0.0h | AS_SOON_AS_POSSIBLE | 0.0 | 1.0d | 2023-03-24T16:00 | 0.0 | PRORATED | 249 | Instrument Loop Diagram Scompressor C Z-6700C Nilam Sat no.6 | 6 | 1.3.3.4.7.11 | 0.0 | [Priority value=500] | 0.0 | 1.0d | 0.0h | 2023-03-24T08:00 | 1622 | 3.4.8.11 | 0.0h | 250 0.0d SS 1623 | 248 0.0d SS 1621 |
| 0.0 | 0.0d | 0.0h | AS_SOON_AS_POSSIBLE | 0.0 | 30.0d | 2023-05-04T16:00 | 0.0 | PRORATED | 250 | Loop Diagram Pt-6671C, Ft-6671C & Tt-6671C Nilam Satellite No.6 | 6 | 1.3.3.4.7.12 | 0.0 | [Priority value=500] | 0.0 | 30.0d | 0.0h | 2023-03-24T08:00 | 1623 | 3.4.8.12 | 0.0h |  | 249 0.0d SS 1622 |
| 0.0 | 0.0d | 0.0h | AS_SOON_AS_POSSIBLE | 0.0 | 30.0d | 2023-05-04T16:00 | 0.0 | PRORATED | 251 | List & Schedule | 5 | 1.3.3.4.8 | 0.0 | [Priority value=500] | 0.0 | 30.0d | 0.0h | 2023-03-24T08:00 | 1541 | 3.4.9 | 0.0h |  |  |
| 0.0 | 0.0d | 0.0h | AS_SOON_AS_POSSIBLE | 0.0 | 30.0d | 2023-05-04T16:00 | 0.0 | PRORATED | 252 | Instrument Signal - Cable Schedule Demolition Nilam Satelite Station N0.6 | 6 | 1.3.3.4.8.1 | 0.0 | [Priority value=500] | 0.0 | 30.0d | 0.0h | 2023-03-24T08:00 | 1542 | 3.4.9 | 0.0h | 253 0.0d SS 1543 | 240 0.0d SS 1540 |
| 0.0 | 0.0d | 0.0h | AS_SOON_AS_POSSIBLE | 0.0 | 30.0d | 2023-05-04T16:00 | 0.0 | PRORATED | 253 | Instrument Nilam Satellite Station no.6 Fire Cable Schedule Demolition | 6 | 1.3.3.4.8.2 | 0.0 | [Priority value=500] | 0.0 | 30.0d | 0.0h | 2023-03-24T08:00 | 1543 | 3.4.9 | 0.0h |  | 252 0.0d SS 1542 |
| 0.0 | 0.0d | 0.0h | AS_SOON_AS_POSSIBLE | 0.0 | 30.0d | 2023-05-04T16:00 | 0.0 | PRORATED | 254 | Instrumentation Fire & Gas Protection System Comp. Area Nilam | 5 | 1.3.3.4.9 | 0.0 | [Priority value=500] | 0.0 | 30.0d | 0.0h | 2023-03-24T08:00 | 1545 | 3.4.10 | 0.0h |  |  |
| 0.0 | 0.0d | 0.0h | AS_SOON_AS_POSSIBLE | 0.0 | 30.0d | 2023-05-04T16:00 | 0.0 | PRORATED | 255 | Instrument Cabling Block Diagram VLP.Compressor Demolition Nilam Satelite Station N0.6 | 6 | 1.3.3.4.9.1 | 0.0 | [Priority value=500] | 0.0 | 30.0d | 0.0h | 2023-03-24T08:00 | 1546 | 3.4.10 | 0.0h |  | 132 0.0d SS 198 |
| 0.0 | 0.0d | 0.0h | AS_SOON_AS_POSSIBLE | 0.0 | 30.0d | 2023-04-13T16:00 | 0.0 | PRORATED | 256 | Civil | 4 | 1.3.3.5 | 0.0 | [Priority value=500] | 0.0 | 30.0d | 0.0h | 2023-03-03T08:00 | 1557 | 3.5 | 0.0h |  |  |
| 0.0 | 0.0d | 0.0h | AS_SOON_AS_POSSIBLE | 0.0 | 30.0d | 2023-04-13T16:00 | 0.0 | PRORATED | 257 | Platform detail, elevation, plan | 5 | 1.3.3.5.1 | 0.0 | [Priority value=500] | 0.0 | 30.0d | 0.0h | 2023-03-03T08:00 | 1576 | 3.5.4 | 0.0h |  |  |
| 0.0 | 0.0d | 0.0h | AS_SOON_AS_POSSIBLE | 0.0 | 30.0d | 2023-04-13T16:00 | 0.0 | PRORATED | 258 | Steel Srtuct, Plan Elevation & Member Schedule For Comp.Build. Gas Stater Nilam Sat #6 Fac. | 6 | 1.3.3.5.1.1 | 0.0 | [Priority value=500] | 0.0 | 30.0d | 0.0h | 2023-03-03T08:00 | 1577 | 3.5.4 | 0.0h | 259 0.0d SS 1578 | 160 0.0d SS 225 |
| 0.0 | 0.0d | 0.0h | AS_SOON_AS_POSSIBLE | 0.0 | 30.0d | 2023-04-13T16:00 | 0.0 | PRORATED | 259 | Steel Str, Pipe Support Comp.Build Elevation& Detail Nilam Sat.#6 Demolition | 6 | 1.3.3.5.1.2 | 0.0 | [Priority value=500] | 0.0 | 30.0d | 0.0h | 2023-03-03T08:00 | 1578 | 3.5.4 | 0.0h |  | 258 0.0d SS 1577 |
| 0.0 | 0.0d | 0.0h | AS_SOON_AS_POSSIBLE | 0.0 | 5.0d | 2023-05-18T16:00 | 0.0 | PRORATED | 260 | PHSER-2 | 3 | 1.3.4 | 0.0 | [Priority value=500] | 0.0 | 5.0d | 0.0h | 2023-05-12T08:00 | 508 | 3.4 | 0.0h |  | 4 0.0d FF 3 |
| 0.0 | 0.0d | 0.0h | AS_SOON_AS_POSSIBLE | 0.0 | 217.0d | 2023-11-02T16:00 | 0.0 | PRORATED | 261 | Procurement | 2 | 1.4 | 0.0 | [Priority value=500] | 0.0 | 217.0d | 0.0h | 2023-03-31T08:00 | 240 | 4 | 0.0h |  |  |
| 0.0 | 0.0d | 0.0h | AS_SOON_AS_POSSIBLE | 0.0 | 90.0d | 2023-07-12T16:00 | 0.0 | PRORATED | 262 | Piping | 3 | 1.4.1 | 0.0 | [Priority value=500] | 0.0 | 90.0d | 0.0h | 2023-04-14T08:00 | 241 | 4.1 | 0.0h |  |  |
| 0.0 | 0.0d | 0.0h | AS_SOON_AS_POSSIBLE | 0.0 | 60.0d | 2023-06-12T16:00 | 0.0 | PRORATED | 263 | Pipe | 4 | 1.4.1.1 | 0.0 | [Priority value=500] | 0.0 | 60.0d | 0.0h | 2023-04-14T08:00 | 242 | 4.1.1 | 0.0h |  |  |
| 0.0 | 0.0d | 0.0h | AS_SOON_AS_POSSIBLE | 0.0 | 60.0d | 2023-06-12T16:00 | 0.0 | PRORATED | 264 | Delivery - Pipe | 5 | 1.4.1.1.1 | 0.0 | [Priority value=500] | 0.0 | 60.0d | 0.0h | 2023-04-14T08:00 | 9 | 4.1.1 | 0.0h | 435 0.0d FS 588 | 57 0.0d FS 7 |
| 0.0 | 0.0d | 0.0h | AS_SOON_AS_POSSIBLE | 0.0 | 60.0d | 2023-06-12T16:00 | 0.0 | PRORATED | 265 | Pipe Fitting | 4 | 1.4.1.2 | 0.0 | [Priority value=500] | 0.0 | 60.0d | 0.0h | 2023-04-14T08:00 | 247 | 4.1.10 | 0.0h |  |  |
| 0.0 | 0.0d | 0.0h | AS_SOON_AS_POSSIBLE | 0.0 | 60.0d | 2023-06-12T16:00 | 0.0 | PRORATED | 266 | Delivery - Pipe Fitting | 5 | 1.4.1.2.1 | 0.0 | [Priority value=500] | 0.0 | 60.0d | 0.0h | 2023-04-14T08:00 | 10 | 4.1.10 | 0.0h |  | 57 0.0d FS 7 |
| 0.0 | 0.0d | 0.0h | AS_SOON_AS_POSSIBLE | 0.0 | 60.0d | 2023-06-12T16:00 | 0.0 | PRORATED | 267 | Gasket | 4 | 1.4.1.3 | 0.0 | [Priority value=500] | 0.0 | 60.0d | 0.0h | 2023-04-14T08:00 | 252 | 4.1.2 | 0.0h |  |  |
| 0.0 | 0.0d | 0.0h | AS_SOON_AS_POSSIBLE | 0.0 | 60.0d | 2023-06-12T16:00 | 0.0 | PRORATED | 268 | Delivery - Gasket | 5 | 1.4.1.3.1 | 0.0 | [Priority value=500] | 0.0 | 60.0d | 0.0h | 2023-04-14T08:00 | 11 | 4.1.2 | 0.0h |  | 57 0.0d FS 7 |
| 0.0 | 0.0d | 0.0h | AS_SOON_AS_POSSIBLE | 0.0 | 60.0d | 2023-06-12T16:00 | 0.0 | PRORATED | 269 | Bolt and Nut | 4 | 1.4.1.4 | 0.0 | [Priority value=500] | 0.0 | 60.0d | 0.0h | 2023-04-14T08:00 | 257 | 4.1.3 | 0.0h |  |  |
| 0.0 | 0.0d | 0.0h | AS_SOON_AS_POSSIBLE | 0.0 | 60.0d | 2023-06-12T16:00 | 0.0 | PRORATED | 270 | Delivery - Bolt and Nut | 5 | 1.4.1.4.1 | 0.0 | [Priority value=500] | 0.0 | 60.0d | 0.0h | 2023-04-14T08:00 | 12 | 4.1.3 | 0.0h |  | 57 0.0d FS 7 |
| 0.0 | 0.0d | 0.0h | AS_SOON_AS_POSSIBLE | 0.0 | 90.0d | 2023-07-12T16:00 | 0.0 | PRORATED | 271 | Valve | 4 | 1.4.1.5 | 0.0 | [Priority value=500] | 0.0 | 90.0d | 0.0h | 2023-04-14T08:00 | 262 | 4.1.4 | 0.0h |  |  |
| 0.0 | 0.0d | 0.0h | AS_SOON_AS_POSSIBLE | 0.0 | 90.0d | 2023-07-12T16:00 | 0.0 | PRORATED | 272 | Delivery - Valve | 5 | 1.4.1.5.1 | 0.0 | [Priority value=500] | 0.0 | 90.0d | 0.0h | 2023-04-14T08:00 | 13 | 4.1.4 | 0.0h |  | 57 0.0d FS 7 |
| 0.0 | 0.0d | 0.0h | AS_SOON_AS_POSSIBLE | 0.0 | 60.0d | 2023-06-12T16:00 | 0.0 | PRORATED | 273 | Strainer | 4 | 1.4.1.6 | 0.0 | [Priority value=500] | 0.0 | 60.0d | 0.0h | 2023-04-14T08:00 | 267 | 4.1.5 | 0.0h |  |  |
| 0.0 | 0.0d | 0.0h | AS_SOON_AS_POSSIBLE | 0.0 | 60.0d | 2023-06-12T16:00 | 0.0 | PRORATED | 274 | Delivery - Strainer | 5 | 1.4.1.6.1 | 0.0 | [Priority value=500] | 0.0 | 60.0d | 0.0h | 2023-04-14T08:00 | 14 | 4.1.5 | 0.0h |  | 57 0.0d FS 7 |
| 0.0 | 0.0d | 0.0h | AS_SOON_AS_POSSIBLE | 0.0 | 60.0d | 2023-06-12T16:00 | 0.0 | PRORATED | 275 | Piping Special Item - Corrosion Injection | 4 | 1.4.1.7 | 0.0 | [Priority value=500] | 0.0 | 60.0d | 0.0h | 2023-04-14T08:00 | 272 | 4.1.7 | 0.0h |  |  |
| 0.0 | 0.0d | 0.0h | AS_SOON_AS_POSSIBLE | 0.0 | 60.0d | 2023-06-12T16:00 | 0.0 | PRORATED | 276 | Delivery - Corrosion Injection | 5 | 1.4.1.7.1 | 0.0 | [Priority value=500] | 0.0 | 60.0d | 0.0h | 2023-04-14T08:00 | 277 | 4.1.7 | 0.0h |  | 57 0.0d FS 7 |
| 0.0 | 0.0d | 0.0h | AS_SOON_AS_POSSIBLE | 0.0 | 60.0d | 2023-06-12T16:00 | 0.0 | PRORATED | 277 | Ubolt for Pipe Support | 4 | 1.4.1.8 | 0.0 | [Priority value=500] | 0.0 | 60.0d | 0.0h | 2023-04-14T08:00 | 278 | 4.1.8 | 0.0h |  |  |
| 0.0 | 0.0d | 0.0h | AS_SOON_AS_POSSIBLE | 0.0 | 60.0d | 2023-06-12T16:00 | 0.0 | PRORATED | 278 | Delivery - U Bolt | 5 | 1.4.1.8.1 | 0.0 | [Priority value=500] | 0.0 | 60.0d | 0.0h | 2023-04-14T08:00 | 15 | 4.1.8 | 0.0h |  | 57 0.0d FS 7 |
| 0.0 | 0.0d | 0.0h | AS_SOON_AS_POSSIBLE | 0.0 | 60.0d | 2023-06-12T16:00 | 0.0 | PRORATED | 279 | Pipe Insulation | 4 | 1.4.1.9 | 0.0 | [Priority value=500] | 0.0 | 60.0d | 0.0h | 2023-04-14T08:00 | 1649 | 4.1.9 | 0.0h |  |  |

| actualCost | actualDuration | actualWork | constraintType | cost | duration | finish | fixedCost | fixedCostAccrual | id | name | outlineLevel | outlineNumber | percentageComplete | priority | remainingCost | remainingDuration | remainingWork | start | uniqueID | wbs | work | successors | predecessors |
| --- | --- | --- | --- | --- | --- | --- | --- | --- | --- | --- | --- | --- | --- | --- | --- | --- | --- | --- | --- | --- | --- | --- | --- |
| 0.0 | 0.0d | 0.0h | AS_SOON_AS_POSSIBLE | 0.0 | 60.0d | 2023-06-12T16:00 | 0.0 | PRORATED | 280 | Delivery - Pipe Insulation | 5 | 1.4.1.9.1 | 0.0 | [Priority value=500] | 0.0 | 60.0d | 0.0h | 2023-04-14T08:00 | 1650 | 4.1.9.1 | 0.0h |  | 57 0.0d FS 7 |
| 0.0 | 0.0d | 0.0h | AS_SOON_AS_POSSIBLE | 0.0 | 207.0d | 2023-10-23T16:00 | 0.0 | PRORATED | 281 | Mechanical | 3 | 1.4.2 | 0.0 | [Priority value=500] | 0.0 | 207.0d | 0.0h | 2023-03-31T08:00 | 283 | 4.2 | 0.0h |  |  |
| 0.0 | 0.0d | 0.0h | AS_SOON_AS_POSSIBLE | 0.0 | 90.0d | 2023-07-12T16:00 | 0.0 | PRORATED | 282 | Corrosion Inhibitor (MT-Z-6200) | 4 | 1.4.2.1 | 0.0 | [Priority value=500] | 0.0 | 90.0d | 0.0h | 2023-04-14T08:00 | 284 | 4.2.7 | 0.0h |  |  |
| 0.0 | 0.0d | 0.0h | AS_SOON_AS_POSSIBLE | 0.0 | 90.0d | 2023-07-12T16:00 | 0.0 | PRORATED | 283 | Fabrication,FAT & Delivery - Corrosion Inhibitor (MT-Z-6200) | 5 | 1.4.2.1.1 | 0.0 | [Priority value=500] | 0.0 | 90.0d | 0.0h | 2023-04-14T08:00 | 16 | 4.2.7 | 0.0h |  | 57 0.0d FS 7 |
| 0.0 | 0.0d | 0.0h | AS_SOON_AS_POSSIBLE | 0.0 | 90.0d | 2023-07-12T16:00 | 0.0 | PRORATED | 284 | Water Tank | 4 | 1.4.2.2 | 0.0 | [Priority value=500] | 0.0 | 90.0d | 0.0h | 2023-04-14T08:00 | 289 | 4.2.9 | 0.0h |  |  |
| 0.0 | 0.0d | 0.0h | AS_SOON_AS_POSSIBLE | 0.0 | 90.0d | 2023-07-12T16:00 | 0.0 | PRORATED | 285 | Fabrication,FAT & Delivery - Water Tank | 5 | 1.4.2.2.1 | 0.0 | [Priority value=500] | 0.0 | 90.0d | 0.0h | 2023-04-14T08:00 | 17 | 4.2.9 | 0.0h |  | 57 0.0d FS 7 |
| 0.0 | 0.0d | 0.0h | AS_SOON_AS_POSSIBLE | 0.0 | 147.0d | 2023-10-23T16:00 | 0.0 | PRORATED | 286 | Overhead Crane Manual | 4 | 1.4.2.3 | 0.0 | [Priority value=500] | 0.0 | 147.0d | 0.0h | 2023-03-31T08:00 | 1683 | 4.2.3 | 0.0h |  |  |
| 0.0 | 0.0d | 0.0h | AS_SOON_AS_POSSIBLE | 0.0 | 7.0d | 2023-04-10T16:00 | 0.0 | PRORATED | 287 | RFQ - Overhead Crane Manual | 5 | 1.4.2.3.1 | 0.0 | [Priority value=500] | 0.0 | 7.0d | 0.0h | 2023-03-31T08:00 | 1685 | 4.2.3.1 | 0.0h | 288 0.0d FS 1686 | 175 0.0d SS 5 |
| 0.0 | 0.0d | 0.0h | AS_SOON_AS_POSSIBLE | 0.0 | 30.0d | 2023-05-22T16:00 | 0.0 | PRORATED | 288 | Tender - Overhead Crane Manual | 5 | 1.4.2.3.2 | 0.0 | [Priority value=500] | 0.0 | 30.0d | 0.0h | 2023-04-11T08:00 | 1686 | 4.2.3.2 | 0.0h | 289 0.0d FS 1687 | 287 0.0d FS 1685 |
| 0.0 | 0.0d | 0.0h | AS_SOON_AS_POSSIBLE | 0.0 | 10.0d | 2023-06-05T16:00 | 0.0 | PRORATED | 289 | PO - Overhead Crane Manual | 5 | 1.4.2.3.3 | 0.0 | [Priority value=500] | 0.0 | 10.0d | 0.0h | 2023-05-23T08:00 | 1687 | 4.2.3.3 | 0.0h | 290 0.0d FS 1684 | 288 0.0d FS 1686 |
| 0.0 | 0.0d | 0.0h | AS_SOON_AS_POSSIBLE | 0.0 | 100.0d | 2023-10-23T16:00 | 0.0 | PRORATED | 290 | Fabrication,FAT & Delivery - Overhead Crane Manual | 5 | 1.4.2.3.4 | 0.0 | [Priority value=500] | 0.0 | 100.0d | 0.0h | 2023-06-06T08:00 | 1684 | 4.2.3.4 | 0.0h | 461 0.0d FS 1689 | 289 0.0d FS 1687 |
| 0.0 | 0.0d | 0.0h | AS_SOON_AS_POSSIBLE | 0.0 | 90.0d | 2023-07-12T16:00 | 0.0 | PRORATED | 291 | Electrical | 3 | 1.4.3 | 0.0 | [Priority value=500] | 0.0 | 90.0d | 0.0h | 2023-04-14T08:00 | 294 | 4.3 | 0.0h |  |  |
| 0.0 | 0.0d | 0.0h | AS_SOON_AS_POSSIBLE | 0.0 | 90.0d | 2023-07-12T16:00 | 0.0 | PRORATED | 292 | Power Cable | 4 | 1.4.3.1 | 0.0 | [Priority value=500] | 0.0 | 90.0d | 0.0h | 2023-04-14T08:00 | 300 | 4.3.2 | 0.0h |  |  |
| 0.0 | 0.0d | 0.0h | AS_SOON_AS_POSSIBLE | 0.0 | 90.0d | 2023-07-12T16:00 | 0.0 | PRORATED | 293 | Fabrication,FAT & Delivery - Power Cable | 5 | 1.4.3.1.1 | 0.0 | [Priority value=500] | 0.0 | 90.0d | 0.0h | 2023-04-14T08:00 | 19 | 4.3.2 | 0.0h |  | 82 0.0d FS 6 |
| 0.0 | 0.0d | 0.0h | AS_SOON_AS_POSSIBLE | 0.0 | 90.0d | 2023-07-12T16:00 | 0.0 | PRORATED | 294 | Lighting Fixture | 4 | 1.4.3.2 | 0.0 | [Priority value=500] | 0.0 | 90.0d | 0.0h | 2023-04-14T08:00 | 305 | 4.3.3 | 0.0h |  |  |
| 0.0 | 0.0d | 0.0h | AS_SOON_AS_POSSIBLE | 0.0 | 90.0d | 2023-07-12T16:00 | 0.0 | PRORATED | 295 | Fabrication,FAT & Delivery - Lighting Fixture | 5 | 1.4.3.2.1 | 0.0 | [Priority value=500] | 0.0 | 90.0d | 0.0h | 2023-04-14T08:00 | 20 | 4.3.3 | 0.0h | 515 0.0d FS 1120 | 82 0.0d FS 6 |
| 0.0 | 0.0d | 0.0h | AS_SOON_AS_POSSIBLE | 0.0 | 90.0d | 2023-07-12T16:00 | 0.0 | PRORATED | 296 | Lighting Pole | 4 | 1.4.3.3 | 0.0 | [Priority value=500] | 0.0 | 90.0d | 0.0h | 2023-04-14T08:00 | 310 | 4.3.4 | 0.0h |  |  |
| 0.0 | 0.0d | 0.0h | AS_SOON_AS_POSSIBLE | 0.0 | 90.0d | 2023-07-12T16:00 | 0.0 | PRORATED | 297 | Fabrication,FAT & Delivery - Lighting Pole | 5 | 1.4.3.3.1 | 0.0 | [Priority value=500] | 0.0 | 90.0d | 0.0h | 2023-04-14T08:00 | 21 | 4.3.4 | 0.0h | 521 0.0d FS 1123 | 82 0.0d FS 6 |
| 0.0 | 0.0d | 0.0h | AS_SOON_AS_POSSIBLE | 0.0 | 90.0d | 2023-07-12T16:00 | 0.0 | PRORATED | 298 | Lightning | 4 | 1.4.3.4 | 0.0 | [Priority value=500] | 0.0 | 90.0d | 0.0h | 2023-04-14T08:00 | 315 | 4.3.5 | 0.0h |  |  |
| 0.0 | 0.0d | 0.0h | AS_SOON_AS_POSSIBLE | 0.0 | 90.0d | 2023-07-12T16:00 | 0.0 | PRORATED | 299 | Fabrication,FAT & Delivery - Lightning | 5 | 1.4.3.4.1 | 0.0 | [Priority value=500] | 0.0 | 90.0d | 0.0h | 2023-04-14T08:00 | 22 | 4.3.5 | 0.0h | 537 0.0d FS 1272 | 82 0.0d FS 6 |
| 0.0 | 0.0d | 0.0h | AS_SOON_AS_POSSIBLE | 0.0 | 90.0d | 2023-07-12T16:00 | 0.0 | PRORATED | 300 | Cable Ladder | 4 | 1.4.3.5 | 0.0 | [Priority value=500] | 0.0 | 90.0d | 0.0h | 2023-04-14T08:00 | 320 | 4.3.6 | 0.0h |  |  |
| 0.0 | 0.0d | 0.0h | AS_SOON_AS_POSSIBLE | 0.0 | 90.0d | 2023-07-12T16:00 | 0.0 | PRORATED | 301 | Fabrication,FAT & Delivery - Cable Ladder | 5 | 1.4.3.5.1 | 0.0 | [Priority value=500] | 0.0 | 90.0d | 0.0h | 2023-04-14T08:00 | 23 | 4.3.6 | 0.0h | 513 0.0d FS 493, 536 0.0d FS 711 | 82 0.0d FS 6 |
| 0.0 | 0.0d | 0.0h | AS_SOON_AS_POSSIBLE | 0.0 | 60.0d | 2023-06-12T16:00 | 0.0 | PRORATED | 302 | Bulk Material | 4 | 1.4.3.6 | 0.0 | [Priority value=500] | 0.0 | 60.0d | 0.0h | 2023-04-14T08:00 | 325 | 4.3.7 | 0.0h |  |  |
| 0.0 | 0.0d | 0.0h | AS_SOON_AS_POSSIBLE | 0.0 | 60.0d | 2023-06-12T16:00 | 0.0 | PRORATED | 303 | Fabrication,FAT & Delivery - Bulk Material | 5 | 1.4.3.6.1 | 0.0 | [Priority value=500] | 0.0 | 60.0d | 0.0h | 2023-04-14T08:00 | 24 | 4.3.7 | 0.0h |  | 82 0.0d FS 6 |
| 0.0 | 0.0d | 0.0h | AS_SOON_AS_POSSIBLE | 0.0 | 90.0d | 2023-07-12T16:00 | 0.0 | PRORATED | 304 | Junction Box | 4 | 1.4.3.7 | 0.0 | [Priority value=500] | 0.0 | 90.0d | 0.0h | 2023-04-14T08:00 | 330 | 4.3.8 | 0.0h |  |  |
| 0.0 | 0.0d | 0.0h | AS_SOON_AS_POSSIBLE | 0.0 | 90.0d | 2023-07-12T16:00 | 0.0 | PRORATED | 305 | Fabrication,FAT & Delivery - Junction Box | 5 | 1.4.3.7.1 | 0.0 | [Priority value=500] | 0.0 | 90.0d | 0.0h | 2023-04-14T08:00 | 25 | 4.3.8 | 0.0h | 527 0.0d FS 1359 | 82 0.0d FS 6 |
| 0.0 | 0.0d | 0.0h | AS_SOON_AS_POSSIBLE | 0.0 | 90.0d | 2023-07-12T16:00 | 0.0 | PRORATED | 306 | Grounding System | 4 | 1.4.3.8 | 0.0 | [Priority value=500] | 0.0 | 90.0d | 0.0h | 2023-04-14T08:00 | 1251 | 4.3.8 | 0.0h |  |  |
| 0.0 | 0.0d | 0.0h | AS_SOON_AS_POSSIBLE | 0.0 | 90.0d | 2023-07-12T16:00 | 0.0 | PRORATED | 307 | Fabrication,FAT & Delivery - Grounding System | 5 | 1.4.3.8.1 | 0.0 | [Priority value=500] | 0.0 | 90.0d | 0.0h | 2023-04-14T08:00 | 1256 | 4.3.8 | 0.0h | 531 0.0d FS 1345 | 82 0.0d FS 6 |
| 0.0 | 0.0d | 0.0h | AS_SOON_AS_POSSIBLE | 0.0 | 210.0d | 2023-11-02T16:00 | 0.0 | PRORATED | 308 | Instrument | 3 | 1.4.4 | 0.0 | [Priority value=500] | 0.0 | 210.0d | 0.0h | 2023-04-07T08:00 | 335 | 4.4 | 0.0h |  |  |
| 0.0 | 0.0d | 0.0h | AS_SOON_AS_POSSIBLE | 0.0 | 150.0d | 2023-11-02T16:00 | 0.0 | PRORATED | 309 | PSV | 4 | 1.4.4.1 | 0.0 | [Priority value=500] | 0.0 | 150.0d | 0.0h | 2023-04-07T08:00 | 1677 | 4.4.1 | 0.0h |  |  |
| 0.0 | 0.0d | 0.0h | AS_SOON_AS_POSSIBLE | 0.0 | 150.0d | 2023-11-02T16:00 | 0.0 | PRORATED | 310 | Fabrication,FAT & Delivery - Multi Variable Transmitter | 5 | 1.4.4.1.1 | 0.0 | [Priority value=500] | 0.0 | 150.0d | 0.0h | 2023-04-07T08:00 | 1681 | 4.4.1.1 | 0.0h |  | 139 0.0d SS 4 |
| 0.0 | 0.0d | 0.0h | AS_SOON_AS_POSSIBLE | 0.0 | 150.0d | 2023-11-02T16:00 | 0.0 | PRORATED | 311 | SDV | 4 | 1.4.4.2 | 0.0 | [Priority value=500] | 0.0 | 150.0d | 0.0h | 2023-04-07T08:00 | 1678 | 4.4.2 | 0.0h |  |  |
| 0.0 | 0.0d | 0.0h | AS_SOON_AS_POSSIBLE | 0.0 | 150.0d | 2023-11-02T16:00 | 0.0 | PRORATED | 312 | Fabrication,FAT & Delivery - Multi Variable Transmitter | 5 | 1.4.4.2.1 | 0.0 | [Priority value=500] | 0.0 | 150.0d | 0.0h | 2023-04-07T08:00 | 1682 | 4.4.2.1 | 0.0h |  | 139 0.0d SS 4 |
| 0.0 | 0.0d | 0.0h | AS_SOON_AS_POSSIBLE | 0.0 | 150.0d | 2023-11-02T16:00 | 0.0 | PRORATED | 313 | Control Valve | 4 | 1.4.4.3 | 0.0 | [Priority value=500] | 0.0 | 150.0d | 0.0h | 2023-04-07T08:00 | 1679 | 4.4.3 | 0.0h |  |  |
| 0.0 | 0.0d | 0.0h | AS_SOON_AS_POSSIBLE | 0.0 | 150.0d | 2023-11-02T16:00 | 0.0 | PRORATED | 314 | Fabrication,FAT & Delivery - Multi Variable Transmitter | 5 | 1.4.4.3.1 | 0.0 | [Priority value=500] | 0.0 | 150.0d | 0.0h | 2023-04-07T08:00 | 1680 | 4.4.3.1 | 0.0h |  | 139 0.0d SS 4 |
| 0.0 | 0.0d | 0.0h | AS_SOON_AS_POSSIBLE | 0.0 | 140.0d | 2023-10-05T16:00 | 0.0 | PRORATED | 315 | Multi Variable Transmitter | 4 | 1.4.4.4 | 0.0 | [Priority value=500] | 0.0 | 140.0d | 0.0h | 2023-05-19T08:00 | 336 | 4.4.2 | 0.0h |  |  |
| 0.0 | 0.0d | 0.0h | AS_SOON_AS_POSSIBLE | 0.0 | 140.0d | 2023-10-05T16:00 | 0.0 | PRORATED | 316 | Fabrication,FAT & Delivery - Multi Variable Transmitter | 5 | 1.4.4.4.1 | 0.0 | [Priority value=500] | 0.0 | 140.0d | 0.0h | 2023-05-19T08:00 | 26 | 4.4.2 | 0.0h | 548 0.0d FS 1344 | 139 0.0d FS 4 |
| 0.0 | 0.0d | 0.0h | AS_SOON_AS_POSSIBLE | 0.0 | 90.0d | 2023-08-16T16:00 | 0.0 | PRORATED | 317 | Instrument Mounting Support | 4 | 1.4.4.5 | 0.0 | [Priority value=500] | 0.0 | 90.0d | 0.0h | 2023-05-19T08:00 | 1311 | 4.4.22 | 0.0h |  |  |
| 0.0 | 0.0d | 0.0h | AS_SOON_AS_POSSIBLE | 0.0 | 90.0d | 2023-08-16T16:00 | 0.0 | PRORATED | 318 | Material Onsite (by Contractor) | 5 | 1.4.4.5.1 | 0.0 | [Priority value=500] | 0.0 | 90.0d | 0.0h | 2023-05-19T08:00 | 1312 | 4.4.22 | 0.0h | 549 0.0d FS 1330 | 139 0.0d FS 4 |
| 0.0 | 0.0d | 0.0h | AS_SOON_AS_POSSIBLE | 0.0 | 90.0d | 2023-08-16T16:00 | 0.0 | PRORATED | 319 | Instrument Cabling | 4 | 1.4.4.6 | 0.0 | [Priority value=500] | 0.0 | 90.0d | 0.0h | 2023-05-19T08:00 | 1317 | 4.4.23 | 0.0h |  |  |
| 0.0 | 0.0d | 0.0h | AS_SOON_AS_POSSIBLE | 0.0 | 90.0d | 2023-08-16T16:00 | 0.0 | PRORATED | 320 | Fabrication,FAT & Delivery - Instrument Cabling | 5 | 1.4.4.6.1 | 0.0 | [Priority value=500] | 0.0 | 90.0d | 0.0h | 2023-05-19T08:00 | 1322 | 4.4.23 | 0.0h | 550 0.0d FS 1331 | 139 0.0d FS 4 |
| 0.0 | 0.0d | 0.0h | AS_SOON_AS_POSSIBLE | 0.0 | 90.0d | 2023-08-16T16:00 | 0.0 | PRORATED | 321 | Instrument Cable Tray | 4 | 1.4.4.7 | 0.0 | [Priority value=500] | 0.0 | 90.0d | 0.0h | 2023-05-19T08:00 | 1323 | 4.4.20 | 0.0h |  |  |
| 0.0 | 0.0d | 0.0h | AS_SOON_AS_POSSIBLE | 0.0 | 90.0d | 2023-08-16T16:00 | 0.0 | PRORATED | 322 | Fabrication,FAT & Delivery - Instrument Cable Tray | 5 | 1.4.4.7.1 | 0.0 | [Priority value=500] | 0.0 | 90.0d | 0.0h | 2023-05-19T08:00 | 1328 | 4.4.20 | 0.0h | 551 0.0d FS 1333, 5 0.0d FS 8 | 139 0.0d FS 4 |
| 0.0 | 0.0d | 0.0h | AS_SOON_AS_POSSIBLE | 0.0 | 90.0d | 2023-08-16T16:00 | 0.0 | PRORATED | 323 | Fire & Gas Detector | 4 | 1.4.4.8 | 0.0 | [Priority value=500] | 0.0 | 90.0d | 0.0h | 2023-05-19T08:00 | 341 | 4.4.5 | 0.0h |  |  |
| 0.0 | 0.0d | 0.0h | AS_SOON_AS_POSSIBLE | 0.0 | 90.0d | 2023-08-16T16:00 | 0.0 | PRORATED | 324 | Fabrication,FAT & Delivery - Gas Detector | 5 | 1.4.4.8.1 | 0.0 | [Priority value=500] | 0.0 | 90.0d | 0.0h | 2023-05-19T08:00 | 27 | 4.4.5 | 0.0h | 554 0.0d FS 936 | 139 0.0d FS 4 |
| 0.0 | 0.0d | 0.0h | AS_SOON_AS_POSSIBLE | 0.0 | 60.0d | 2023-07-17T16:00 | 0.0 | PRORATED | 325 | Re-Programming (Delete) existing Panel (F&G, Safety Shutdown System, RTCS) | 4 | 1.4.4.9 | 0.0 | [Priority value=500] | 0.0 | 60.0d | 0.0h | 2023-05-19T08:00 | 366 | 4.4.18 | 0.0h |  |  |
| 0.0 | 0.0d | 0.0h | AS_SOON_AS_POSSIBLE | 0.0 | 60.0d | 2023-07-17T16:00 | 0.0 | PRORATED | 326 | Fabrication,FAT & Delivery - Re-Programming existing Panel (F&G, Safety Shutdown System, RTCS and DCS) | 5 | 1.4.4.9.1 | 0.0 | [Priority value=500] | 0.0 | 60.0d | 0.0h | 2023-05-19T08:00 | 32 | 4.4.18 | 0.0h |  | 139 0.0d FS 4 |
| 0.0 | 0.0d | 0.0h | AS_SOON_AS_POSSIBLE | 0.0 | 60.0d | 2023-07-17T16:00 | 0.0 | PRORATED | 327 | Re-Programming (Install) Panel (F&G, Safety Shutdown System, RTCS) | 4 | 1.4.4.10 | 0.0 | [Priority value=500] | 0.0 | 60.0d | 0.0h | 2023-05-19T08:00 | 370 | 4.4.25 | 0.0h |  |  |
| 0.0 | 0.0d | 0.0h | AS_SOON_AS_POSSIBLE | 0.0 | 60.0d | 2023-07-17T16:00 | 0.0 | PRORATED | 328 | Fabrication,FAT & Delivery - Re-Programming existing Panel (F&G, Safety Shutdown System, RTCS and DCS) | 5 | 1.4.4.10.1 | 0.0 | [Priority value=500] | 0.0 | 60.0d | 0.0h | 2023-05-19T08:00 | 374 | 4.4.25 | 0.0h | 552 0.0d FS 1335 | 139 0.0d FS 4 |
| 0.0 | 0.0d | 0.0h | AS_SOON_AS_POSSIBLE | 0.0 | 90.0d | 2023-08-16T16:00 | 0.0 | PRORATED | 329 | Instrument Bulk Material, Tubing & Accessories | 4 | 1.4.4.11 | 0.0 | [Priority value=500] | 0.0 | 90.0d | 0.0h | 2023-05-19T08:00 | 385 | 4.4.21 | 0.0h |  |  |
| 0.0 | 0.0d | 0.0h | AS_SOON_AS_POSSIBLE | 0.0 | 90.0d | 2023-08-16T16:00 | 0.0 | PRORATED | 330 | Fabrication,FAT & Delivery - Instrument Bulk Material, Tubing & Accessories | 5 | 1.4.4.11.1 | 0.0 | [Priority value=500] | 0.0 | 90.0d | 0.0h | 2023-05-19T08:00 | 35 | 4.4.21 | 0.0h | 560 0.0d FS 1152 | 139 0.0d FS 4 |
| 0.0 | 0.0d | 0.0h | AS_SOON_AS_POSSIBLE | 0.0 | 60.0d | 2023-07-10T16:00 | 0.0 | PRORATED | 331 | Civil | 3 | 1.4.5 | 0.0 | [Priority value=500] | 0.0 | 60.0d | 0.0h | 2023-05-12T08:00 | 401 | 4.5 | 0.0h |  |  |
| 0.0 | 0.0d | 0.0h | AS_SOON_AS_POSSIBLE | 0.0 | 60.0d | 2023-07-10T16:00 | 0.0 | PRORATED | 332 | Steel Structure for Building Shelter | 4 | 1.4.5.1 | 0.0 | [Priority value=500] | 0.0 | 60.0d | 0.0h | 2023-05-12T08:00 | 402 | 4.5.1 | 0.0h |  |  |
| 0.0 | 0.0d | 0.0h | AS_SOON_AS_POSSIBLE | 0.0 | 60.0d | 2023-07-10T16:00 | 0.0 | PRORATED | 333 | On Site Material | 5 | 1.4.5.1.1 | 0.0 | [Priority value=500] | 0.0 | 60.0d | 0.0h | 2023-05-12T08:00 | 39 | 4.5.1 | 0.0h |  | 175 0.0d FS 5 |
| 0.0 | 0.0d | 0.0h | AS_SOON_AS_POSSIBLE | 0.0 | 60.0d | 2023-07-10T16:00 | 0.0 | PRORATED | 334 | Steel Structure for Venting Tower | 4 | 1.4.5.2 | 0.0 | [Priority value=500] | 0.0 | 60.0d | 0.0h | 2023-05-12T08:00 | 1261 | 4.5.7 | 0.0h |  |  |
| 0.0 | 0.0d | 0.0h | AS_SOON_AS_POSSIBLE | 0.0 | 60.0d | 2023-07-10T16:00 | 0.0 | PRORATED | 335 | On Site Material (by Contractor) | 5 | 1.4.5.2.1 | 0.0 | [Priority value=500] | 0.0 | 60.0d | 0.0h | 2023-05-12T08:00 | 1262 | 4.5.7 | 0.0h | 453 0.0d FS 1364 | 175 0.0d FS 5 |
| 0.0 | 0.0d | 0.0h | AS_SOON_AS_POSSIBLE | 0.0 | 60.0d | 2023-07-10T16:00 | 0.0 | PRORATED | 336 | Steel Structure for Fuel Gas Filter | 4 | 1.4.5.3 | 0.0 | [Priority value=500] | 0.0 | 60.0d | 0.0h | 2023-05-12T08:00 | 1263 | 4.5.7 | 0.0h |  |  |
| 0.0 | 0.0d | 0.0h | AS_SOON_AS_POSSIBLE | 0.0 | 60.0d | 2023-07-10T16:00 | 0.0 | PRORATED | 337 | On Site Material (by Contractor) | 5 | 1.4.5.3.1 | 0.0 | [Priority value=500] | 0.0 | 60.0d | 0.0h | 2023-05-12T08:00 | 1264 | 4.5.7 | 0.0h | 457 0.0d FS 1378 | 175 0.0d FS 5 |
| 0.0 | 0.0d | 0.0h | AS_SOON_AS_POSSIBLE | 0.0 | 60.0d | 2023-07-10T16:00 | 0.0 | PRORATED | 338 | Pipe Rack (Additional Platform) | 4 | 1.4.5.4 | 0.0 | [Priority value=500] | 0.0 | 60.0d | 0.0h | 2023-05-12T08:00 | 404 | 4.5.8 | 0.0h |  |  |
| 0.0 | 0.0d | 0.0h | AS_SOON_AS_POSSIBLE | 0.0 | 60.0d | 2023-07-10T16:00 | 0.0 | PRORATED | 339 | On Site Material (by Contractor) | 5 | 1.4.5.4.1 | 0.0 | [Priority value=500] | 0.0 | 60.0d | 0.0h | 2023-05-12T08:00 | 41 | 4.5.8 | 0.0h | 462 0.0d FS 1278 | 175 0.0d FS 5 |
| 0.0 | 0.0d | 0.0h | AS_SOON_AS_POSSIBLE | 0.0 | 30.0d | 2023-06-10T16:00 | 0.0 | PRORATED | 340 | Jetty Repair Satelite 6 | 4 | 1.4.5.5 | 0.0 | [Priority value=500] | 0.0 | 30.0d | 0.0h | 2023-05-12T08:00 | 407 | 4.5.12 | 0.0h |  |  |
| 0.0 | 0.0d | 0.0h | AS_SOON_AS_POSSIBLE | 0.0 | 30.0d | 2023-06-10T16:00 | 0.0 | PRORATED | 341 | On Site Material (by Contractor) | 5 | 1.4.5.5.1 | 0.0 | [Priority value=500] | 0.0 | 30.0d | 0.0h | 2023-05-12T08:00 | 44 | 4.5.12 | 0.0h | 437 0.0d FS 593, 364 0.0d FS 1280 | 175 0.0d FS 5 |
| 0.0 | 0.0d | 0.0h | AS_SOON_AS_POSSIBLE | 0.0 | 60.0d | 2023-07-10T16:00 | 0.0 | PRORATED | 342 | Ladder | 4 | 1.4.5.6 | 0.0 | [Priority value=500] | 0.0 | 60.0d | 0.0h | 2023-05-12T08:00 | 1267 | 4.5.12 | 0.0h |  |  |
| 0.0 | 0.0d | 0.0h | AS_SOON_AS_POSSIBLE | 0.0 | 60.0d | 2023-07-10T16:00 | 0.0 | PRORATED | 343 | On Site Material (by Contractor) | 5 | 1.4.5.6.1 | 0.0 | [Priority value=500] | 0.0 | 60.0d | 0.0h | 2023-05-12T08:00 | 1268 | 4.5.12 | 0.0h | 463 0.0d FS 1279 | 175 0.0d FS 5 |
| 0.0 | 0.0d | 0.0h | AS_SOON_AS_POSSIBLE | 0.0 | 60.0d | 2023-07-10T16:00 | 0.0 | PRORATED | 344 | Miscelanous Foundation for Lighting Pole | 4 | 1.4.5.7 | 0.0 | [Priority value=500] | 0.0 | 60.0d | 0.0h | 2023-05-12T08:00 | 408 | 4.5.13 | 0.0h |  |  |
| 0.0 | 0.0d | 0.0h | AS_SOON_AS_POSSIBLE | 0.0 | 60.0d | 2023-07-10T16:00 | 0.0 | PRORATED | 345 | On Site Material (by Contractor) | 5 | 1.4.5.7.1 | 0.0 | [Priority value=500] | 0.0 | 60.0d | 0.0h | 2023-05-12T08:00 | 45 | 4.5.13 | 0.0h | 465 0.0d FS 1386 | 175 0.0d FS 5 |
| 0.0 | 0.0d | 0.0h | AS_SOON_AS_POSSIBLE | 0.0 | 60.0d | 2023-07-10T16:00 | 0.0 | PRORATED | 346 | Miscelanous Foundation for Lightning Pole | 4 | 1.4.5.8 | 0.0 | [Priority value=500] | 0.0 | 60.0d | 0.0h | 2023-05-12T08:00 | 409 | 4.5.9 | 0.0h |  |  |
| 0.0 | 0.0d | 0.0h | AS_SOON_AS_POSSIBLE | 0.0 | 60.0d | 2023-07-10T16:00 | 0.0 | PRORATED | 347 | On Site Material (by Contractor) | 5 | 1.4.5.8.1 | 0.0 | [Priority value=500] | 0.0 | 60.0d | 0.0h | 2023-05-12T08:00 | 46 | 4.5.9 | 0.0h | 468 0.0d FS 1388 | 175 0.0d FS 5 |
| 0.0 | 0.0d | 0.0h | AS_SOON_AS_POSSIBLE | 0.0 | 60.0d | 2023-07-10T16:00 | 0.0 | PRORATED | 348 | Foundation for Compressor | 4 | 1.4.5.9 | 0.0 | [Priority value=500] | 0.0 | 60.0d | 0.0h | 2023-05-12T08:00 | 411 | 4.5.14 | 0.0h |  |  |
| 0.0 | 0.0d | 0.0h | AS_SOON_AS_POSSIBLE | 0.0 | 60.0d | 2023-07-10T16:00 | 0.0 | PRORATED | 349 | On Site Material (by Contractor) | 5 | 1.4.5.9.1 | 0.0 | [Priority value=500] | 0.0 | 60.0d | 0.0h | 2023-05-12T08:00 | 48 | 4.5.14 | 0.0h |  | 175 0.0d FS 5 |

| actualCost | actualDuration | actualWork | constraintType | cost | duration | finish | fixedCost | fixedCostAccrual | id | isCriticalPath | name | outlineLevel | outlineNumber | percentageComplete | priority | remainingCost | remainingDuration | remainingWork | start | uniqueID | wbs | work | successors | predecessors |
| --- | --- | --- | --- | --- | --- | --- | --- | --- | --- | --- | --- | --- | --- | --- | --- | --- | --- | --- | --- | --- | --- | --- | --- | --- |
| 0.0 | 0.0d | 0.0h | AS_SOON_AS_POSSIBLE | 0.0 | 60.0d | 2023-07-10T16:00 | 0.0 | PRORATED | 350 |  | Foundation for Building Shelter | 4 | 1.4.5.10 | 0.0 | [Priority value=500] | 0.0 | 60.0d | 0.0h | 2023-05-12T08:00 | 412 | 4.5.15 | 0.0h |  |  |
| 0.0 | 0.0d | 0.0h | AS_SOON_AS_POSSIBLE | 0.0 | 60.0d | 2023-07-10T16:00 | 0.0 | PRORATED | 351 |  | On Site Material (by Contractor) | 5 | 1.4.5.10.1 | 0.0 | [Priority value=500] | 0.0 | 60.0d | 0.0h | 2023-05-12T08:00 | 49 | 4.5.15 | 0.0h | 480 0.0d FS 1287, 446 0.0d FS 1430 | 175 0.0d FS 5 |
| 0.0 | 0.0d | 0.0h | AS_SOON_AS_POSSIBLE | 0.0 | 60.0d | 2023-07-10T16:00 | 0.0 | PRORATED | 352 |  | Foundation & Slab for Fuel Gas | 4 | 1.4.5.11 | 0.0 | [Priority value=500] | 0.0 | 60.0d | 0.0h | 2023-05-12T08:00 | 413 | 4.5.16 | 0.0h |  |  |
| 0.0 | 0.0d | 0.0h | AS_SOON_AS_POSSIBLE | 0.0 | 60.0d | 2023-07-10T16:00 | 0.0 | PRORATED | 353 |  | On Site Material (by Contractor) | 5 | 1.4.5.11.1 | 0.0 | [Priority value=500] | 0.0 | 60.0d | 0.0h | 2023-05-12T08:00 | 50 | 4.5.16 | 0.0h |  | 175 0.0d FS 5 |
| 0.0 | 0.0d | 0.0h | AS_SOON_AS_POSSIBLE | 0.0 | 60.0d | 2023-07-10T16:00 | 0.0 | PRORATED | 354 |  | Foundation for Venting Tower | 4 | 1.4.5.12 | 0.0 | [Priority value=500] | 0.0 | 60.0d | 0.0h | 2023-05-12T08:00 | 414 | 4.5.17 | 0.0h |  |  |
| 0.0 | 0.0d | 0.0h | AS_SOON_AS_POSSIBLE | 0.0 | 60.0d | 2023-07-10T16:00 | 0.0 | PRORATED | 355 |  | On Site Material (by Contractor) | 5 | 1.4.5.12.1 | 0.0 | [Priority value=500] | 0.0 | 60.0d | 0.0h | 2023-05-12T08:00 | 51 | 4.5.17 | 0.0h | 471 0.0d FS 1396 | 175 0.0d FS 5 |
| 0.0 | 0.0d | 0.0h | AS_SOON_AS_POSSIBLE | 0.0 | 60.0d | 2023-07-10T16:00 | 0.0 | PRORATED | 356 |  | Foundation & Slab for Corrotion Inhibitor | 4 | 1.4.5.13 | 0.0 | [Priority value=500] | 0.0 | 60.0d | 0.0h | 2023-05-12T08:00 | 416 | 4.5.19 | 0.0h |  |  |
| 0.0 | 0.0d | 0.0h | AS_SOON_AS_POSSIBLE | 0.0 | 60.0d | 2023-07-10T16:00 | 0.0 | PRORATED | 357 |  | On Site Material (by Contractor) | 5 | 1.4.5.13.1 | 0.0 | [Priority value=500] | 0.0 | 60.0d | 0.0h | 2023-05-12T08:00 | 53 | 4.5.19 | 0.0h |  | 175 0.0d FS 5 |
| 0.0 | 0.0d | 0.0h | AS_SOON_AS_POSSIBLE | 0.0 | 60.0d | 2023-07-10T16:00 | 0.0 | PRORATED | 358 |  | Foundation for Modification Pipe Rack | 4 | 1.4.5.14 | 0.0 | [Priority value=500] | 0.0 | 60.0d | 0.0h | 2023-05-12T08:00 | 417 | 4.5.20 | 0.0h |  |  |
| 0.0 | 0.0d | 0.0h | AS_SOON_AS_POSSIBLE | 0.0 | 60.0d | 2023-07-10T16:00 | 0.0 | PRORATED | 359 |  | On Site Material (by Contractor) | 5 | 1.4.5.14.1 | 0.0 | [Priority value=500] | 0.0 | 60.0d | 0.0h | 2023-05-12T08:00 | 54 | 4.5.20 | 0.0h | 477 0.0d FS 1286 | 175 0.0d FS 5 |
| 0.0 | 0.0d | 0.0h | AS_SOON_AS_POSSIBLE | 0.0 | 60.0d | 2023-07-10T16:00 | 0.0 | PRORATED | 360 |  | Structure Material for Pipe Support | 4 | 1.4.5.15 | 0.0 | [Priority value=500] | 0.0 | 60.0d | 0.0h | 2023-05-12T08:00 | 419 | 4.5.23 | 0.0h |  |  |
| 0.0 | 0.0d | 0.0h | AS_SOON_AS_POSSIBLE | 0.0 | 60.0d | 2023-07-10T16:00 | 0.0 | PRORATED | 361 |  | On Site Material (by Contractor) | 5 | 1.4.5.15.1 | 0.0 | [Priority value=500] | 0.0 | 60.0d | 0.0h | 2023-05-12T08:00 | 56 | 4.5.23 | 0.0h | 436 0.0d FS 589, 442 0.0d FS 1066, 483 0.0d FS 1288 | 175 0.0d FS 5 |
| 0.0 | 0.0d | 0.0h | AS_SOON_AS_POSSIBLE | 0.0 | 444.0d | 2023-12-08T16:00 | 0.0 | PRORATED | 362 | True | Construction | 2 | 1.5 | 0.0 | [Priority value=500] | 0.0 | 444.0d | 0.0h | 2023-02-01T08:00 | 421 | 5 | 0.0h |  |  |
| 0.0 | 0.0d | 0.0h | MUST_START_ON | 0.0 | 0.0d | 2023-02-01T08:00 | 0.0 | PRORATED | 363 | True | Kick Of Meeting for Dismentling | 3 | 1.5.1 | 0.0 | [Priority value=500] | 0.0 | 0.0d | 0.0h | 2023-02-01T08:00 | 1661 | 5.1 | 0.0h | 367 90.0d FS 1664 |  |
| 0.0 | 0.0d | 0.0h | AS_SOON_AS_POSSIBLE | 0.0 | 30.0d | 2023-07-01T16:00 | 0.0 | PRORATED | 364 |  | Jetty Repair Satelite | 3 | 1.5.2 | 0.0 | [Priority value=500] | 0.0 | 30.0d | 0.0h | 2023-06-10T16:00 | 1280 | 5.2 | 0.0h | 444 0.0d FS 1189 | 175 0.0d FS 5, 341 0.0d FS 44, 12 0.0d FS 746 |
| 0.0 | 0.0d | 0.0h | AS_SOON_AS_POSSIBLE | 0.0 | 31.0d | 2023-04-26T16:00 | 0.0 | PRORATED | 365 | True | Construction Prosedure & Drawings | 3 | 1.5.3 | 0.0 | [Priority value=500] | 0.0 | 31.0d | 0.0h | 2023-04-05T08:00 | 1662 | 5.3 | 0.0h | 385 0.0d FS 1639 |  |
| 0.0 | 0.0d | 0.0h | AS_SOON_AS_POSSIBLE | 0.0 | 14.0d | 2023-04-14T16:00 | 0.0 | PRORATED | 366 | True | All Drawing | 4 | 1.5.3.1 | 0.0 | [Priority value=500] | 0.0 | 14.0d | 0.0h | 2023-04-05T08:00 | 1663 | 5.3.1 | 0.0h |  |  |
| 0.0 | 0.0d | 0.0h | AS_SOON_AS_POSSIBLE | 0.0 | 14.0d | 2023-04-14T16:00 | 0.0 | PRORATED | 367 | True | Shop Drawing Structure | 5 | 1.5.3.1.1 | 0.0 | [Priority value=500] | 0.0 | 14.0d | 0.0h | 2023-04-05T08:00 | 1664 | 5.3.1.1 | 0.0h | 369 0.0d SS 1666 | 363 90.0d FS 1661 |
| 0.0 | 0.0d | 0.0h | AS_SOON_AS_POSSIBLE | 0.0 | 29.0d | 2023-04-25T12:00 | 0.0 | PRORATED | 368 | True | Mechanical | 4 | 1.5.3.2 | 0.0 | [Priority value=500] | 0.0 | 29.0d | 0.0h | 2023-04-05T08:00 | 1665 | 5.3.2 | 0.0h |  |  |
| 0.0 | 0.0d | 0.0h | AS_SOON_AS_POSSIBLE | 0.0 | 21.0d | 2023-04-19T16:00 | 0.0 | PRORATED | 369 | True | Lifting Prosedure | 5 | 1.5.3.2.1 | 0.0 | [Priority value=500] | 0.0 | 21.0d | 0.0h | 2023-04-05T08:00 | 1666 | 5.3.2.1 | 0.0h | 370 2.0d SS 1667, 375 2.0d SS 1672 | 367 0.0d SS 1664 |
| 0.0 | 0.0d | 0.0h | AS_SOON_AS_POSSIBLE | 0.0 | 21.0d | 2023-04-21T08:00 | 0.0 | PRORATED | 370 |  | Demolish Prosedure | 5 | 1.5.3.2.2 | 0.0 | [Priority value=500] | 0.0 | 21.0d | 0.0h | 2023-04-06T12:00 | 1667 | 5.3.2.2 | 0.0h | 371 2.0d SS 1668 | 369 2.0d SS 1666 |
| 0.0 | 0.0d | 0.0h | AS_SOON_AS_POSSIBLE | 0.0 | 21.0d | 2023-04-22T12:00 | 0.0 | PRORATED | 371 |  | Mobilisasi Prosedure (Main Equipment) | 5 | 1.5.3.2.3 | 0.0 | [Priority value=500] | 0.0 | 21.0d | 0.0h | 2023-04-07T16:00 | 1668 | 5.3.2.3 | 0.0h | 372 2.0d SS 1669 | 370 2.0d SS 1667 |
| 0.0 | 0.0d | 0.0h | AS_SOON_AS_POSSIBLE | 0.0 | 21.0d | 2023-04-24T08:00 | 0.0 | PRORATED | 372 |  | Instalasi Prosedure | 5 | 1.5.3.2.4 | 0.0 | [Priority value=500] | 0.0 | 21.0d | 0.0h | 2023-04-09T10:00 | 1669 | 5.3.2.4 | 0.0h | 373 2.0d SS 1670 | 371 2.0d SS 1668 |
| 0.0 | 0.0d | 0.0h | AS_SOON_AS_POSSIBLE | 0.0 | 21.0d | 2023-04-25T12:00 | 0.0 | PRORATED | 373 |  | TKI Commissioning | 5 | 1.5.3.2.5 | 0.0 | [Priority value=500] | 0.0 | 21.0d | 0.0h | 2023-04-10T16:00 | 1670 | 5.3.2.5 | 0.0h |  | 372 2.0d SS 1669 |
| 0.0 | 0.0d | 0.0h | AS_SOON_AS_POSSIBLE | 0.0 | 29.0d | 2023-04-26T16:00 | 0.0 | PRORATED | 374 | True | Electrical & Instrument | 4 | 1.5.3.3 | 0.0 | [Priority value=500] | 0.0 | 29.0d | 0.0h | 2023-04-06T12:00 | 1671 | 5.3.3 | 0.0h |  |  |
| 0.0 | 0.0d | 0.0h | AS_SOON_AS_POSSIBLE | 0.0 | 21.0d | 2023-04-21T08:00 | 0.0 | PRORATED | 375 | True | Lifting Prosedure | 5 | 1.5.3.3.1 | 0.0 | [Priority value=500] | 0.0 | 21.0d | 0.0h | 2023-04-06T12:00 | 1672 | 5.3.3.1 | 0.0h | 376 2.0d SS 1673 | 369 2.0d SS 1666 |
| 0.0 | 0.0d | 0.0h | AS_SOON_AS_POSSIBLE | 0.0 | 21.0d | 2023-04-22T12:00 | 0.0 | PRORATED | 376 | True | Demolish Prosedure | 5 | 1.5.3.3.2 | 0.0 | [Priority value=500] | 0.0 | 21.0d | 0.0h | 2023-04-07T16:00 | 1673 | 5.3.3.2 | 0.0h | 377 2.0d SS 1674 | 375 2.0d SS 1672 |
| 0.0 | 0.0d | 0.0h | AS_SOON_AS_POSSIBLE | 0.0 | 21.0d | 2023-04-24T08:00 | 0.0 | PRORATED | 377 | True | Mobilisasi Prosedure (Main Equipment) | 5 | 1.5.3.3.3 | 0.0 | [Priority value=500] | 0.0 | 21.0d | 0.0h | 2023-04-09T10:00 | 1674 | 5.3.3.3 | 0.0h | 378 2.0d SS 1675 | 376 2.0d SS 1673 |
| 0.0 | 0.0d | 0.0h | AS_SOON_AS_POSSIBLE | 0.0 | 21.0d | 2023-04-25T12:00 | 0.0 | PRORATED | 378 | True | Instalasi Prosedure | 5 | 1.5.3.3.4 | 0.0 | [Priority value=500] | 0.0 | 21.0d | 0.0h | 2023-04-10T16:00 | 1675 | 5.3.3.4 | 0.0h | 379 2.0d SS 1676 | 377 2.0d SS 1674 |
| 0.0 | 0.0d | 0.0h | AS_SOON_AS_POSSIBLE | 0.0 | 21.0d | 2023-04-26T16:00 | 0.0 | PRORATED | 379 | True | TKI Commissioning | 5 | 1.5.3.3.5 | 0.0 | [Priority value=500] | 0.0 | 21.0d | 0.0h | 2023-04-12T08:00 | 1676 | 5.3.3.5 | 0.0h |  | 378 2.0d SS 1675 |
| 0.0 | 0.0d | 0.0h | AS_SOON_AS_POSSIBLE | 0.0 | 92.0d | 2023-09-18T16:00 | 0.0 | PRORATED | 380 |  | Contract Supervisi Demolish dan Install Compressor & Re-Programming Panel | 3 | 1.5.4 | 0.0 | [Priority value=500] | 0.0 | 92.0d | 0.0h | 2023-05-12T08:00 | 1656 | 5.4 | 0.0h |  |  |
| 0.0 | 0.0d | 0.0h | AS_SOON_AS_POSSIBLE | 0.0 | 30.0d | 2023-06-22T16:00 | 0.0 | PRORATED | 381 |  | Persiapan Dokumen Tender | 4 | 1.5.4.1 | 0.0 | [Priority value=500] | 0.0 | 30.0d | 0.0h | 2023-05-12T08:00 | 1657 | 5.4.1 | 0.0h | 382 0.0d FS 1658 | 174 0.0d FS 239 |
| 0.0 | 0.0d | 0.0h | AS_SOON_AS_POSSIBLE | 0.0 | 60.0d | 2023-09-14T16:00 | 0.0 | PRORATED | 382 |  | Tender | 4 | 1.5.4.2 | 0.0 | [Priority value=500] | 0.0 | 60.0d | 0.0h | 2023-06-23T08:00 | 1658 | 5.4.2 | 0.0h | 383 0.0d FS 1659 | 381 0.0d FS 1657 |
| 0.0 | 0.0d | 0.0h | AS_SOON_AS_POSSIBLE | 0.0 | 2.0d | 2023-09-18T16:00 | 0.0 | PRORATED | 383 |  | Contract Award | 4 | 1.5.4.3 | 0.0 | [Priority value=500] | 0.0 | 2.0d | 0.0h | 2023-09-15T08:00 | 1659 | 5.4.3 | 0.0h |  | 382 0.0d FS 1658 |
| 0.0 | 0.0d | 0.0h | AS_SOON_AS_POSSIBLE | 0.0 | 148.0d | 2023-08-08T12:00 | 0.0 | PRORATED | 384 | True | Dismantling | 3 | 1.5.5 | 0.0 | [Priority value=500] | 0.0 | 148.0d | 0.0h | 2023-04-26T16:00 | 422 | 5.3 | 0.0h |  |  |
| 0.0 | 0.0d | 0.0h | AS_SOON_AS_POSSIBLE | 0.0 | 7.0d | 2023-05-01T16:00 | 0.0 | PRORATED | 385 | True | SPK for Demolition/Dismentling | 4 | 1.5.5.1 | 0.0 | [Priority value=500] | 0.0 | 7.0d | 0.0h | 2023-04-26T16:00 | 1639 | 5.3.1 | 0.0h | 387 14.0d FS 1641, 388 14.0d FS 1642, 389 14.0d FS 1643, 386 14.0d FS 1640 | 365 0.0d FS 1662 |
| 0.0 | 0.0d | 0.0h | AS_SOON_AS_POSSIBLE | 0.0 | 30.0d | 2023-06-01T12:00 | 0.0 | PRORATED | 386 | True | Mobilization Crane (150t) | 4 | 1.5.5.2 | 0.0 | [Priority value=500] | 0.0 | 30.0d | 0.0h | 2023-05-11T12:00 | 1640 | 5.3.2 | 0.0h | 390 0.0d FS 1645 | 385 14.0d FS 1639 |
| 0.0 | 0.0d | 0.0h | AS_SOON_AS_POSSIBLE | 0.0 | 30.0d | 2023-06-01T12:00 | 0.0 | PRORATED | 387 | True | Prepare Lifting Device (Spreader Bar) (Engineering, Fabrication & Certification) | 4 | 1.5.5.3 | 0.0 | [Priority value=500] | 0.0 | 30.0d | 0.0h | 2023-05-11T12:00 | 1641 | 5.3.3 | 0.0h | 390 0.0d FS 1645 | 385 14.0d FS 1639 |
| 0.0 | 0.0d | 0.0h | AS_SOON_AS_POSSIBLE | 0.0 | 3.0d | 2023-05-13T12:00 | 0.0 | PRORATED | 388 |  | Mobilization for Jacking Tools | 4 | 1.5.5.4 | 0.0 | [Priority value=500] | 0.0 | 3.0d | 0.0h | 2023-05-11T12:00 | 1642 | 5.3.4 | 0.0h |  | 385 14.0d FS 1639 |
| 0.0 | 0.0d | 0.0h | AS_SOON_AS_POSSIBLE | 0.0 | 7.0d | 2023-05-16T12:00 | 0.0 | PRORATED | 389 |  | Fabrication for Plate Cover | 4 | 1.5.5.5 | 0.0 | [Priority value=500] | 0.0 | 7.0d | 0.0h | 2023-05-11T12:00 | 1643 | 5.3.5 | 0.0h |  | 385 14.0d FS 1639 |
| 0.0 | 0.0d | 0.0h | AS_SOON_AS_POSSIBLE | 0.0 | 3.0d | 2023-06-03T12:00 | 0.0 | PRORATED | 390 | True | Dismantling Intake Manifold & Exhaust Stack | 4 | 1.5.5.6 | 0.0 | [Priority value=500] | 0.0 | 3.0d | 0.0h | 2023-06-01T12:00 | 1645 | 5.3.6 | 0.0h | 391 0.0d FS 1647 | 386 0.0d FS 1640, 387 0.0d FS 1641 |
| 0.0 | 0.0d | 0.0h | AS_SOON_AS_POSSIBLE | 0.0 | 3.0d | 2023-06-05T16:00 | 0.0 | PRORATED | 391 | True | Install Plate | 4 | 1.5.5.7 | 0.0 | [Priority value=500] | 0.0 | 3.0d | 0.0h | 2023-06-03T12:00 | 1647 | 5.3.7 | 0.0h | 394 0.0d FS 542 | 390 0.0d FS 1645 |
| 0.0 | 0.0d | 0.0h | AS_SOON_AS_POSSIBLE | 0.0 | 40.0d | 2023-07-03T16:00 | 0.0 | PRORATED | 392 | True | Mechanical & Piping | 4 | 1.5.5.8 | 0.0 | [Priority value=500] | 0.0 | 40.0d | 0.0h | 2023-06-05T16:00 | 426 | 5.3.2 | 0.0h | 425 0.0d FS 566 |  |
| 0.0 | 0.0d | 0.0h | AS_SOON_AS_POSSIBLE | 0.0 | 19.0d | 2023-06-19T08:00 | 0.0 | PRORATED | 393 | True | Compressor (C-6700C) | 5 | 1.5.5.8.1 | 0.0 | [Priority value=500] | 0.0 | 19.0d | 0.0h | 2023-06-05T16:00 | 427 | 5.3.2.1 | 0.0h |  |  |
| 0.0 | 0.0d | 0.0h | AS_SOON_AS_POSSIBLE | 0.0 | 3.0d | 2023-06-07T16:00 | 0.0 | PRORATED | 394 | True | Muffler | 6 | 1.5.5.8.1.1 | 0.0 | [Priority value=500] | 0.0 | 3.0d | 0.0h | 2023-06-05T16:00 | 542 | 5.3.2.1.1 | 0.0h | 395 0.0d FS 543 | 57 0.0d FS 7, 12 0.0d FS 746, 391 0.0d FS 1647 |
| 0.0 | 0.0d | 0.0h | AS_SOON_AS_POSSIBLE | 0.0 | 3.0d | 2023-06-09T16:00 | 0.0 | PRORATED | 395 | True | Air Intake Filter | 6 | 1.5.5.8.1.2 | 0.0 | [Priority value=500] | 0.0 | 3.0d | 0.0h | 2023-06-07T16:00 | 543 | 5.3.2.1.2 | 0.0h | 396 0.0d FS 509 | 394 0.0d FS 542 |
| 0.0 | 0.0d | 0.0h | AS_SOON_AS_POSSIBLE | 0.0 | 3.0d | 2023-06-12T08:00 | 0.0 | PRORATED | 396 | True | Suction Header | 6 | 1.5.5.8.1.3 | 0.0 | [Priority value=500] | 0.0 | 3.0d | 0.0h | 2023-06-09T16:00 | 509 | 5.3.2.1.3 | 0.0h | 397 0.0d FS 540 | 395 0.0d FS 543 |
| 0.0 | 0.0d | 0.0h | AS_SOON_AS_POSSIBLE | 0.0 | 3.0d | 2023-06-14T08:00 | 0.0 | PRORATED | 397 | True | Discharge header | 6 | 1.5.5.8.1.4 | 0.0 | [Priority value=500] | 0.0 | 3.0d | 0.0h | 2023-06-12T08:00 | 540 | 5.3.2.1.4 | 0.0h | 398 0.0d FS 541 | 396 0.0d FS 509 |
| 0.0 | 0.0d | 0.0h | AS_SOON_AS_POSSIBLE | 0.0 | 7.0d | 2023-06-19T08:00 | 0.0 | PRORATED | 398 | True | Compressor Skid | 6 | 1.5.5.8.1.5 | 0.0 | [Priority value=500] | 0.0 | 7.0d | 0.0h | 2023-06-14T08:00 | 541 | 5.3.2.1.5 | 0.0h | 400 0.0d FS 515 | 397 0.0d FS 540 |
| 0.0 | 0.0d | 0.0h | AS_SOON_AS_POSSIBLE | 0.0 | 12.0d | 2023-06-27T12:00 | 0.0 | PRORATED | 399 | True | Fuel Gas Filter (F-6685C) | 5 | 1.5.5.8.2 | 0.0 | [Priority value=500] | 0.0 | 12.0d | 0.0h | 2023-06-19T08:00 | 428 | 5.3.2.2 | 0.0h |  |  |
| 0.0 | 0.0d | 0.0h | AS_SOON_AS_POSSIBLE | 0.0 | 3.0d | 2023-06-21T08:00 | 0.0 | PRORATED | 400 | True | Inlet from Header to Nozle Fuel Gas filter | 6 | 1.5.5.8.2.1 | 0.0 | [Priority value=500] | 0.0 | 3.0d | 0.0h | 2023-06-19T08:00 | 515 | 5.3.2.2.1 | 0.0h | 401 0.0d FS 544 | 398 0.0d FS 541, 12 0.0d FS 746 |
| 0.0 | 0.0d | 0.0h | AS_SOON_AS_POSSIBLE | 0.0 | 3.0d | 2023-06-23T08:00 | 0.0 | PRORATED | 401 | True | Outlet from Nozle Inlet to Nozle Inlet Compressor Fuel System | 6 | 1.5.5.8.2.2 | 0.0 | [Priority value=500] | 0.0 | 3.0d | 0.0h | 2023-06-21T08:00 | 544 | 5.3.2.2.2 | 0.0h | 402 0.0d FS 545 | 400 0.0d FS 515 |
| 0.0 | 0.0d | 0.0h | AS_SOON_AS_POSSIBLE | 0.0 | 3.0d | 2023-06-25T10:00 | 0.0 | PRORATED | 402 | True | Liquid Line Outlet to Closed Drain System | 6 | 1.5.5.8.2.3 | 0.0 | [Priority value=500] | 0.0 | 3.0d | 0.0h | 2023-06-23T08:00 | 545 | 5.3.2.2.3 | 0.0h | 403 0.0d FS 546 | 401 0.0d FS 544 |
| 0.0 | 0.0d | 0.0h | AS_SOON_AS_POSSIBLE | 0.0 | 3.0d | 2023-06-27T12:00 | 0.0 | PRORATED | 403 | True | Fuel Gas Filter Package System | 6 | 1.5.5.8.2.4 | 0.0 | [Priority value=500] | 0.0 | 3.0d | 0.0h | 2023-06-25T10:00 | 546 | 5.3.2.2.4 | 0.0h | 405 0.0d FS 519 | 402 0.0d FS 545 |
| 0.0 | 0.0d | 0.0h | AS_SOON_AS_POSSIBLE | 0.0 | 3.0d | 2023-06-29T12:00 | 0.0 | PRORATED | 404 | True | Fuel Gas Heat Exchanger (E-6655C) | 5 | 1.5.5.8.3 | 0.0 | [Priority value=500] | 0.0 | 3.0d | 0.0h | 2023-06-27T12:00 | 429 | 5.3.2.3 | 0.0h |  |  |
| 0.0 | 0.0d | 0.0h | AS_SOON_AS_POSSIBLE | 0.0 | 3.0d | 2023-06-29T12:00 | 0.0 | PRORATED | 405 | True | Piping Line | 6 | 1.5.5.8.3.1 | 0.0 | [Priority value=500] | 0.0 | 3.0d | 0.0h | 2023-06-27T12:00 | 519 | 5.3.2.3.1 | 0.0h | 407 0.0d FS 533 | 403 0.0d FS 546, 12 0.0d FS 746 |
| 0.0 | 0.0d | 0.0h | AS_SOON_AS_POSSIBLE | 0.0 | 3.0d | 2023-07-01T12:00 | 0.0 | PRORATED | 406 | True | Lube Oil Tank | 5 | 1.5.5.8.4 | 0.0 | [Priority value=500] | 0.0 | 3.0d | 0.0h | 2023-06-29T12:00 | 433 | 5.3.2.7 | 0.0h |  |  |
| 0.0 | 0.0d | 0.0h | AS_SOON_AS_POSSIBLE | 0.0 | 3.0d | 2023-07-01T12:00 | 0.0 | PRORATED | 407 | True | Piping Line | 6 | 1.5.5.8.4.1 | 0.0 | [Priority value=500] | 0.0 | 3.0d | 0.0h | 2023-06-29T12:00 | 533 | 5.3.2.7.1 | 0.0h | 409 0.0d FS 560 | 12 0.0d FS 746, 405 0.0d FS 519 |
| 0.0 | 0.0d | 0.0h | AS_SOON_AS_POSSIBLE | 0.0 | 3.0d | 2023-07-03T16:00 | 0.0 | PRORATED | 408 | True | Overhead Crane | 5 | 1.5.5.8.5 | 0.0 | [Priority value=500] | 0.0 | 3.0d | 0.0h | 2023-07-01T12:00 | 559 | 5.3.2.5 | 0.0h |  |  |
| 0.0 | 0.0d | 0.0h | AS_SOON_AS_POSSIBLE | 0.0 | 3.0d | 2023-07-03T16:00 | 0.0 | PRORATED | 409 | True | Monorail | 6 | 1.5.5.8.5.1 | 0.0 | [Priority value=500] | 0.0 | 3.0d | 0.0h | 2023-07-01T12:00 | 560 | 5.3.2.5.1 | 0.0h | 411 0.0d FS 833 | 407 0.0d FS 533, 12 0.0d FS 746 |
| 0.0 | 0.0d | 0.0h | AS_SOON_AS_POSSIBLE | 0.0 | 45.0d | 2023-08-04T08:00 | 0.0 | PRORATED | 410 | True | Instrument | 4 | 1.5.5.9 | 0.0 | [Priority value=500] | 0.0 | 45.0d | 0.0h | 2023-07-03T16:00 | 434 | 5.3.4 | 0.0h | 425 0.0d FS 566 |  |
| 0.0 | 0.0d | 0.0h | AS_SOON_AS_POSSIBLE | 0.0 | 7.0d | 2023-07-08T12:00 | 0.0 | PRORATED | 411 | True | Compressor Control Panel | 5 | 1.5.5.9.1 | 0.0 | [Priority value=500] | 0.0 | 7.0d | 0.0h | 2023-07-03T16:00 | 833 | 5.3.4.1 | 0.0h | 412 0.0d FS 435 | 409 0.0d FS 560 |
| 0.0 | 0.0d | 0.0h | AS_SOON_AS_POSSIBLE | 0.0 | 3.0d | 2023-07-10T16:00 | 0.0 | PRORATED | 412 | True | Blowdown Valve & Emergency Shutdow | 5 | 1.5.5.9.2 | 0.0 | [Priority value=500] | 0.0 | 3.0d | 0.0h | 2023-07-08T12:00 | 435 | 5.3.4.1 | 0.0h | 413 0.0d FS 436 | 411 0.0d FS 833 |
| 0.0 | 0.0d | 0.0h | AS_SOON_AS_POSSIBLE | 0.0 | 3.0d | 2023-07-12T16:00 | 0.0 | PRORATED | 413 | True | Flow Element | 5 | 1.5.5.9.3 | 0.0 | [Priority value=500] | 0.0 | 3.0d | 0.0h | 2023-07-10T16:00 | 436 | 5.3.4.2 | 0.0h | 414 0.0d FS 437 | 412 0.0d FS 435 |
| 0.0 | 0.0d | 0.0h | AS_SOON_AS_POSSIBLE | 0.0 | 3.0d | 2023-07-14T16:00 | 0.0 | PRORATED | 414 | True | Pressure Control Valve | 5 | 1.5.5.9.4 | 0.0 | [Priority value=500] | 0.0 | 3.0d | 0.0h | 2023-07-12T16:00 | 437 | 5.3.4.3 | 0.0h | 415 0.0d FS 438 | 413 0.0d FS 436 |
| 0.0 | 0.0d | 0.0h | AS_SOON_AS_POSSIBLE | 0.0 | 3.0d | 2023-07-17T08:00 | 0.0 | PRORATED | 415 | True | Pressure Gauge | 5 | 1.5.5.9.5 | 0.0 | [Priority value=500] | 0.0 | 3.0d | 0.0h | 2023-07-14T16:00 | 438 | 5.3.4.4 | 0.0h | 416 0.0d FS 439 | 414 0.0d FS 437 |
| 0.0 | 0.0d | 0.0h | AS_SOON_AS_POSSIBLE | 0.0 | 3.0d | 2023-07-19T08:00 | 0.0 | PRORATED | 416 | True | Pressure Safety Valve | 5 | 1.5.5.9.6 | 0.0 | [Priority value=500] | 0.0 | 3.0d | 0.0h | 2023-07-17T08:00 | 439 | 5.3.4.5 | 0.0h | 417 0.0d FS 440 | 415 0.0d FS 438 |
| 0.0 | 0.0d | 0.0h | AS_SOON_AS_POSSIBLE | 0.0 | 3.0d | 2023-07-21T08:00 | 0.0 | PRORATED | 417 | True | Pressure Transmitter | 5 | 1.5.5.9.7 | 0.0 | [Priority value=500] | 0.0 | 3.0d | 0.0h | 2023-07-19T08:00 | 440 | 5.3.4.6 | 0.0h | 418 0.0d FS 441 | 416 0.0d FS 439 |
| 0.0 | 0.0d | 0.0h | AS_SOON_AS_POSSIBLE | 0.0 | 3.0d | 2023-07-23T10:00 | 0.0 | PRORATED | 418 | True | Restriction Orifice | 5 | 1.5.5.9.8 | 0.0 | [Priority value=500] | 0.0 | 3.0d | 0.0h | 2023-07-21T08:00 | 441 | 5.3.4.7 | 0.0h | 419 0.0d FS 444 | 417 0.0d FS 440 |
| 0.0 | 0.0d | 0.0h | AS_SOON_AS_POSSIBLE | 0.0 | 3.0d | 2023-07-25T12:00 | 0.0 | PRORATED | 419 | True | Temperature Gauge & Thermowell | 5 | 1.5.5.9.9 | 0.0 | [Priority value=500] | 0.0 | 3.0d | 0.0h | 2023-07-23T10:00 | 444 | 5.3.4.10 | 0.0h | 420 0.0d FS 744 | 418 0.0d FS 441 |

| actualCost | actualDuration | actualWork | constraintType | cost | duration | finish | fixedCost | fixedCostAccrual | id | isCriticalPath | name | outlineLevel | outlineNumber | percentageComplete | priority | remainingCost | remainingDuration | remainingWork | start | uniqueID | wbs | work | successors | predecessors | remarks |
| --- | --- | --- | --- | --- | --- | --- | --- | --- | --- | --- | --- | --- | --- | --- | --- | --- | --- | --- | --- | --- | --- | --- | --- | --- | --- |
| 0.0 | 0.0d | 0.0h | AS_SOON_AS_POSSIBLE | 0.0 | 14.0d | 2023-08-04T08:00 | 0.0 | PRORATED | 420 | True | Re-Programming (Delete) existing Panel (F&G, Safety Shutdown System, RTCS) | 5 | 1.5.5.9.10 | 0.0 | [Priority value=500] | 0.0 | 14.0d | 0.0h | 2023-07-25T12:00 | 744 | 5.3.4.10 | 0.0h | 422 0.0d FS 447 | 419 0.0d FS 444 |  |
| 0.0 | 0.0d | 0.0h | AS_SOON_AS_POSSIBLE | 0.0 | 6.0d | 2023-08-08T12:00 | 0.0 | PRORATED | 421 | True | Civil | 4 | 1.5.5.10 | 0.0 | [Priority value=500] | 0.0 | 6.0d | 0.0h | 2023-08-04T08:00 | 446 | 5.3.3 | 0.0h | 425 0.0d FS 566 |  |  |
| 0.0 | 0.0d | 0.0h | AS_SOON_AS_POSSIBLE | 0.0 | 3.0d | 2023-08-06T10:00 | 0.0 | PRORATED | 422 | True | Steel Structure for Venting Tower | 5 | 1.5.5.10.1 | 0.0 | [Priority value=500] | 0.0 | 3.0d | 0.0h | 2023-08-04T08:00 | 447 | 5.3.3.1 | 0.0h | 423 0.0d FS 448 | 420 0.0d FS 744 |  |
| 0.0 | 0.0d | 0.0h | AS_SOON_AS_POSSIBLE | 0.0 | 3.0d | 2023-08-08T12:00 | 0.0 | PRORATED | 423 | True | Steel Structure for Overhead Crane | 5 | 1.5.5.10.2 | 0.0 | [Priority value=500] | 0.0 | 3.0d | 0.0h | 2023-08-06T10:00 | 448 | 5.3.3.2 | 0.0h |  | 422 0.0d FS 447 |  |
| 0.0 | 0.0d | 0.0h | AS_SOON_AS_POSSIBLE | 0.0 | 12.0d | 2023-08-16T16:00 | 0.0 | PRORATED | 424 | True | Mobilization Dismantling Equipment | 3 | 1.5.6 | 0.0 | [Priority value=500] | 0.0 | 12.0d | 0.0h | 2023-08-08T12:00 | 567 | 5.6 | 0.0h |  |  |  |
| 0.0 | 0.0d | 0.0h | AS_SOON_AS_POSSIBLE | 0.0 | 3.0d | 2023-08-10T12:00 | 0.0 | PRORATED | 425 | True | From Nilam Satelite 6 to Jetty Satelite 6 | 4 | 1.5.6.1 | 0.0 | [Priority value=500] | 0.0 | 3.0d | 0.0h | 2023-08-08T12:00 | 566 | 5.6.1 | 0.0h | 426 0.0d FS 568 | 392 0.0d FS 426, 410 0.0d FS 434, 421 0.0d FS 446 |  |
| 0.0 | 0.0d | 0.0h | AS_SOON_AS_POSSIBLE | 0.0 | 6.0d | 2023-08-14T16:00 | 0.0 | PRORATED | 426 | True | From Jetty Satelite 6 to Galendrong | 4 | 1.5.6.2 | 0.0 | [Priority value=500] | 0.0 | 6.0d | 0.0h | 2023-08-10T12:00 | 568 | 5.6.2 | 0.0h | 427 0.0d FS 570 | 425 0.0d FS 566 |  |
| 0.0 | 0.0d | 0.0h | AS_SOON_AS_POSSIBLE | 0.0 | 3.0d | 2023-08-16T16:00 | 0.0 | PRORATED | 427 | True | From Galendrong to Mutiara 6 Station | 4 | 1.5.6.3 | 0.0 | [Priority value=500] | 0.0 | 3.0d | 0.0h | 2023-08-14T16:00 | 570 | 5.6.3 | 0.0h | 6 0.0d FS 58, 487 0.0d FS 1018, 488 0.0d FS 1019, 489 0.0d FS 1020, 490 0.0d FS 1021, 491 0.0d FS 1022, 492 0.0d FS 1023, 493 0.0d FS 1024, 539 0.0d FS 989, 557 0.0d FS 1136, 455 0.0d FS 1366, 440 0.0d FS 1064, 460 0.0d FS 1277 | 426 0.0d FS 568 |  |
| 0.0 | 0.0d | 0.0h | AS_SOON_AS_POSSIBLE | 0.0 | 321.0d | 2023-12-08T16:00 | 0.0 | PRORATED | 428 |  | Mutiara 6 Area Station | 3 | 1.5.7 | 0.0 | [Priority value=500] | 0.0 | 321.0d | 0.0h | 2023-04-28T08:00 | 462 | 5.4.2.1 | 0.0h |  |  |  |
| 0.0 | 0.0d | 0.0h | AS_SOON_AS_POSSIBLE | 0.0 | 14.0d | 2023-05-17T16:00 | 0.0 | PRORATED | 429 |  | Penerbitan SPK | 4 | 1.5.7.1 | 0.0 | [Priority value=500] | 0.0 | 14.0d | 0.0h | 2023-04-28T08:00 | 1688 | 5.4.2.1.1 | 0.0h | 430 0.0d FS 463 | 173 0.0d FS 238 |  |
| 0.0 | 0.0d | 0.0h | AS_SOON_AS_POSSIBLE | 0.0 | 40.0d | 2023-06-15T16:00 | 0.0 | PRORATED | 430 |  | Site Preparation (Temporary Office, Workshop and Warehouse) | 4 | 1.5.7.2 | 0.0 | [Priority value=500] | 0.0 | 40.0d | 0.0h | 2023-05-18T16:00 | 463 | 5.4.2.1 | 0.0h | 431 0.0d FS 465 | 4 0.0d FS 3, 12 0.0d FS 746, 429 0.0d FS 1688 |  |
| 0.0 | 0.0d | 0.0h | AS_SOON_AS_POSSIBLE | 0.0 | 10.0d | 2023-06-22T16:00 | 0.0 | PRORATED | 431 |  | Equipment for Construction | 4 | 1.5.7.3 | 0.0 | [Priority value=500] | 0.0 | 10.0d | 0.0h | 2023-06-15T16:00 | 465 | 5.4.2.1 | 0.0h | 432 0.0d FS 464 | 430 0.0d FS 463 |  |
| 0.0 | 0.0d | 0.0h | AS_SOON_AS_POSSIBLE | 0.0 | 21.0d | 2023-07-07T12:00 | 0.0 | PRORATED | 432 |  | Personnel | 4 | 1.5.7.4 | 0.0 | [Priority value=500] | 0.0 | 21.0d | 0.0h | 2023-06-22T16:00 | 464 | 5.4.2.1 | 0.0h | 433 0.0d FS 913, 487 0.0d FS 1018, 437 0.0d FS 593, 444 0.0d FS 1189 | 431 0.0d FS 465 |  |
| 0.0 | 0.0d | 0.0h | AS_SOON_AS_POSSIBLE | 0.0 | 14.0d | 2023-07-17T12:00 | 0.0 | PRORATED | 433 |  | Dismentling Existing Pipe | 4 | 1.5.7.5 | 0.0 | [Priority value=500] | 0.0 | 14.0d | 0.0h | 2023-07-07T12:00 | 913 | 5.4.2.1.5 | 0.0h |  | 57 0.0d FS 7, 12 0.0d FS 746, 432 0.0d FS 464 |  |
| 0.0 | 0.0d | 0.0h | AS_SOON_AS_POSSIBLE | 0.0 | 60.0d | 2023-07-24T16:00 | 0.0 | PRORATED | 434 |  | Fabrication | 4 | 1.5.7.6 | 0.0 | [Priority value=500] | 0.0 | 60.0d | 0.0h | 2023-06-12T16:00 | 587 | 5.4.1 | 0.0h |  |  |  |
| 0.0 | 0.0d | 0.0h | AS_SOON_AS_POSSIBLE | 0.0 | 30.0d | 2023-07-03T16:00 | 0.0 | PRORATED | 435 |  | Steel Structure for Building Shelter | 5 | 1.5.7.6.1 | 0.0 | [Priority value=500] | 0.0 | 30.0d | 0.0h | 2023-06-12T16:00 | 588 | 5.4.1 | 0.0h | 496 0.0d FS 912, 498 0.0d FS 1229, 450 0.0d FS 1069 | 264 0.0d FS 9 |  |
| 0.0 | 0.0d | 0.0h | AS_SOON_AS_POSSIBLE | 0.0 | 20.0d | 2023-07-24T16:00 | 0.0 | PRORATED | 436 |  | Steel Structure for Fuel Gas Filter | 5 | 1.5.7.6.2 | 0.0 | [Priority value=500] | 0.0 | 20.0d | 0.0h | 2023-07-10T16:00 | 589 | 5.4.1 | 0.0h | 459 0.0d FS 1380 | 361 0.0d FS 56 |  |
| 0.0 | 0.0d | 0.0h | AS_SOON_AS_POSSIBLE | 0.0 | 20.0d | 2023-07-21T12:00 | 0.0 | PRORATED | 437 |  | Ladder Fabrication | 5 | 1.5.7.6.3 | 0.0 | [Priority value=500] | 0.0 | 20.0d | 0.0h | 2023-07-07T12:00 | 593 | 5.4.1 | 0.0h | 463 0.0d FS 1279 | 341 0.0d FS 44, 12 0.0d FS 746, 432 0.0d FS 464 |  |
| 0.0 | 0.0d | 0.0h | AS_SOON_AS_POSSIBLE | 0.0 | 216.0d | 2023-12-08T16:00 | 0.0 | PRORATED | 438 |  | Civil Construction | 4 | 1.5.7.7 | 0.0 | [Priority value=500] | 0.0 | 216.0d | 0.0h | 2023-07-10T16:00 | 1062 | 5.4.2.2 | 0.0h |  |  |  |
| 0.0 | 0.0d | 0.0h | AS_SOON_AS_POSSIBLE | 0.0 | 51.0d | 2023-09-21T12:00 | 0.0 | PRORATED | 439 | True | Compressor | 5 | 1.5.7.7.1 | 0.0 | [Priority value=500] | 0.0 | 51.0d | 0.0h | 2023-08-16T16:00 | 1063 | 5.4.2.2.1 | 0.0h |  |  |  |
| 0.0 | 0.0d | 0.0h | AS_SOON_AS_POSSIBLE | 0.0 | 21.0d | 2023-08-31T12:00 | 0.0 | PRORATED | 440 | True | Modification Existing Foundation | 6 | 1.5.7.7.1.1 | 0.0 | [Priority value=500] | 0.0 | 21.0d | 0.0h | 2023-08-16T16:00 | 1064 | 5.4.2.2.1 | 0.0h | 441 0.0d FS 1065, 444 0.0d FS 1189 | 175 0.0d FS 5, 427 0.0d FS 570 |  |
| 0.0 | 0.0d | 0.0h | AS_SOON_AS_POSSIBLE | 0.0 | 10.0d | 2023-09-07T12:00 | 0.0 | PRORATED | 441 |  | Install Chemical Anchor Bolt | 6 | 1.5.7.7.1.2 | 0.0 | [Priority value=500] | 0.0 | 10.0d | 0.0h | 2023-08-31T12:00 | 1065 | 5.4.2.2.1 | 0.0h | 442 0.0d FS 1066, 487 0.0d FS 1018 | 440 0.0d FS 1064 |  |
| 0.0 | 0.0d | 0.0h | AS_SOON_AS_POSSIBLE | 0.0 | 20.0d | 2023-09-21T12:00 | 0.0 | PRORATED | 442 |  | Install Pipe Support | 6 | 1.5.7.7.1.3 | 0.0 | [Priority value=500] | 0.0 | 20.0d | 0.0h | 2023-09-07T12:00 | 1066 | 5.4.2.2.1.3 | 0.0h | 496 0.0d FS 912 | 441 0.0d FS 1065, 361 0.0d FS 56 |  |
| 0.0 | 0.0d | 0.0h | AS_SOON_AS_POSSIBLE | 0.0 | 73.0d | 2023-10-21T12:00 | 0.0 | PRORATED | 443 | True | Building Shelter | 5 | 1.5.7.7.2 | 0.0 | [Priority value=500] | 0.0 | 73.0d | 0.0h | 2023-08-31T12:00 | 1067 | 5.4.2.2.2 | 0.0h |  |  |  |
| 0.0 | 0.0d | 0.0h | AS_SOON_AS_POSSIBLE | 0.0 | 7.0d | 2023-09-05T12:00 | 0.0 | PRORATED | 444 | True | Excavation | 6 | 1.5.7.7.2.1 | 0.0 | [Priority value=500] | 0.0 | 7.0d | 0.0h | 2023-08-31T12:00 | 1189 | 5.4.2.2.2.1 | 0.0h | 446 0.0d FS 1430, 453 0.0d FS 1364 | 175 0.0d FS 5, 432 0.0d FS 464, 364 0.0d FS 1280, 440 0.0d FS 1064 |  |
| 0.0 | 0.0d | 0.0h | AS_SOON_AS_POSSIBLE | 0.0 | 45.0d | 2023-10-06T16:00 | 0.0 | PRORATED | 445 |  | Foundation | 6 | 1.5.7.7.2.2 | 0.0 | [Priority value=500] | 0.0 | 45.0d | 0.0h | 2023-09-05T12:00 | 1429 | 5.4.2.2.2.2 | 0.0h | 450 0.0d FS 1069 |  |  |
| 0.0 | 0.0d | 0.0h | AS_SOON_AS_POSSIBLE | 0.0 | 7.0d | 2023-09-10T10:00 | 0.0 | PRORATED | 446 |  | Rebar Fabrication & Install | 7 | 1.5.7.7.2.2.1 | 0.0 | [Priority value=500] | 0.0 | 7.0d | 0.0h | 2023-09-05T12:00 | 1430 | 5.4.2.2.2.2.1 | 0.0h | 447 0.0d SS 1431 | 351 0.0d FS 49, 444 0.0d FS 1189 |  |
| 0.0 | 0.0d | 0.0h | AS_SOON_AS_POSSIBLE | 0.0 | 7.0d | 2023-09-10T10:00 | 0.0 | PRORATED | 447 |  | Foam Work Fabrication & Install | 7 | 1.5.7.7.2.2.2 | 0.0 | [Priority value=500] | 0.0 | 7.0d | 0.0h | 2023-09-05T12:00 | 1431 | 5.4.2.2.2.2.2 | 0.0h | 448 0.0d FS 1432 | 446 0.0d SS 1430 |  |
| 0.0 | 0.0d | 0.0h | AS_SOON_AS_POSSIBLE | 0.0 | 10.0d | 2023-09-17T10:00 | 0.0 | PRORATED | 448 |  | Pouring Concrete | 7 | 1.5.7.7.2.2.3 | 0.0 | [Priority value=500] | 0.0 | 10.0d | 0.0h | 2023-09-10T10:00 | 1432 | 5.4.2.2.2.2.3 | 0.0h | 449 0.0d FS 1433 | 447 0.0d FS 1431 |  |
| 0.0 | 0.0d | 0.0h | AS_SOON_AS_POSSIBLE | 0.0 | 28.0d | 2023-10-06T16:00 | 0.0 | PRORATED | 449 |  | Curing | 7 | 1.5.7.7.2.2.4 | 0.0 | [Priority value=500] | 0.0 | 28.0d | 0.0h | 2023-09-17T10:00 | 1433 | 5.4.2.2.2.2.4 | 0.0h |  | 448 0.0d FS 1432 |  |
| 0.0 | 0.0d | 0.0h | AS_SOON_AS_POSSIBLE | 0.0 | 14.0d | 2023-10-16T16:00 | 0.0 | PRORATED | 450 |  | Structure | 6 | 1.5.7.7.2.3 | 0.0 | [Priority value=500] | 0.0 | 14.0d | 0.0h | 2023-10-06T16:00 | 1069 | 5.4.2.2.2.3 | 0.0h | 451 0.0d FS 1070, 455 0.0d FS 1366, 496 0.0d FS 912 | 435 0.0d FS 588, 445 0.0d FS 1429 |  |
| 0.0 | 0.0d | 0.0h | AS_SOON_AS_POSSIBLE | 0.0 | 7.0d | 2023-10-21T12:00 | 0.0 | PRORATED | 451 |  | Roofing | 6 | 1.5.7.7.2.4 | 0.0 | [Priority value=500] | 0.0 | 7.0d | 0.0h | 2023-10-16T16:00 | 1070 | 5.4.2.2.2.4 | 0.0h |  | 450 0.0d FS 1069 |  |
| 0.0 | 0.0d | 0.0h | AS_SOON_AS_POSSIBLE | 0.0 | 80.0d | 2023-10-31T12:00 | 0.0 | PRORATED | 452 | True | Venting Tower | 5 | 1.5.7.7.3 | 0.0 | [Priority value=500] | 0.0 | 80.0d | 0.0h | 2023-09-05T12:00 | 1275 | 5.4.2.2.3 | 0.0h |  |  |  |
| 0.0 | 0.0d | 0.0h | AS_SOON_AS_POSSIBLE | 0.0 | 7.0d | 2023-09-10T10:00 | 0.0 | PRORATED | 453 | True | Excavation | 6 | 1.5.7.7.3.1 | 0.0 | [Priority value=500] | 0.0 | 7.0d | 0.0h | 2023-09-05T12:00 | 1364 | 5.4.2.2.3.1 | 0.0h | 454 0.0d FS 1365, 457 0.0d FS 1378 | 335 0.0d FS 1262, 444 0.0d FS 1189 |  |
| 0.0 | 0.0d | 0.0h | AS_SOON_AS_POSSIBLE | 0.0 | 30.0d | 2023-10-01T10:00 | 0.0 | PRORATED | 454 |  | Foundation | 6 | 1.5.7.7.3.2 | 0.0 | [Priority value=500] | 0.0 | 30.0d | 0.0h | 2023-09-10T10:00 | 1365 | 5.4.2.2.3.2 | 0.0h |  | 453 0.0d FS 1364 |  |
| 0.0 | 0.0d | 0.0h | AS_SOON_AS_POSSIBLE | 0.0 | 21.0d | 2023-10-31T12:00 | 0.0 | PRORATED | 455 |  | Structure | 6 | 1.5.7.7.3.3 | 0.0 | [Priority value=500] | 0.0 | 21.0d | 0.0h | 2023-10-16T16:00 | 1366 | 5.4.2.2.3.3 | 0.0h | 459 0.0d FS 1380 | 450 0.0d FS 1069, 427 0.0d FS 570 |  |
| 0.0 | 0.0d | 0.0h | AS_SOON_AS_POSSIBLE | 0.0 | 94.0d | 2023-11-15T08:00 | 0.0 | PRORATED | 456 | True | Fuel Gas Filter | 5 | 1.5.7.7.4 | 0.0 | [Priority value=500] | 0.0 | 94.0d | 0.0h | 2023-09-10T10:00 | 1276 | 5.4.2.2.4 | 0.0h |  |  |  |
| 0.0 | 0.0d | 0.0h | AS_SOON_AS_POSSIBLE | 0.0 | 7.0d | 2023-09-15T08:00 | 0.0 | PRORATED | 457 | True | Excavation | 6 | 1.5.7.7.4.1 | 0.0 | [Priority value=500] | 0.0 | 7.0d | 0.0h | 2023-09-10T10:00 | 1378 | 5.4.2.2.4.1 | 0.0h | 458 0.0d FS 1379 | 337 0.0d FS 1264, 453 0.0d FS 1364 |  |
| 0.0 | 0.0d | 0.0h | AS_SOON_AS_POSSIBLE | 0.0 | 30.0d | 2023-10-06T08:00 | 0.0 | PRORATED | 458 | True | Foundation | 6 | 1.5.7.7.4.2 | 0.0 | [Priority value=500] | 0.0 | 30.0d | 0.0h | 2023-09-15T08:00 | 1379 | 5.4.2.2.4.2 | 0.0h | 465 0.0d FS 1386 | 457 0.0d FS 1378 |  |
| 0.0 | 0.0d | 0.0h | AS_SOON_AS_POSSIBLE | 0.0 | 21.0d | 2023-11-15T08:00 | 0.0 | PRORATED | 459 |  | Structure/Platform | 6 | 1.5.7.7.4.3 | 0.0 | [Priority value=500] | 0.0 | 21.0d | 0.0h | 2023-10-31T12:00 | 1380 | 5.4.2.2.4.3 | 0.0h |  | 455 0.0d FS 1366, 436 0.0d FS 589 |  |
| 0.0 | 0.0d | 0.0h | AS_SOON_AS_POSSIBLE | 0.0 | 3.0d | 2023-08-18T16:00 | 0.0 | PRORATED | 460 |  | Steel Structure for Overhead Crane | 5 | 1.5.7.7.5 | 0.0 | [Priority value=500] | 0.0 | 3.0d | 0.0h | 2023-08-16T16:00 | 1277 | 5.4.2.2.5 | 0.0h |  | 427 0.0d FS 570 |  |
| 0.0 | 0.0d | 0.0h | AS_SOON_AS_POSSIBLE | 0.0 | 3.0d | 2023-10-26T16:00 | 0.0 | PRORATED | 461 |  | Instalasi Overheasd Crane | 5 | 1.5.7.7.6 | 0.0 | [Priority value=500] | 0.0 | 3.0d | 0.0h | 2023-10-24T08:00 | 1689 | 5.4.2.2.6 | 0.0h | 572 0.0d FS 1188 | 290 0.0d FS 1684 |  |
| 0.0 | 0.0d | 0.0h | AS_SOON_AS_POSSIBLE | 0.0 | 10.0d | 2023-07-17T16:00 | 0.0 | PRORATED | 462 |  | Pipe Rack (Additional Platform) | 5 | 1.5.7.7.7 | 0.0 | [Priority value=500] | 0.0 | 10.0d | 0.0h | 2023-07-10T16:00 | 1278 | 5.4.2.2.7 | 0.0h | 463 0.0d FS 1279, 478 0.0d FS 1422 | 339 0.0d FS 41 |  |
| 0.0 | 0.0d | 0.0h | AS_SOON_AS_POSSIBLE | 0.0 | 7.0d | 2023-07-26T12:00 | 0.0 | PRORATED | 463 |  | Ladder | 5 | 1.5.7.7.8 | 0.0 | [Priority value=500] | 0.0 | 7.0d | 0.0h | 2023-07-21T12:00 | 1279 | 5.4.2.2.8 | 0.0h |  | 343 0.0d FS 1268, 462 0.0d FS 1278, 437 0.0d FS 593 |  |
| 0.0 | 0.0d | 0.0h | AS_SOON_AS_POSSIBLE | 0.0 | 35.0d | 2023-10-30T16:00 | 0.0 | PRORATED | 464 | True | Lighting Pole | 5 | 1.5.7.7.9 | 0.0 | [Priority value=500] | 0.0 | 35.0d | 0.0h | 2023-10-06T08:00 | 1281 | 5.4.2.2.9 | 0.0h |  |  |  |
| 0.0 | 0.0d | 0.0h | AS_SOON_AS_POSSIBLE | 0.0 | 7.0d | 2023-10-11T08:00 | 0.0 | PRORATED | 465 | True | Excavation | 6 | 1.5.7.7.9.1 | 0.0 | [Priority value=500] | 0.0 | 7.0d | 0.0h | 2023-10-06T08:00 | 1386 | 5.4.2.2.9.1 | 0.0h | 466 0.0d FS 1387, 468 0.0d FS 1388 | 345 0.0d FS 45, 458 0.0d FS 1379 |  |
| 0.0 | 0.0d | 0.0h | AS_SOON_AS_POSSIBLE | 0.0 | 28.0d | 2023-10-30T16:00 | 0.0 | PRORATED | 466 |  | Foundation | 6 | 1.5.7.7.9.2 | 0.0 | [Priority value=500] | 0.0 | 28.0d | 0.0h | 2023-10-11T08:00 | 1387 | 5.4.2.2.9.2 | 0.0h |  | 465 0.0d FS 1386 |  |
| 0.0 | 0.0d | 0.0h | AS_SOON_AS_POSSIBLE | 0.0 | 35.0d | 2023-11-04T12:00 | 0.0 | PRORATED | 467 | True | Lightning Pole | 5 | 1.5.7.7.10 | 0.0 | [Priority value=500] | 0.0 | 35.0d | 0.0h | 2023-10-11T08:00 | 1381 | 5.4.2.2.10 | 0.0h |  |  |  |
| 0.0 | 0.0d | 0.0h | AS_SOON_AS_POSSIBLE | 0.0 | 7.0d | 2023-10-16T08:00 | 0.0 | PRORATED | 468 | True | Excavation | 6 | 1.5.7.7.10.1 | 0.0 | [Priority value=500] | 0.0 | 7.0d | 0.0h | 2023-10-11T08:00 | 1388 | 5.4.2.2.10.1 | 0.0h | 469 0.0d FS 1389, 471 0.0d FS 1396 | 347 0.0d FS 46, 465 0.0d FS 1386 |  |
| 0.0 | 0.0d | 0.0h | AS_SOON_AS_POSSIBLE | 0.0 | 28.0d | 2023-11-04T12:00 | 0.0 | PRORATED | 469 |  | Foundation | 6 | 1.5.7.7.10.2 | 0.0 | [Priority value=500] | 0.0 | 28.0d | 0.0h | 2023-10-16T08:00 | 1389 | 5.4.2.2.10.2 | 0.0h |  | 468 0.0d FS 1388 |  |
| 0.0 | 0.0d | 0.0h | AS_SOON_AS_POSSIBLE | 0.0 | 49.0d | 2023-11-19T10:00 | 0.0 | PRORATED | 470 | True | Venting Tower | 5 | 1.5.7.7.11 | 0.0 | [Priority value=500] | 0.0 | 49.0d | 0.0h | 2023-10-16T08:00 | 1283 | 5.4.2.2.11 | 0.0h |  |  |  |
| 0.0 | 0.0d | 0.0h | AS_SOON_AS_POSSIBLE | 0.0 | 7.0d | 2023-10-20T16:00 | 0.0 | PRORATED | 471 | True | Excavation | 6 | 1.5.7.7.11.1 | 0.0 | [Priority value=500] | 0.0 | 7.0d | 0.0h | 2023-10-16T08:00 | 1396 | 5.4.2.2.11.1 | 0.0h | 472 0.0d FS 1397, 481 0.0d FS 1415 | 355 0.0d FS 51, 468 0.0d FS 1388 |  |
| 0.0 | 0.0d | 0.0h | AS_SOON_AS_POSSIBLE | 0.0 | 28.0d | 2023-11-09T12:00 | 0.0 | PRORATED | 472 |  | Foundation | 6 | 1.5.7.7.11.2 | 0.0 | [Priority value=500] | 0.0 | 28.0d | 0.0h | 2023-10-20T16:00 | 1397 | 5.4.2.2.11.2 | 0.0h | 473 0.0d FS 1398, 475 0.0d FS 1407 | 471 0.0d FS 1396 |  |
| 0.0 | 0.0d | 0.0h | AS_SOON_AS_POSSIBLE | 0.0 | 14.0d | 2023-11-19T10:00 | 0.0 | PRORATED | 473 |  | Structure/Platform | 6 | 1.5.7.7.11.3 | 0.0 | [Priority value=500] | 0.0 | 14.0d | 0.0h | 2023-11-09T12:00 | 1398 | 5.4.2.2.11.3 | 0.0h |  | 472 0.0d FS 1397 |  |
| 0.0 | 0.0d | 0.0h | AS_SOON_AS_POSSIBLE | 0.0 | 42.0d | 2023-12-08T16:00 | 0.0 | PRORATED | 474 |  | Foundation & Slab for Corrotion Inhibitor | 5 | 1.5.7.7.12 | 0.0 | [Priority value=500] | 0.0 | 42.0d | 0.0h | 2023-11-09T12:00 | 1285 | 5.4.2.2.12 | 0.0h |  |  |  |
| 0.0 | 0.0d | 0.0h | AS_SOON_AS_POSSIBLE | 0.0 | 28.0d | 2023-11-29T08:00 | 0.0 | PRORATED | 475 |  | Foundation | 6 | 1.5.7.7.12.1 | 0.0 | [Priority value=500] | 0.0 | 28.0d | 0.0h | 2023-11-09T12:00 | 1407 | 5.4.2.2.12.1 | 0.0h | 476 0.0d FS 1408 | 472 0.0d FS 1397 |  |
| 0.0 | 0.0d | 0.0h | AS_SOON_AS_POSSIBLE | 0.0 | 14.0d | 2023-12-08T16:00 | 0.0 | PRORATED | 476 |  | Structure/Platform | 6 | 1.5.7.7.12.2 | 0.0 | [Priority value=500] | 0.0 | 14.0d | 0.0h | 2023-11-29T08:00 | 1408 | 5.4.2.2.12.2 | 0.0h |  | 475 0.0d FS 1407 |  |
| 0.0 | 0.0d | 0.0h | AS_SOON_AS_POSSIBLE | 0.0 | 14.0d | 2023-07-27T12:00 | 0.0 | PRORATED | 477 |  | Modification Pipe Rack | 5 | 1.5.7.7.13 | 0.0 | [Priority value=500] | 0.0 | 14.0d | 0.0h | 2023-07-17T16:00 | 1286 | 5.4.2.2.13 | 0.0h |  | 359 0.0d FS 54 |  |
| 0.0 | 0.0d | 0.0h | AS_SOON_AS_POSSIBLE | 0.0 | 7.0d | 2023-07-22T12:00 | 0.0 | PRORATED | 478 |  | Modification Existing Foundation | 6 | 1.5.7.7.13.1 | 0.0 | [Priority value=500] | 0.0 | 7.0d | 0.0h | 2023-07-17T16:00 | 1422 | 5.4.2.2.13.1 | 0.0h | 479 0.0d FS 1423 | 462 0.0d FS 1278 |  |
| 0.0 | 0.0d | 0.0h | AS_SOON_AS_POSSIBLE | 0.0 | 7.0d | 2023-07-27T12:00 | 0.0 | PRORATED | 479 |  | Install | 6 | 1.5.7.7.13.2 | 0.0 | [Priority value=500] | 0.0 | 7.0d | 0.0h | 2023-07-22T12:00 | 1423 | 5.4.2.2.13.2 | 0.0h |  | 478 0.0d FS 1422 |  |
| 0.0 | 0.0d | 0.0h | AS_SOON_AS_POSSIBLE | 0.0 | 35.0d | 2023-11-14T12:00 | 0.0 | PRORATED | 480 | True | Foundation for Building Shelter | 5 | 1.5.7.7.14 | 0.0 | [Priority value=500] | 0.0 | 35.0d | 0.0h | 2023-10-20T16:00 | 1287 | 5.4.2.2.14 | 0.0h |  | 351 0.0d FS 49 |  |
| 0.0 | 0.0d | 0.0h | AS_SOON_AS_POSSIBLE | 0.0 | 7.0d | 2023-10-25T16:00 | 0.0 | PRORATED | 481 | True | Excavation | 6 | 1.5.7.7.14.1 | 0.0 | [Priority value=500] | 0.0 | 7.0d | 0.0h | 2023-10-20T16:00 | 1415 | 5.4.2.2.14.1 | 0.0h | 482 0.0d FS 1416, 484 0.0d FS 1417 | 471 0.0d FS 1396 |  |
| 0.0 | 0.0d | 0.0h | AS_SOON_AS_POSSIBLE | 0.0 | 28.0d | 2023-11-14T12:00 | 0.0 | PRORATED | 482 |  | Foundation | 6 | 1.5.7.7.14.2 | 0.0 | [Priority value=500] | 0.0 | 28.0d | 0.0h | 2023-10-25T16:00 | 1416 | 5.4.2.2.14.2 | 0.0h |  | 481 0.0d FS 1415 |  |
| 0.0 | 0.0d | 0.0h | AS_SOON_AS_POSSIBLE | 0.0 | 35.0d | 2023-11-19T10:00 | 0.0 | PRORATED | 483 | True | Pipe Support | 5 | 1.5.7.7.15 | 0.0 | [Priority value=500] | 0.0 | 35.0d | 0.0h | 2023-10-25T16:00 | 1288 | 5.4.2.2.15 | 0.0h |  | 361 0.0d FS 56 |  |
| 0.0 | 0.0d | 0.0h | AS_SOON_AS_POSSIBLE | 0.0 | 7.0d | 2023-10-30T16:00 | 0.0 | PRORATED | 484 | True | Excavation | 6 | 1.5.7.7.15.1 | 0.0 | [Priority value=500] | 0.0 | 7.0d | 0.0h | 2023-10-25T16:00 | 1417 | 5.4.2.2.15.1 | 0.0h | 485 0.0d FS 1418 | 481 0.0d FS 1415 |  |
| 0.0 | 0.0d | 0.0h | AS_SOON_AS_POSSIBLE | 0.0 | 28.0d | 2023-11-19T10:00 | 0.0 | PRORATED | 485 | True | Foundation | 6 | 1.5.7.7.15.2 | 0.0 | [Priority value=500] | 0.0 | 28.0d | 0.0h | 2023-10-30T16:00 | 1418 | 5.4.2.2.15.2 | 0.0h | 572 0.0d FS 1188, 579 0.0d FS 1210, 580 0.0d FS 1205, 7 0.0d FS 59 | 484 0.0d FS 1417 |  |
| 0.0 | 0.0d | 0.0h | AS_SOON_AS_POSSIBLE | 0.0 | 49.0d | 2023-10-11T16:00 | 0.0 | PRORATED | 486 |  | Mechanical | 4 | 1.5.7.8 | 0.0 | [Priority value=500] | 0.0 | 49.0d | 0.0h | 2023-09-07T12:00 | 1017 | 5.4.2.1.8 | 0.0h |  |  |  |
| 0.0 | 0.0d | 0.0h | AS_SOON_AS_POSSIBLE | 0.0 | 7.0d | 2023-09-12T12:00 | 0.0 | PRORATED | 487 |  | Compressor (C-6700C) | 5 | 1.5.7.8.1 | 0.0 | [Priority value=500] | 0.0 | 7.0d | 0.0h | 2023-09-07T12:00 | 1018 | 5.4.2.1.8.1 | 0.0h | 496 0.0d FS 912, 488 0.0d FS 1019, 13 -47.0d FS 1648 | 427 0.0d FS 570, 12 0.0d FS 746, 432 0.0d FS 464, 441 0.0d FS 1065 | After Overhaul |
| 0.0 | 0.0d | 0.0h | AS_SOON_AS_POSSIBLE | 0.0 | 7.0d | 2023-09-17T10:00 | 0.0 | PRORATED | 488 |  | Fuel Gas Filter (F-6685C | 5 | 1.5.7.8.2 | 0.0 | [Priority value=500] | 0.0 | 7.0d | 0.0h | 2023-09-12T12:00 | 1019 | 5.4.2.1.8.2 | 0.0h | 489 0.0d FS 1020 | 427 0.0d FS 570, 487 0.0d FS 1018 |  |
| 0.0 | 0.0d | 0.0h | AS_SOON_AS_POSSIBLE | 0.0 | 7.0d | 2023-09-22T08:00 | 0.0 | PRORATED | 489 |  | Fuel Gas Heat Exchanger (E-6655C | 5 | 1.5.7.8.3 | 0.0 | [Priority value=500] | 0.0 | 7.0d | 0.0h | 2023-09-17T10:00 | 1020 | 5.3.2.3 | 0.0h | 490 0.0d FS 1021 | 427 0.0d FS 570, 488 0.0d FS 1019 |  |

| actualCost | actualDuration | actualWork | constraintType | cost | duration | finish | fixedCost | fixedCostAccrual | id | name | outlineLevel | outlineNumber | percentageComplete | priority | remainingCost | remainingDuration | remainingWork | start | uniqueID | wbs | work | successors | predecessors |
| --- | --- | --- | --- | --- | --- | --- | --- | --- | --- | --- | --- | --- | --- | --- | --- | --- | --- | --- | --- | --- | --- | --- | --- |
| 0.0 | 0.0d | 0.0h | AS_SOON_AS_POSSIBLE | 0.0 | 7.0d | 2023-09-27T08:00 | 0.0 | PRORATED | 490 | Corrosion Inhibitor (MT-Z-6200 | 5 | 1.5.7.8.4 | 0.0 | [Priority value=500] | 0.0 | 7.0d | 0.0h | 2023-09-22T08:00 | 1021 | 5.3.2.4 | 0.0h | 491 0.0d FS 1022 | 427 0.0d FS 570, 489 0.0d FS 1020 |
| 0.0 | 0.0d | 0.0h | AS_SOON_AS_POSSIBLE | 0.0 | 7.0d | 2023-10-02T08:00 | 0.0 | PRORATED | 491 | Water Tank | 5 | 1.5.7.8.5 | 0.0 | [Priority value=500] | 0.0 | 7.0d | 0.0h | 2023-09-27T08:00 | 1022 | 5.3.2.5 | 0.0h | 492 0.0d FS 1023 | 427 0.0d FS 570, 490 0.0d FS 1021 |
| 0.0 | 0.0d | 0.0h | AS_SOON_AS_POSSIBLE | 0.0 | 7.0d | 2023-10-06T16:00 | 0.0 | PRORATED | 492 | Lube Oil Tank | 5 | 1.5.7.8.6 | 0.0 | [Priority value=500] | 0.0 | 7.0d | 0.0h | 2023-10-02T08:00 | 1023 | 5.3.2.6 | 0.0h | 493 0.0d FS 1024 | 427 0.0d FS 570, 491 0.0d FS 1022 |
| 0.0 | 0.0d | 0.0h | AS_SOON_AS_POSSIBLE | 0.0 | 7.0d | 2023-10-11T16:00 | 0.0 | PRORATED | 493 | Overhead Crane | 5 | 1.5.7.8.7 | 0.0 | [Priority value=500] | 0.0 | 7.0d | 0.0h | 2023-10-06T16:00 | 1024 | 5.3.2.7 | 0.0h |  | 427 0.0d FS 570, 492 0.0d FS 1023 |
| 0.0 | 0.0d | 0.0h | AS_SOON_AS_POSSIBLE | 0.0 | 84.0d | 2023-12-04T16:00 | 0.0 | PRORATED | 494 | Piping Erection | 4 | 1.5.7.9 | 0.0 | [Priority value=500] | 0.0 | 84.0d | 0.0h | 2023-10-06T16:00 | 489 | 5.4.2.4 | 0.0h |  |  |
| 0.0 | 0.0d | 0.0h | AS_SOON_AS_POSSIBLE | 0.0 | 10.0d | 2023-10-23T16:00 | 0.0 | PRORATED | 495 | Compressor (C-6700C) | 5 | 1.5.7.9.1 | 0.0 | [Priority value=500] | 0.0 | 10.0d | 0.0h | 2023-10-16T16:00 | 694 | 5.4.2.4.1 | 0.0h | 510 -14.0d SS 704 |  |
| 0.0 | 0.0d | 0.0h | AS_SOON_AS_POSSIBLE | 0.0 | 10.0d | 2023-10-23T16:00 | 0.0 | PRORATED | 496 | Field Weld & Install | 6 | 1.5.7.9.1.1 | 0.0 | [Priority value=500] | 0.0 | 10.0d | 0.0h | 2023-10-16T16:00 | 912 | 5.4.2.4.1.1 | 0.0h | 11 0.0d FS 90, 498 0.0d FS 1229 | 435 0.0d FS 588, 487 0.0d FS 1018, 450 0.0d FS 1069, 442 0.0d FS 1066 |
| 0.0 | 0.0d | 0.0h | AS_SOON_AS_POSSIBLE | 0.0 | 10.0d | 2023-10-30T16:00 | 0.0 | PRORATED | 497 | Fuel Gas Filter (F-6685C) | 5 | 1.5.7.9.2 | 0.0 | [Priority value=500] | 0.0 | 10.0d | 0.0h | 2023-10-23T16:00 | 695 | 5.4.2.4.2 | 0.0h |  |  |
| 0.0 | 0.0d | 0.0h | AS_SOON_AS_POSSIBLE | 0.0 | 10.0d | 2023-10-30T16:00 | 0.0 | PRORATED | 498 | Field Weld & Install | 6 | 1.5.7.9.2.1 | 0.0 | [Priority value=500] | 0.0 | 10.0d | 0.0h | 2023-10-23T16:00 | 1229 | 5.4.2.4.2.1 | 0.0h | 500 0.0d FS 1230 | 435 0.0d FS 588, 496 0.0d FS 912 |
| 0.0 | 0.0d | 0.0h | AS_SOON_AS_POSSIBLE | 0.0 | 10.0d | 2023-11-06T16:00 | 0.0 | PRORATED | 499 | Fuel Gas Heat Exchanger (E-6655C) | 5 | 1.5.7.9.3 | 0.0 | [Priority value=500] | 0.0 | 10.0d | 0.0h | 2023-10-30T16:00 | 696 | 5.3.2.3 | 0.0h |  |  |
| 0.0 | 0.0d | 0.0h | AS_SOON_AS_POSSIBLE | 0.0 | 10.0d | 2023-11-06T16:00 | 0.0 | PRORATED | 500 | Field Weld & Install | 6 | 1.5.7.9.3.1 | 0.0 | [Priority value=500] | 0.0 | 10.0d | 0.0h | 2023-10-30T16:00 | 1230 | 5.3.2.3.1 | 0.0h | 502 0.0d FS 1231 | 498 0.0d FS 1229 |
| 0.0 | 0.0d | 0.0h | AS_SOON_AS_POSSIBLE | 0.0 | 10.0d | 2023-11-13T16:00 | 0.0 | PRORATED | 501 | Corrosion Inhibitor (MT-Z-6200) | 5 | 1.5.7.9.4 | 0.0 | [Priority value=500] | 0.0 | 10.0d | 0.0h | 2023-11-06T16:00 | 697 | 5.3.2.4 | 0.0h |  |  |
| 0.0 | 0.0d | 0.0h | AS_SOON_AS_POSSIBLE | 0.0 | 10.0d | 2023-11-13T16:00 | 0.0 | PRORATED | 502 | Field Weld & Install | 6 | 1.5.7.9.4.1 | 0.0 | [Priority value=500] | 0.0 | 10.0d | 0.0h | 2023-11-06T16:00 | 1231 | 5.3.2.4.1 | 0.0h | 504 0.0d FS 1232 | 500 0.0d FS 1230 |
| 0.0 | 0.0d | 0.0h | AS_SOON_AS_POSSIBLE | 0.0 | 5.0d | 2023-11-17T08:00 | 0.0 | PRORATED | 503 | Water Tank | 5 | 1.5.7.9.5 | 0.0 | [Priority value=500] | 0.0 | 5.0d | 0.0h | 2023-11-13T16:00 | 698 | 5.3.2.5 | 0.0h |  |  |
| 0.0 | 0.0d | 0.0h | AS_SOON_AS_POSSIBLE | 0.0 | 5.0d | 2023-11-17T08:00 | 0.0 | PRORATED | 504 | Field Weld & Install | 6 | 1.5.7.9.5.1 | 0.0 | [Priority value=500] | 0.0 | 5.0d | 0.0h | 2023-11-13T16:00 | 1232 | 5.3.2.5.1 | 0.0h | 506 0.0d FS 1233 | 502 0.0d FS 1231 |
| 0.0 | 0.0d | 0.0h | AS_SOON_AS_POSSIBLE | 0.0 | 10.0d | 2023-11-24T08:00 | 0.0 | PRORATED | 505 | Lube Oil Tank | 5 | 1.5.7.9.6 | 0.0 | [Priority value=500] | 0.0 | 10.0d | 0.0h | 2023-11-17T08:00 | 699 | 5.3.2.6 | 0.0h |  |  |
| 0.0 | 0.0d | 0.0h | AS_SOON_AS_POSSIBLE | 0.0 | 10.0d | 2023-11-24T08:00 | 0.0 | PRORATED | 506 | Field Weld & Install | 6 | 1.5.7.9.6.1 | 0.0 | [Priority value=500] | 0.0 | 10.0d | 0.0h | 2023-11-17T08:00 | 1233 | 5.3.2.6.1 | 0.0h | 508 0.0d FS 1234 | 504 0.0d FS 1232 |
| 0.0 | 0.0d | 0.0h | AS_SOON_AS_POSSIBLE | 0.0 | 10.0d | 2023-12-01T08:00 | 0.0 | PRORATED | 507 | Overhead Crane | 5 | 1.5.7.9.7 | 0.0 | [Priority value=500] | 0.0 | 10.0d | 0.0h | 2023-11-24T08:00 | 700 | 5.3.2.7 | 0.0h |  |  |
| 0.0 | 0.0d | 0.0h | AS_SOON_AS_POSSIBLE | 0.0 | 10.0d | 2023-12-01T08:00 | 0.0 | PRORATED | 508 | Field Weld & Install | 6 | 1.5.7.9.7.1 | 0.0 | [Priority value=500] | 0.0 | 10.0d | 0.0h | 2023-11-24T08:00 | 1234 | 5.3.2.7.1 | 0.0h | 511 0.0d FS 703 | 506 0.0d FS 1233 |
| 0.0 | 0.0d | 0.0h | AS_SOON_AS_POSSIBLE | 0.0 | 84.0d | 2023-12-04T16:00 | 0.0 | PRORATED | 509 | Tie-in | 5 | 1.5.7.9.8 | 0.0 | [Priority value=500] | 0.0 | 84.0d | 0.0h | 2023-10-06T16:00 | 685 | 5.4.2.4.8 | 0.0h |  |  |
| 0.0 | 0.0d | 0.0h | AS_SOON_AS_POSSIBLE | 0.0 | 14.0d | 2023-10-16T16:00 | 0.0 | PRORATED | 510 | Prepare TKI | 6 | 1.5.7.9.8.1 | 0.0 | [Priority value=500] | 0.0 | 14.0d | 0.0h | 2023-10-06T16:00 | 704 | 5.4.2.4.8.1 | 0.0h |  | 495 -14.0d SS 694 |
| 0.0 | 0.0d | 0.0h | AS_SOON_AS_POSSIBLE | 0.0 | 5.0d | 2023-12-04T16:00 | 0.0 | PRORATED | 511 | Tie In | 6 | 1.5.7.9.8.2 | 0.0 | [Priority value=500] | 0.0 | 5.0d | 0.0h | 2023-12-01T08:00 | 703 | 5.4.2.4.8.2 | 0.0h |  | 508 0.0d FS 1234 |
| 0.0 | 0.0d | 0.0h | AS_SOON_AS_POSSIBLE | 0.0 | 71.0d | 2023-08-31T12:00 | 0.0 | PRORATED | 512 | Electrical Installation | 4 | 1.5.7.10 | 0.0 | [Priority value=500] | 0.0 | 71.0d | 0.0h | 2023-07-12T16:00 | 492 | 5.4.2.5 | 0.0h |  |  |
| 0.0 | 0.0d | 0.0h | AS_SOON_AS_POSSIBLE | 0.0 | 7.0d | 2023-07-17T16:00 | 0.0 | PRORATED | 513 | Install Cable Tray and Ladder | 5 | 1.5.7.10.1 | 0.0 | [Priority value=500] | 0.0 | 7.0d | 0.0h | 2023-07-12T16:00 | 493 | 5.4.2.5 | 0.0h |  | 301 0.0d FS 23 |
| 0.0 | 0.0d | 0.0h | AS_SOON_AS_POSSIBLE | 0.0 | 26.0d | 2023-07-31T08:00 | 0.0 | PRORATED | 514 | Lighting Fixture | 5 | 1.5.7.10.2 | 0.0 | [Priority value=500] | 0.0 | 26.0d | 0.0h | 2023-07-12T16:00 | 707 | 5.4.2.5.2 | 0.0h |  |  |
| 0.0 | 0.0d | 0.0h | AS_SOON_AS_POSSIBLE | 0.0 | 7.0d | 2023-07-17T16:00 | 0.0 | PRORATED | 515 | Excavation | 6 | 1.5.7.10.2.1 | 0.0 | [Priority value=500] | 0.0 | 7.0d | 0.0h | 2023-07-12T16:00 | 1120 | 5.4.2.5.2.1 | 0.0h | 516 0.0d FS 924 | 295 0.0d FS 20 |
| 0.0 | 0.0d | 0.0h | AS_SOON_AS_POSSIBLE | 0.0 | 14.0d | 2023-07-27T12:00 | 0.0 | PRORATED | 516 | Pulling Cable | 6 | 1.5.7.10.2.2 | 0.0 | [Priority value=500] | 0.0 | 14.0d | 0.0h | 2023-07-17T16:00 | 924 | 5.4.2.5.2.2 | 0.0h | 518 0.0d FS 1109 | 515 0.0d FS 1120 |
| 0.0 | 0.0d | 0.0h | AS_SOON_AS_POSSIBLE | 0.0 | 14.0d | 2023-07-31T08:00 | 0.0 | PRORATED | 517 | Prepare TKI | 6 | 1.5.7.10.2.3 | 0.0 | [Priority value=500] | 0.0 | 14.0d | 0.0h | 2023-07-21T08:00 | 926 | 5.4.2.5.2.3 | 0.0h |  | 519 -14.0d FS 1121 |
| 0.0 | 0.0d | 0.0h | AS_SOON_AS_POSSIBLE | 0.0 | 3.0d | 2023-07-29T12:00 | 0.0 | PRORATED | 518 | Install | 6 | 1.5.7.10.2.4 | 0.0 | [Priority value=500] | 0.0 | 3.0d | 0.0h | 2023-07-27T12:00 | 1109 | 5.4.2.5.2.4 | 0.0h | 519 0.0d FS 1121 | 516 0.0d FS 924 |
| 0.0 | 0.0d | 0.0h | AS_SOON_AS_POSSIBLE | 0.0 | 2.0d | 2023-07-31T08:00 | 0.0 | PRORATED | 519 | Termination | 6 | 1.5.7.10.2.5 | 0.0 | [Priority value=500] | 0.0 | 2.0d | 0.0h | 2023-07-29T12:00 | 1121 | 5.4.2.5.2.5 | 0.0h | 517 -14.0d FS 926 | 518 0.0d FS 1109 |
| 0.0 | 0.0d | 0.0h | AS_SOON_AS_POSSIBLE | 0.0 | 26.0d | 2023-07-31T08:00 | 0.0 | PRORATED | 520 | Lighting Pole | 5 | 1.5.7.10.3 | 0.0 | [Priority value=500] | 0.0 | 26.0d | 0.0h | 2023-07-12T16:00 | 708 | 5.4.2.5.3 | 0.0h |  |  |
| 0.0 | 0.0d | 0.0h | AS_SOON_AS_POSSIBLE | 0.0 | 7.0d | 2023-07-17T16:00 | 0.0 | PRORATED | 521 | Excavation | 6 | 1.5.7.10.3.1 | 0.0 | [Priority value=500] | 0.0 | 7.0d | 0.0h | 2023-07-12T16:00 | 1123 | 5.4.2.5.3.1 | 0.0h | 522 0.0d FS 928 | 297 0.0d FS 21 |
| 0.0 | 0.0d | 0.0h | AS_SOON_AS_POSSIBLE | 0.0 | 14.0d | 2023-07-27T12:00 | 0.0 | PRORATED | 522 | Pulling Cable | 6 | 1.5.7.10.3.2 | 0.0 | [Priority value=500] | 0.0 | 14.0d | 0.0h | 2023-07-17T16:00 | 928 | 5.4.2.5.3.2 | 0.0h | 524 0.0d FS 1110, 527 0.0d FS 1359 | 521 0.0d FS 1123 |
| 0.0 | 0.0d | 0.0h | AS_SOON_AS_POSSIBLE | 0.0 | 14.0d | 2023-07-31T08:00 | 0.0 | PRORATED | 523 | Prepare TKI | 6 | 1.5.7.10.3.3 | 0.0 | [Priority value=500] | 0.0 | 14.0d | 0.0h | 2023-07-21T08:00 | 921 | 5.4.2.5.3.3 | 0.0h |  | 525 -14.0d FS 1127 |
| 0.0 | 0.0d | 0.0h | AS_SOON_AS_POSSIBLE | 0.0 | 3.0d | 2023-07-29T12:00 | 0.0 | PRORATED | 524 | Install | 6 | 1.5.7.10.3.4 | 0.0 | [Priority value=500] | 0.0 | 3.0d | 0.0h | 2023-07-27T12:00 | 1110 | 5.4.2.5.3.4 | 0.0h | 525 0.0d FS 1127 | 522 0.0d FS 928 |
| 0.0 | 0.0d | 0.0h | AS_SOON_AS_POSSIBLE | 0.0 | 2.0d | 2023-07-31T08:00 | 0.0 | PRORATED | 525 | Termination | 6 | 1.5.7.10.3.5 | 0.0 | [Priority value=500] | 0.0 | 2.0d | 0.0h | 2023-07-29T12:00 | 1127 | 5.4.2.5.3.5 | 0.0h | 523 -14.0d FS 921 | 524 0.0d FS 1110 |
| 0.0 | 0.0d | 0.0h | AS_SOON_AS_POSSIBLE | 0.0 | 24.0d | 2023-08-13T10:00 | 0.0 | PRORATED | 526 | Junction Box | 5 | 1.5.7.10.4 | 0.0 | [Priority value=500] | 0.0 | 24.0d | 0.0h | 2023-07-27T12:00 | 709 | 5.4.2.5.4 | 0.0h |  |  |
| 0.0 | 0.0d | 0.0h | AS_SOON_AS_POSSIBLE | 0.0 | 7.0d | 2023-08-01T12:00 | 0.0 | PRORATED | 527 | Excavation | 6 | 1.5.7.10.4.1 | 0.0 | [Priority value=500] | 0.0 | 7.0d | 0.0h | 2023-07-27T12:00 | 1359 | 5.4.2.5.4.1 | 0.0h | 528 0.0d FS 1361, 531 0.0d SS 1345 | 305 0.0d FS 25, 522 0.0d FS 928 |
| 0.0 | 0.0d | 0.0h | AS_SOON_AS_POSSIBLE | 0.0 | 14.0d | 2023-08-11T08:00 | 0.0 | PRORATED | 528 | Prepare TKI | 6 | 1.5.7.10.4.2 | 0.0 | [Priority value=500] | 0.0 | 14.0d | 0.0h | 2023-08-01T12:00 | 1361 | 5.4.2.5.4.2 | 0.0h | 529 0.0d FS 1362 | 527 0.0d FS 1359 |
| 0.0 | 0.0d | 0.0h | AS_SOON_AS_POSSIBLE | 0.0 | 3.0d | 2023-08-13T10:00 | 0.0 | PRORATED | 529 | Install | 6 | 1.5.7.10.4.3 | 0.0 | [Priority value=500] | 0.0 | 3.0d | 0.0h | 2023-08-11T08:00 | 1362 | 5.4.2.5.4.3 | 0.0h |  | 528 0.0d FS 1361 |
| 0.0 | 0.0d | 0.0h | AS_SOON_AS_POSSIBLE | 0.0 | 40.0d | 2023-08-24T12:00 | 0.0 | PRORATED | 530 | Grounding System | 5 | 1.5.7.10.5 | 0.0 | [Priority value=500] | 0.0 | 40.0d | 0.0h | 2023-07-27T12:00 | 710 | 5.4.2.5.5 | 0.0h |  |  |
| 0.0 | 0.0d | 0.0h | AS_SOON_AS_POSSIBLE | 0.0 | 7.0d | 2023-08-01T12:00 | 0.0 | PRORATED | 531 | Excavation | 6 | 1.5.7.10.5.1 | 0.0 | [Priority value=500] | 0.0 | 7.0d | 0.0h | 2023-07-27T12:00 | 1345 | 5.4.2.5.5.1 | 0.0h | 532 0.0d FS 1346 | 307 0.0d FS 1256, 527 0.0d SS 1359 |
| 0.0 | 0.0d | 0.0h | AS_SOON_AS_POSSIBLE | 0.0 | 14.0d | 2023-08-11T08:00 | 0.0 | PRORATED | 532 | Pulling Cable | 6 | 1.5.7.10.5.2 | 0.0 | [Priority value=500] | 0.0 | 14.0d | 0.0h | 2023-08-01T12:00 | 1346 | 5.4.2.5.5.2 | 0.0h | 533 0.0d FS 1347 | 531 0.0d FS 1345 |
| 0.0 | 0.0d | 0.0h | AS_SOON_AS_POSSIBLE | 0.0 | 14.0d | 2023-08-21T08:00 | 0.0 | PRORATED | 533 | Prepare TKI | 6 | 1.5.7.10.5.3 | 0.0 | [Priority value=500] | 0.0 | 14.0d | 0.0h | 2023-08-11T08:00 | 1347 | 5.4.2.5.5.3 | 0.0h | 534 0.0d FS 1348 | 532 0.0d FS 1346 |
| 0.0 | 0.0d | 0.0h | AS_SOON_AS_POSSIBLE | 0.0 | 3.0d | 2023-08-23T08:00 | 0.0 | PRORATED | 534 | Install | 6 | 1.5.7.10.5.4 | 0.0 | [Priority value=500] | 0.0 | 3.0d | 0.0h | 2023-08-21T08:00 | 1348 | 5.4.2.5.5.4 | 0.0h | 535 0.0d FS 1349 | 533 0.0d FS 1347 |
| 0.0 | 0.0d | 0.0h | AS_SOON_AS_POSSIBLE | 0.0 | 2.0d | 2023-08-24T12:00 | 0.0 | PRORATED | 535 | Termination | 6 | 1.5.7.10.5.5 | 0.0 | [Priority value=500] | 0.0 | 2.0d | 0.0h | 2023-08-23T08:00 | 1349 | 5.4.2.5.5.5 | 0.0h | 536 0.0d FS 711 | 534 0.0d FS 1348 |
| 0.0 | 0.0d | 0.0h | AS_SOON_AS_POSSIBLE | 0.0 | 7.0d | 2023-08-29T12:00 | 0.0 | PRORATED | 536 | Cable Ladder | 5 | 1.5.7.10.6 | 0.0 | [Priority value=500] | 0.0 | 7.0d | 0.0h | 2023-08-24T12:00 | 711 | 5.4.2.5.6 | 0.0h | 537 0.0d FS 1272 | 301 0.0d FS 23, 535 0.0d FS 1349 |
| 0.0 | 0.0d | 0.0h | AS_SOON_AS_POSSIBLE | 0.0 | 3.0d | 2023-08-31T12:00 | 0.0 | PRORATED | 537 | Lightning | 5 | 1.5.7.10.7 | 0.0 | [Priority value=500] | 0.0 | 3.0d | 0.0h | 2023-08-29T12:00 | 1272 | 5.4.2.5.7 | 0.0h | 572 0.0d FS 1188 | 299 0.0d FS 22, 536 0.0d FS 711 |
| 0.0 | 0.0d | 0.0h | AS_SOON_AS_POSSIBLE | 0.0 | 104.5d | 2023-10-28T16:00 | 0.0 | PRORATED | 538 | Instrument Installation | 4 | 1.5.7.11 | 0.0 | [Priority value=500] | 0.0 | 104.5d | 0.0h | 2023-08-16T16:00 | 743 | 5.4.2.1.11 | 0.0h |  |  |
| 0.0 | 0.0d | 0.0h | AS_SOON_AS_POSSIBLE | 0.0 | 14.0d | 2023-08-26T12:00 | 0.0 | PRORATED | 539 | Compressor Control Panel | 5 | 1.5.7.11.1 | 0.0 | [Priority value=500] | 0.0 | 14.0d | 0.0h | 2023-08-16T16:00 | 989 | 5.4.2.1.11.1 | 0.0h | 540 0.0d FS 990 | 427 0.0d FS 570 |
| 0.0 | 0.0d | 0.0h | AS_SOON_AS_POSSIBLE | 0.0 | 3.0d | 2023-08-28T16:00 | 0.0 | PRORATED | 540 | Blowdown Valve & Emergency Shutdow | 5 | 1.5.7.11.2 | 0.0 | [Priority value=500] | 0.0 | 3.0d | 0.0h | 2023-08-26T12:00 | 990 | 5.3.4.1 | 0.0h | 541 0.0d FS 991 | 539 0.0d FS 989 |
| 0.0 | 0.0d | 0.0h | AS_SOON_AS_POSSIBLE | 0.0 | 3.0d | 2023-08-30T16:00 | 0.0 | PRORATED | 541 | Flow Element | 5 | 1.5.7.11.3 | 0.0 | [Priority value=500] | 0.0 | 3.0d | 0.0h | 2023-08-28T16:00 | 991 | 5.3.4.2 | 0.0h | 542 0.0d FS 993 | 540 0.0d FS 990 |
| 0.0 | 0.0d | 0.0h | AS_SOON_AS_POSSIBLE | 0.0 | 3.0d | 2023-09-01T16:00 | 0.0 | PRORATED | 542 | Pressure Control Valve | 5 | 1.5.7.11.4 | 0.0 | [Priority value=500] | 0.0 | 3.0d | 0.0h | 2023-08-30T16:00 | 993 | 5.3.4.4 | 0.0h | 543 0.0d FS 994 | 541 0.0d FS 991 |
| 0.0 | 0.0d | 0.0h | AS_SOON_AS_POSSIBLE | 0.0 | 3.0d | 2023-09-04T08:00 | 0.0 | PRORATED | 543 | Pressure Gauge | 5 | 1.5.7.11.5 | 0.0 | [Priority value=500] | 0.0 | 3.0d | 0.0h | 2023-09-01T16:00 | 994 | 5.3.4.5 | 0.0h | 544 0.0d FS 995 | 542 0.0d FS 993 |
| 0.0 | 0.0d | 0.0h | AS_SOON_AS_POSSIBLE | 0.0 | 3.0d | 2023-09-06T08:00 | 0.0 | PRORATED | 544 | Pressure Safety Valve | 5 | 1.5.7.11.6 | 0.0 | [Priority value=500] | 0.0 | 3.0d | 0.0h | 2023-09-04T08:00 | 995 | 5.4.2.1.11.6 | 0.0h | 545 0.0d FS 996 | 543 0.0d FS 994 |
| 0.0 | 0.0d | 0.0h | AS_SOON_AS_POSSIBLE | 0.0 | 3.0d | 2023-09-08T08:00 | 0.0 | PRORATED | 545 | Pressure Transmitter | 5 | 1.5.7.11.7 | 0.0 | [Priority value=500] | 0.0 | 3.0d | 0.0h | 2023-09-06T08:00 | 996 | 5.4.2.1.11.7 | 0.0h | 546 0.0d FS 999 | 544 0.0d FS 995 |
| 0.0 | 0.0d | 0.0h | AS_SOON_AS_POSSIBLE | 0.0 | 3.0d | 2023-09-10T10:00 | 0.0 | PRORATED | 546 | Restriction Orifice | 5 | 1.5.7.11.8 | 0.0 | [Priority value=500] | 0.0 | 3.0d | 0.0h | 2023-09-08T08:00 | 999 | 5.4.2.1.11.8 | 0.0h | 547 0.0d FS 1329 | 545 0.0d FS 996 |
| 0.0 | 0.0d | 0.0h | AS_SOON_AS_POSSIBLE | 0.0 | 3.0d | 2023-09-12T12:00 | 0.0 | PRORATED | 547 | Temperature Gauge & Thermowell | 5 | 1.5.7.11.9 | 0.0 | [Priority value=500] | 0.0 | 3.0d | 0.0h | 2023-09-10T10:00 | 1329 | 5.4.2.1.11.9 | 0.0h | 548 0.0d FS 1344 | 546 0.0d FS 999 |
| 0.0 | 0.0d | 0.0h | AS_SOON_AS_POSSIBLE | 0.0 | 3.0d | 2023-10-07T16:00 | 0.0 | PRORATED | 548 | Multi Variable Transmitter | 5 | 1.5.7.11.10 | 0.0 | [Priority value=500] | 0.0 | 3.0d | 0.0h | 2023-10-05T16:00 | 1344 | 5.3.4.3 | 0.0h | 549 0.0d FS 1330 | 316 0.0d FS 26, 547 0.0d FS 1329 |
| 0.0 | 0.0d | 0.0h | AS_SOON_AS_POSSIBLE | 0.0 | 3.0d | 2023-10-10T08:00 | 0.0 | PRORATED | 549 | Instrument Mounting Support | 5 | 1.5.7.11.11 | 0.0 | [Priority value=500] | 0.0 | 3.0d | 0.0h | 2023-10-07T16:00 | 1330 | 5.4.2.1.11.11 | 0.0h | 550 0.0d FS 1331 | 318 0.0d FS 1312, 548 0.0d FS 1344 |
| 0.0 | 0.0d | 0.0h | AS_SOON_AS_POSSIBLE | 0.0 | 3.0d | 2023-10-12T08:00 | 0.0 | PRORATED | 550 | Instrument Cabling | 5 | 1.5.7.11.12 | 0.0 | [Priority value=500] | 0.0 | 3.0d | 0.0h | 2023-10-10T08:00 | 1331 | 5.4.2.1.11.12 | 0.0h | 551 0.0d FS 1333 | 320 0.0d FS 1322, 549 0.0d FS 1330 |
| 0.0 | 0.0d | 0.0h | AS_SOON_AS_POSSIBLE | 0.0 | 3.0d | 2023-10-14T08:00 | 0.0 | PRORATED | 551 | Instrument Cable Tray | 5 | 1.5.7.11.13 | 0.0 | [Priority value=500] | 0.0 | 3.0d | 0.0h | 2023-10-12T08:00 | 1333 | 5.4.2.1.11.13 | 0.0h | 552 0.0d FS 1335 | 322 0.0d FS 1328, 550 0.0d FS 1331 |
| 0.0 | 0.0d | 0.0h | AS_SOON_AS_POSSIBLE | 0.0 | 3.0d | 2023-10-16T12:00 | 0.0 | PRORATED | 552 | Re-Programming (Install) Panel (F&G, Safety Shutdown System, RTCS) | 5 | 1.5.7.11.14 | 0.0 | [Priority value=500] | 0.0 | 3.0d | 0.0h | 2023-10-14T08:00 | 1335 | 5.4.2.1.11.14 | 0.0h | 554 0.0d FS 936 | 328 0.0d FS 374, 551 0.0d FS 1333 |
| 0.0 | 0.0d | 0.0h | AS_SOON_AS_POSSIBLE | 0.0 | 4.0d | 2023-10-19T08:00 | 0.0 | PRORATED | 553 | Fire Gas Detector | 5 | 1.5.7.11.15 | 0.0 | [Priority value=500] | 0.0 | 4.0d | 0.0h | 2023-10-16T12:00 | 717 | 5.4.2.1.11.15 | 0.0h |  |  |
| 0.0 | 0.0d | 0.0h | AS_SOON_AS_POSSIBLE | 0.0 | 2.0d | 2023-10-17T16:00 | 0.0 | PRORATED | 554 | Hook Up | 6 | 1.5.7.11.15.1 | 0.0 | [Priority value=500] | 0.0 | 2.0d | 0.0h | 2023-10-16T12:00 | 936 | 5.4.2.1.11.15.1 | 0.0h | 555 0.0d FS 931 | 324 0.0d FS 27, 552 0.0d FS 1335 |
| 0.0 | 0.0d | 0.0h | AS_SOON_AS_POSSIBLE | 0.0 | 2.0d | 2023-10-19T08:00 | 0.0 | PRORATED | 555 | Pulling cable | 6 | 1.5.7.11.15.2 | 0.0 | [Priority value=500] | 0.0 | 2.0d | 0.0h | 2023-10-17T16:00 | 931 | 5.4.2.1.11.15.2 | 0.0h | 557 0.0d FS 1136 | 554 0.0d FS 936 |
| 0.0 | 0.0d | 0.0h | AS_SOON_AS_POSSIBLE | 0.0 | 4.0d | 2023-10-21T16:00 | 0.0 | PRORATED | 556 | Pressure Transmitter | 5 | 1.5.7.11.16 | 0.0 | [Priority value=500] | 0.0 | 4.0d | 0.0h | 2023-10-19T08:00 | 740 | 5.4.2.1.11.16 | 0.0h |  |  |
| 0.0 | 0.0d | 0.0h | AS_SOON_AS_POSSIBLE | 0.0 | 2.0d | 2023-10-20T12:00 | 0.0 | PRORATED | 557 | Hook Up | 6 | 1.5.7.11.16.1 | 0.0 | [Priority value=500] | 0.0 | 2.0d | 0.0h | 2023-10-19T08:00 | 1136 | 5.4.2.1.11.16.1 | 0.0h | 558 0.0d FS 1137 | 427 0.0d FS 570, 555 0.0d FS 931 |
| 0.0 | 0.0d | 0.0h | AS_SOON_AS_POSSIBLE | 0.0 | 2.0d | 2023-10-21T16:00 | 0.0 | PRORATED | 558 | Pulling cable | 6 | 1.5.7.11.16.2 | 0.0 | [Priority value=500] | 0.0 | 2.0d | 0.0h | 2023-10-20T12:00 | 1137 | 5.4.2.1.11.16.2 | 0.0h | 560 0.0d FS 1152 | 557 0.0d FS 1136 |
| 0.0 | 0.0d | 0.0h | AS_SOON_AS_POSSIBLE | 0.0 | 4.0d | 2023-10-24T16:00 | 0.0 | PRORATED | 559 | Instrument Bulk Material, Tubing & Accessories | 5 | 1.5.7.11.17 | 0.0 | [Priority value=500] | 0.0 | 4.0d | 0.0h | 2023-10-21T16:00 | 727 | 5.4.2.1.11.17 | 0.0h |  |  |

| actualCost | actualDuration | actualWork | constraintType | cost | duration | finish | fixedCost | fixedCostAccrual | id | isCriticalPath | name | outlineLevel | outlineNumber | percentageComplete | priority | remainingCost | remainingDuration | remainingWork | start | uniqueID | wbs | work | successors | predecessors | remarks |
| --- | --- | --- | --- | --- | --- | --- | --- | --- | --- | --- | --- | --- | --- | --- | --- | --- | --- | --- | --- | --- | --- | --- | --- | --- | --- |
| 0.0 | 0.0d | 0.0h | AS_SOON_AS_POSSIBLE | 0.0 | 2.0d | 2023-10-23T12:00 | 0.0 | PRORATED | 560 |  | Hook Up | 6 | 1.5.7.11.17.1 | 0.0 | [Priority value=500] | 0.0 | 2.0d | 0.0h | 2023-10-21T16:00 | 1152 | 5.4.2.1.11.17.1 | 0.0h | 561 0.0d FS 1153 | 330 0.0d FS 35, 558 0.0d FS 1137 |  |
| 0.0 | 0.0d | 0.0h | AS_SOON_AS_POSSIBLE | 0.0 | 2.0d | 2023-10-24T16:00 | 0.0 | PRORATED | 561 |  | Pulling cable | 6 | 1.5.7.11.17.2 | 0.0 | [Priority value=500] | 0.0 | 2.0d | 0.0h | 2023-10-23T12:00 | 1153 | 5.4.2.1.11.17.2 | 0.0h | 563 0.0d FS 1156 | 560 0.0d FS 1152 |  |
| 0.0 | 0.0d | 0.0h | AS_SOON_AS_POSSIBLE | 0.0 | 4.0d | 2023-10-27T12:00 | 0.0 | PRORATED | 562 |  | Instrument Mounting Support | 5 | 1.5.7.11.18 | 0.0 | [Priority value=500] | 0.0 | 4.0d | 0.0h | 2023-10-24T16:00 | 728 | 5.4.2.1.11.18 | 0.0h |  |  |  |
| 0.0 | 0.0d | 0.0h | AS_SOON_AS_POSSIBLE | 0.0 | 2.0d | 2023-10-26T08:00 | 0.0 | PRORATED | 563 |  | Hook Up | 6 | 1.5.7.11.18.1 | 0.0 | [Priority value=500] | 0.0 | 2.0d | 0.0h | 2023-10-24T16:00 | 1156 | 5.4.2.1.11.18.1 | 0.0h | 564 0.0d FS 1157, 566 0.0d FS 1164 | 561 0.0d FS 1153 |  |
| 0.0 | 0.0d | 0.0h | AS_SOON_AS_POSSIBLE | 0.0 | 2.0d | 2023-10-27T12:00 | 0.0 | PRORATED | 564 |  | Pulling cable | 6 | 1.5.7.11.18.2 | 0.0 | [Priority value=500] | 0.0 | 2.0d | 0.0h | 2023-10-26T08:00 | 1157 | 5.4.2.1.11.18.2 | 0.0h |  | 563 0.0d FS 1156 |  |
| 0.0 | 0.0d | 0.0h | AS_SOON_AS_POSSIBLE | 0.0 | 4.0d | 2023-10-28T16:00 | 0.0 | PRORATED | 565 |  | Instrument Cable Tray | 5 | 1.5.7.11.19 | 0.0 | [Priority value=500] | 0.0 | 4.0d | 0.0h | 2023-10-26T08:00 | 730 | 5.4.2.1.11.19 | 0.0h |  |  |  |
| 0.0 | 0.0d | 0.0h | AS_SOON_AS_POSSIBLE | 0.0 | 2.0d | 2023-10-27T12:00 | 0.0 | PRORATED | 566 |  | Hook Up | 6 | 1.5.7.11.19.1 | 0.0 | [Priority value=500] | 0.0 | 2.0d | 0.0h | 2023-10-26T08:00 | 1164 | 5.4.2.1.11.19.1 | 0.0h | 567 0.0d FS 1165 | 563 0.0d FS 1156 |  |
| 0.0 | 0.0d | 0.0h | AS_SOON_AS_POSSIBLE | 0.0 | 2.0d | 2023-10-28T16:00 | 0.0 | PRORATED | 567 |  | Pulling cable | 6 | 1.5.7.11.19.2 | 0.0 | [Priority value=500] | 0.0 | 2.0d | 0.0h | 2023-10-27T12:00 | 1165 | 5.4.2.1.11.19.2 | 0.0h | 579 0.0d FS 1210, 580 0.0d FS 1205, 572 0.0d FS 1188 | 566 0.0d FS 1164 |  |
| 0.0 | 0.0d | 0.0h | AS_SOON_AS_POSSIBLE | 0.0 | 44.0d | 2023-12-20T08:00 | 0.0 | PRORATED | 568 | True | Precommisioning, Commisioning & Start Up Assistance | 2 | 1.6 | 0.0 | [Priority value=500] | 0.0 | 44.0d | 0.0h | 2023-11-19T10:00 | 501 | 6 | 0.0h |  |  | Start overhaul di 19 Nov 2023, Commissioning bersamaan |
| 0.0 | 0.0d | 0.0h | AS_SOON_AS_POSSIBLE | 0.0 | 41.0d | 2023-12-18T08:00 | 0.0 | PRORATED | 569 | True | Pre Commisioning - Mechanical Completion | 3 | 1.6.1 | 0.0 | [Priority value=500] | 0.0 | 41.0d | 0.0h | 2023-11-19T10:00 | 502 | 6.1 | 0.0h |  |  |  |
| 0.0 | 0.0d | 0.0h | AS_SOON_AS_POSSIBLE | 0.0 | 7.0d | 2023-12-18T08:00 | 0.0 | PRORATED | 570 |  | PHSER-4 | 4 | 1.6.1.1 | 0.0 | [Priority value=500] | 0.0 | 7.0d | 0.0h | 2023-12-13T08:00 | 1434 | 6.1.1 | 0.0h |  | 11 0.0d FS 90, 577 0.0d FS 67, 582 0.0d FS 70 |  |
| 0.0 | 0.0d | 0.0h | AS_SOON_AS_POSSIBLE | 0.0 | 34.0d | 2023-12-13T08:00 | 0.0 | PRORATED | 571 | True | Pre Commisioning Piping/Mechanical | 4 | 1.6.1.2 | 0.0 | [Priority value=500] | 0.0 | 34.0d | 0.0h | 2023-11-19T10:00 | 503 | 6.1.1 | 0.0h |  |  |  |
| 0.0 | 0.0d | 0.0h | AS_SOON_AS_POSSIBLE | 0.0 | 7.0d | 2023-11-24T08:00 | 0.0 | PRORATED | 572 | True | Line Check | 5 | 1.6.1.2.1 | 0.0 | [Priority value=500] | 0.0 | 7.0d | 0.0h | 2023-11-19T10:00 | 1188 | 6.1.1.1 | 0.0h | 573 0.0d FS 64, 584 0.0d FS 1183 | 567 0.0d FS 1165, 537 0.0d FS 1272, 485 0.0d FS 1418, 461 0.0d FS 1689 |  |
| 0.0 | 0.0d | 0.0h | AS_SOON_AS_POSSIBLE | 0.0 | 5.0d | 2023-11-27T16:00 | 0.0 | PRORATED | 573 | True | Hydrostatic Testing | 5 | 1.6.1.2.2 | 0.0 | [Priority value=500] | 0.0 | 5.0d | 0.0h | 2023-11-24T08:00 | 64 | 6.1.1 | 0.0h | 574 0.0d FS 1201 | 572 0.0d FS 1188 |  |
| 0.0 | 0.0d | 0.0h | AS_SOON_AS_POSSIBLE | 0.0 | 5.0d | 2023-12-01T08:00 | 0.0 | PRORATED | 574 | True | Painting Touch Up | 5 | 1.6.1.2.3 | 0.0 | [Priority value=500] | 0.0 | 5.0d | 0.0h | 2023-11-27T16:00 | 1201 | 6.1.1 | 0.0h | 575 0.0d FS 65 | 573 0.0d FS 64 |  |
| 0.0 | 0.0d | 0.0h | AS_SOON_AS_POSSIBLE | 0.0 | 5.0d | 2023-12-04T16:00 | 0.0 | PRORATED | 575 | True | Flushing | 5 | 1.6.1.2.4 | 0.0 | [Priority value=500] | 0.0 | 5.0d | 0.0h | 2023-12-01T08:00 | 65 | 6.1.1 | 0.0h | 576 0.0d FS 66 | 574 0.0d FS 1201 |  |
| 0.0 | 0.0d | 0.0h | AS_SOON_AS_POSSIBLE | 0.0 | 5.0d | 2023-12-08T08:00 | 0.0 | PRORATED | 576 | True | Purging | 5 | 1.6.1.2.5 | 0.0 | [Priority value=500] | 0.0 | 5.0d | 0.0h | 2023-12-04T16:00 | 66 | 6.1.1 | 0.0h | 577 0.0h FS 67 | 575 0.0d FS 65 |  |
| 0.0 | 0.0d | 0.0h | AS_SOON_AS_POSSIBLE | 0.0 | 7.0d | 2023-12-13T08:00 | 0.0 | PRORATED | 577 | True | Bolt Thightning | 5 | 1.6.1.2.6 | 0.0 | [Priority value=500] | 0.0 | 7.0d | 0.0h | 2023-12-08T08:00 | 67 | 6.1.1 | 0.0h | 9 0.0d FS 63, 570 0.0d FS 1434, 587 0.0d FS 62 | 576 0.0h FS 66 |  |
| 0.0 | 0.0d | 0.0h | AS_SOON_AS_POSSIBLE | 0.0 | 21.0d | 2023-12-04T08:00 | 0.0 | PRORATED | 578 |  | Pre Commisioning Electrical Instrument | 4 | 1.6.1.3 | 0.0 | [Priority value=500] | 0.0 | 21.0d | 0.0h | 2023-11-19T10:00 | 504 | 6.1.2 | 0.0h |  |  |  |
| 0.0 | 0.0d | 0.0h | AS_SOON_AS_POSSIBLE | 0.0 | 10.0d | 2023-11-26T10:00 | 0.0 | PRORATED | 579 |  | Calibration | 5 | 1.6.1.3.1 | 0.0 | [Priority value=500] | 0.0 | 10.0d | 0.0h | 2023-11-19T10:00 | 1210 | 6.1.2 | 0.0h |  | 567 0.0d FS 1165, 485 0.0d FS 1418 |  |
| 0.0 | 0.0d | 0.0h | AS_SOON_AS_POSSIBLE | 0.0 | 7.0d | 2023-11-24T08:00 | 0.0 | PRORATED | 580 |  | Megger Test | 5 | 1.6.1.3.2 | 0.0 | [Priority value=500] | 0.0 | 7.0d | 0.0h | 2023-11-19T10:00 | 1205 | 6.1.2 | 0.0h | 581 0.0d FS 1206 | 567 0.0d FS 1165, 485 0.0d FS 1418 |  |
| 0.0 | 0.0d | 0.0h | AS_SOON_AS_POSSIBLE | 0.0 | 7.0d | 2023-11-29T08:00 | 0.0 | PRORATED | 581 |  | Continuity Test | 5 | 1.6.1.3.3 | 0.0 | [Priority value=500] | 0.0 | 7.0d | 0.0h | 2023-11-24T08:00 | 1206 | 6.1.2 | 0.0h | 582 0.0d FS 70 | 580 0.0d FS 1205 |  |
| 0.0 | 0.0d | 0.0h | AS_SOON_AS_POSSIBLE | 0.0 | 7.0d | 2023-12-04T08:00 | 0.0 | PRORATED | 582 |  | Loop Test | 5 | 1.6.1.3.4 | 0.0 | [Priority value=500] | 0.0 | 7.0d | 0.0h | 2023-11-29T08:00 | 70 | 6.1.2 | 0.0h | 9 0.0d FS 63, 570 0.0d FS 1434, 585 0.0d FS 1184 | 581 0.0d FS 1206 |  |
| 0.0 | 0.0d | 0.0h | AS_SOON_AS_POSSIBLE | 0.0 | 37.0d | 2023-12-20T08:00 | 0.0 | PRORATED | 583 | True | Commisioning & Start Up | 3 | 1.6.2 | 0.0 | [Priority value=500] | 0.0 | 37.0d | 0.0h | 2023-11-24T08:00 | 505 | 6.2 | 0.0h |  |  |  |
| 0.0 | 0.0d | 0.0h | AS_SOON_AS_POSSIBLE | 0.0 | 14.0d | 2023-12-04T08:00 | 0.0 | PRORATED | 584 |  | TKI Commisioning | 4 | 1.6.2.1 | 0.0 | [Priority value=500] | 0.0 | 14.0d | 0.0h | 2023-11-24T08:00 | 1183 | 6.2.1 | 0.0h | 585 0.0d FS 1184 | 572 0.0d FS 1188 |  |
| 0.0 | 0.0d | 0.0h | AS_SOON_AS_POSSIBLE | 0.0 | 1.0d | 2023-12-04T16:00 | 0.0 | PRORATED | 585 |  | Sosialisasi Operator | 4 | 1.6.2.2 | 0.0 | [Priority value=500] | 0.0 | 1.0d | 0.0h | 2023-12-04T08:00 | 1184 | 6.2.2 | 0.0h | 586 0.0d FS 1185 | 582 0.0d FS 70, 584 0.0d FS 1183 |  |
| 0.0 | 0.0d | 0.0h | AS_SOON_AS_POSSIBLE | 0.0 | 7.0d | 2023-12-09T12:00 | 0.0 | PRORATED | 586 |  | PSSR | 4 | 1.6.2.3 | 0.0 | [Priority value=500] | 0.0 | 7.0d | 0.0h | 2023-12-04T16:00 | 1185 | 6.2.3 | 0.0h | 587 0.0d FS 62 | 585 0.0d FS 1184 |  |
| 0.0 | 0.0d | 0.0h | AS_SOON_AS_POSSIBLE | 0.0 | 10.0d | 2023-12-20T08:00 | 0.0 | PRORATED | 587 | True | First Gas in ( After Overhaul ) | 4 | 1.6.2.4 | 0.0 | [Priority value=500] | 0.0 | 10.0d | 0.0h | 2023-12-13T08:00 | 62 | 6.2 | 0.0h | 8 0.0h FS 60, 10 0.0h FS 74 | 586 0.0d FS 1185, 577 0.0d FS 67 |  |
